Activity ID,Activity Name,OD,RD,Start,Finish,WBS
MS1040,Milestone - ECPO Request Submission,0,0,,2026-04-28,CMH139 > Milestones > Project Milestones
MS1000,Milestone - Early Funding,0,0,,2026-05-13,CMH139 > Milestones > Project Milestones
MS1050,Milestone - Full Funding RFP Submission,0,0,,2026-06-05,CMH139 > Milestones > Project Milestones
MS60120,Milestone - Early Funding Part 2,0,0,,2026-07-01,CMH139 > Milestones > Project Milestones
MS1010,Milestone - Project Kickoff,0,0,2026-07-27,,CMH139 > Milestones > Project Milestones
MS1020,Milestone - Full Funding,0,0,,2026-08-31,CMH139 > Milestones > Project Milestones
MS1130,Milestone - Final Completion,0,0,,2028-04-28,CMH139 > Milestones > Project Milestones
MS1025,Milestone - Site Commencement [AWS Contract Date 7/1/2026],0,0,2026-07-27,,CMH139 > Milestones > Construction Milestones
MS1030,Milestone - Shell Commencement [AWS Contract Date 10/1/2026],0,0,2026-10-14,,CMH139 > Milestones > Construction Milestones
MS1060,Milestone - Excavation Completion,0,0,,2027-04-28,CMH139 > Milestones > Construction Milestones
MS1070,Milestone - Phase 1 Dry-In,0,0,,2027-05-19,CMH139 > Milestones > Construction Milestones
MS1110,Milestone - Site / Shell Energize MV Switchgear,0,0,,2027-06-21,CMH139 > Milestones > Construction Milestones
MS1080,Milestone - Building Dry-In Complete,0,0,,2027-07-26,CMH139 > Milestones > Construction Milestones
MS1100,Milestone - Site Substantial Completion [AWS Contract Date 5/24/2027],0,0,,2027-08-16,CMH139 > Milestones > Construction Milestones
MS1120,Milestone - Shell Substantial Completion [AWS Contract Date 10/14/2027],0,0,,2027-09-07,CMH139 > Milestones > Construction Milestones
MS60110,Milestone - Shell Final Completion / PCO [AWS Contract Date 10/14/2027],0,0,,2027-09-07,CMH139 > Milestones > Construction Milestones
MS10000,Milestone Phase 1 - Start Work Date [AWS Contract Date 3/29/2027],0,0,2027-05-20,,CMH139 > Milestones > Contract Milestones > Phase 1 (ROMP01 & 03)
MS10010,Milestone Phase 1 - H2C-9W,0,0,,2027-07-01,CMH139 > Milestones > Contract Milestones > Phase 1 (ROMP01 & 03)
MS10020,Milestone Phase 1 - Mechanical Equipment Startup Complete for Controls,0,0,,2027-08-20,CMH139 > Milestones > Contract Milestones > Phase 1 (ROMP01 & 03)
MS10050,Milestone Phase 1 - Ready for AWS Fiber Optic Install,0,0,,2027-08-20,CMH139 > Milestones > Contract Milestones > Phase 1 (ROMP01 & 03)
MS10030,Milestone Phase 1 - H2C-5W,0,0,,2027-08-20,CMH139 > Milestones > Contract Milestones > Phase 1 (ROMP01 & 03)
MS10040,Milestone Phase 1 - H2C-4W,0,0,,2027-08-20,CMH139 > Milestones > Contract Milestones > Phase 1 (ROMP01 & 03)
MS10070,Milestone Phase 1 - Electric Room LV Panelboards Energized,0,0,,2027-09-27,CMH139 > Milestones > Contract Milestones > Phase 1 (ROMP01 & 03)
MS10060,Milestone Phase 1 - FEA [AWS Contract Date 9/27/2027],0,0,,2027-09-27,CMH139 > Milestones > Contract Milestones > Phase 1 (ROMP01 & 03)
MS10080,Milestone Phase 1 - NEA [AWS Contract Date 10/11/2027],0,0,,2027-10-11,CMH139 > Milestones > Contract Milestones > Phase 1 (ROMP01 & 03)
MS10090,Milestone Phase 1 - H2C-2W,0,0,,2027-10-11,CMH139 > Milestones > Contract Milestones > Phase 1 (ROMP01 & 03)
MS10100,Milestone Phase 1 - H2C [AWS Contract Date 10/29/2027],0,0,,2027-10-29,CMH139 > Milestones > Contract Milestones > Phase 1 (ROMP01 & 03)
MS10110,Milestone Phase 1 - PFHO [AWS Contract Date 11/26/2027],0,0,,2027-11-26,CMH139 > Milestones > Contract Milestones > Phase 1 (ROMP01 & 03)
MS10120,Milestone Phase 1 - PCO,0,0,,2027-12-10,CMH139 > Milestones > Contract Milestones > Phase 1 (ROMP01 & 03)
MS20000,Milestone Phase 2 - Start Work Date [AWS Contract Date 5/31/2027],0,0,2027-05-31,,CMH139 > Milestones > Contract Milestones > Phase 2 (ROMP02 & 04)
MS20010,Milestone Phase 2 - H2C-9W,0,0,,2027-07-19,CMH139 > Milestones > Contract Milestones > Phase 2 (ROMP02 & 04)
MS20020,Milestone Phase 2 - H2C-5W,0,0,,2027-07-19,CMH139 > Milestones > Contract Milestones > Phase 2 (ROMP02 & 04)
MS20030,Milestone Phase 2 - H2C-4W,0,0,,2027-07-19,CMH139 > Milestones > Contract Milestones > Phase 2 (ROMP02 & 04)
MS20040,Milestone Phase 2 - Electric Room LV Panelboards Energized,0,0,,2027-08-02,CMH139 > Milestones > Contract Milestones > Phase 2 (ROMP02 & 04)
MS20050,Milestone Phase 2 - Mechanical Equipment Startup Complete for Controls,0,0,,2027-08-11,CMH139 > Milestones > Contract Milestones > Phase 2 (ROMP02 & 04)
MS20070,Milestone Phase 2 - H2C-2W,0,0,,2027-08-25,CMH139 > Milestones > Contract Milestones > Phase 2 (ROMP02 & 04)
MS20060,Milestone Phase 2 - NEA [AWS Contract Date 11/29/2027],0,0,,2027-11-29,CMH139 > Milestones > Contract Milestones > Phase 2 (ROMP02 & 04)
MS20080,Milestone Phase 2 - H2C [AWS Contract Date 12/17/2027],0,0,,2027-12-17,CMH139 > Milestones > Contract Milestones > Phase 2 (ROMP02 & 04)
MS20090,Milestone Phase 2 - PFHO [AWS Contract Date 1/7/2028],0,0,,2028-01-07,CMH139 > Milestones > Contract Milestones > Phase 2 (ROMP02 & 04)
MS20100,Milestone Phase 2 - PCO,0,0,,2028-01-21,CMH139 > Milestones > Contract Milestones > Phase 2 (ROMP02 & 04)
MS30000,Milestone Phase 3 - Gray Early Start Work Date [AWS Contract Date 6/28/2027],0,0,2027-05-31,,CMH139 > Milestones > Contract Milestones > Phase 3 (ROMP05 & 07)
MS30010,Milestone Phase 3 - H2C-9W,0,0,,2027-08-05,CMH139 > Milestones > Contract Milestones > Phase 3 (ROMP05 & 07)
MS30020,Milestone Phase 3 - H2C-5W,0,0,,2027-08-05,CMH139 > Milestones > Contract Milestones > Phase 3 (ROMP05 & 07)
MS30030,Milestone Phase 3 - H2C-4W,0,0,,2027-08-05,CMH139 > Milestones > Contract Milestones > Phase 3 (ROMP05 & 07)
MS30040,Milestone Phase 3 - Electric Room LV Panelboards Energized,0,0,,2027-08-19,CMH139 > Milestones > Contract Milestones > Phase 3 (ROMP05 & 07)
MS30050,Milestone Phase 3 - Mechanical Equipment Startup Complete for Controls,0,0,,2027-08-31,CMH139 > Milestones > Contract Milestones > Phase 3 (ROMP05 & 07)
MS30070,Milestone Phase 3 - H2C-2W,0,0,,2027-10-12,CMH139 > Milestones > Contract Milestones > Phase 3 (ROMP05 & 07)
MS30060,Milestone Phase 3 - NEA [AWS Contract Date 12/27/2027],0,0,,2027-12-27,CMH139 > Milestones > Contract Milestones > Phase 3 (ROMP05 & 07)
MS30080,Milestone Phase 3 - H2C [AWS Contract Date 1/14/2028],0,0,,2028-01-14,CMH139 > Milestones > Contract Milestones > Phase 3 (ROMP05 & 07)
MS30090,Milestone Phase 3 - PFHO [AWS Contract Date 2/04/2028],0,0,,2028-02-04,CMH139 > Milestones > Contract Milestones > Phase 3 (ROMP05 & 07)
MS30100,Milestone Phase 3 - PCO,0,0,,2028-02-18,CMH139 > Milestones > Contract Milestones > Phase 3 (ROMP05 & 07)
MS40000,Milestone Phase 4 - Gray Early Start Work Date [AWS Contract Date 7/26/2027],0,0,2027-06-18,,CMH139 > Milestones > Contract Milestones > Phase 4 (ROMP06 & 08)
MS40010,Milestone Phase 4 - H2C-9W,0,0,,2027-09-02,CMH139 > Milestones > Contract Milestones > Phase 4 (ROMP06 & 08)
MS40020,Milestone Phase 4 - H2C-5W,0,0,,2027-09-02,CMH139 > Milestones > Contract Milestones > Phase 4 (ROMP06 & 08)
MS40030,Milestone Phase 4 - H2C-4W,0,0,,2027-09-02,CMH139 > Milestones > Contract Milestones > Phase 4 (ROMP06 & 08)
MS40040,Milestone Phase 4 - Electric Room LV Panelboards Energized,0,0,,2027-09-17,CMH139 > Milestones > Contract Milestones > Phase 4 (ROMP06 & 08)
MS40050,Milestone Phase 4 - Mechanical Equipment Startup Complete for Controls,0,0,,2027-11-15,CMH139 > Milestones > Contract Milestones > Phase 4 (ROMP06 & 08)
MS40070,Milestone Phase 4 - H2C-2W,0,0,,2027-12-01,CMH139 > Milestones > Contract Milestones > Phase 4 (ROMP06 & 08)
MS40060,Milestone Phase 4 - NEA [AWS Contract Date 1/24/2028],0,0,,2028-01-24,CMH139 > Milestones > Contract Milestones > Phase 4 (ROMP06 & 08)
MS40080,Milestone Phase 4 - H2C [AWS Contract Date 2/11/2028],0,0,,2028-02-11,CMH139 > Milestones > Contract Milestones > Phase 4 (ROMP06 & 08)
MS40090,Milestone Phase 4 - PFHO [AWS Contract Date 3/03/2028],0,0,,2028-03-03,CMH139 > Milestones > Contract Milestones > Phase 4 (ROMP06 & 08)
MS40100,Milestone Phase 4 - PCO,0,0,,2028-03-17,CMH139 > Milestones > Contract Milestones > Phase 4 (ROMP06 & 08)
MS50000,Milestone Phase 5 - Gray Early Start Work Date [AWS Contract Date 8/23/2027],0,0,2027-07-23,,CMH139 > Milestones > Contract Milestones > Phase 5 (ROMP09 & 11)
MS50010,Milestone Phase 5 - H2C-9W,0,0,,2027-09-30,CMH139 > Milestones > Contract Milestones > Phase 5 (ROMP09 & 11)
MS50020,Milestone Phase 5 - H2C-5W,0,0,,2027-09-30,CMH139 > Milestones > Contract Milestones > Phase 5 (ROMP09 & 11)
MS50030,Milestone Phase 5 - H2C-4W,0,0,,2027-09-30,CMH139 > Milestones > Contract Milestones > Phase 5 (ROMP09 & 11)
MS50040,Milestone Phase 5 - Electric Room LV Panelboards Energized,0,0,,2027-10-14,CMH139 > Milestones > Contract Milestones > Phase 5 (ROMP09 & 11)
MS50050,Milestone Phase 5 - Mechanical Equipment Startup Complete for Controls,0,0,,2027-11-15,CMH139 > Milestones > Contract Milestones > Phase 5 (ROMP09 & 11)
MS50070,Milestone Phase 5 - H2C-2W,0,0,,2027-12-01,CMH139 > Milestones > Contract Milestones > Phase 5 (ROMP09 & 11)
MS50060,Milestone Phase 5 - NEA [AWS Contract Date 2/21/2028],0,0,,2028-02-21,CMH139 > Milestones > Contract Milestones > Phase 5 (ROMP09 & 11)
MS50080,Milestone Phase 5 - H2C [AWS Contract Date 3/10/2028],0,0,,2028-03-10,CMH139 > Milestones > Contract Milestones > Phase 5 (ROMP09 & 11)
MS50090,Milestone Phase 5 - PFHO [AWS Contract Date 3/31/2028],0,0,,2028-03-31,CMH139 > Milestones > Contract Milestones > Phase 5 (ROMP09 & 11)
MS50100,Milestone Phase 5 - PCO,0,0,,2028-04-14,CMH139 > Milestones > Contract Milestones > Phase 5 (ROMP09 & 11)
MS60000,Milestone Phase 6 - Gray Early Start Work Date [AWS Contract Date 9/27/2027],0,0,2027-08-27,,CMH139 > Milestones > Contract Milestones > Phase 6 (ROMP10 & 12)
MS60010,Milestone Phase 6 - H2C-9W,0,0,,2027-11-04,CMH139 > Milestones > Contract Milestones > Phase 6 (ROMP10 & 12)
MS60020,Milestone Phase 6 - H2C-5W,0,0,,2027-11-04,CMH139 > Milestones > Contract Milestones > Phase 6 (ROMP10 & 12)
MS60030,Milestone Phase 6 - H2C-4W,0,0,,2027-11-04,CMH139 > Milestones > Contract Milestones > Phase 6 (ROMP10 & 12)
MS60040,Milestone Phase 6 - Electric Room LV Panelboards Energized,0,0,,2027-11-18,CMH139 > Milestones > Contract Milestones > Phase 6 (ROMP10 & 12)
MS60050,Milestone Phase 6 - Mechanical Equipment Startup Complete for Controls,0,0,,2027-12-02,CMH139 > Milestones > Contract Milestones > Phase 6 (ROMP10 & 12)
MS60070,Milestone Phase 6 - H2C-2W,0,0,,2027-12-16,CMH139 > Milestones > Contract Milestones > Phase 6 (ROMP10 & 12)
MS60060,Milestone Phase 6 - NEA [AWS Contract Date 3/20/2028],0,0,,2028-03-20,CMH139 > Milestones > Contract Milestones > Phase 6 (ROMP10 & 12)
MS60080,Milestone Phase 6 - H2C [AWS Contract Date 4/07/2028],0,0,,2028-04-07,CMH139 > Milestones > Contract Milestones > Phase 6 (ROMP10 & 12)
MS60090,Milestone Phase 6 - PFHO [AWS Contract Date 4/28/2028],0,0,,2028-04-28,CMH139 > Milestones > Contract Milestones > Phase 6 (ROMP10 & 12)
MS60100,Milestone Phase 6 - PCO [AWS Contract Date 4/28/2028],0,0,,2028-04-28,CMH139 > Milestones > Contract Milestones > Phase 6 (ROMP10 & 12)
P1MS.160,Permit - Building Permit,0,0,,2026-08-13,CMH139 > Pre-Construction > Permitting & Design > Permits
DS1040,Design - BIM Kickoff,1,0,2026-08-20,2026-08-20,CMH139 > Pre-Construction > Permitting & Design > Design
DS1050,Design - Site U/G Coordination Model Turnover,10,0,2026-08-24,2026-09-04,CMH139 > Pre-Construction > Permitting & Design > Design
DS1070,Design - Building D U/G Coordination,25,0,2026-08-31,2026-10-05,CMH139 > Pre-Construction > Permitting & Design > Design
DS1100,Design - Building D Office Coordination,20,13,2026-10-08,2026-11-04,CMH139 > Pre-Construction > Permitting & Design > Design
DS1080,Design - Building D Interior MEP Coordination (Walls & MEP),40,40,2026-10-19,2026-12-15,CMH139 > Pre-Construction > Permitting & Design > Design
DS1110,Design - Gen Yard Coordination,30,30,2026-11-16,2026-12-30,CMH139 > Pre-Construction > Permitting & Design > Design
PR.1620,Procurement / Site & Shell - Award Site Utilities Package (LOI),10,0,2026-09-08,2026-10-09,CMH139 > Pre-Construction > Procurement > Subcontracts > Site & Shell > Site Utilities
PR.1650,Procurement / Site & Shell - Prepare Site Utilities (Plumbing) Submittals / Shop Drawings,10,1,2026-10-14,2026-10-19,CMH139 > Pre-Construction > Procurement > Subcontracts > Site & Shell > Site Utilities
PR.1660,Procurement / Site & Shell - Review & Approve Site Utilities (Plumbing) Submittals / Shop Drawings,10,10,2026-10-20,2026-11-02,CMH139 > Pre-Construction > Procurement > Subcontracts > Site & Shell > Site Utilities
PR.1030,Procurement / Site & Shell - Plumbing Materials Fabrication & Deliver,15,15,2026-11-03,2026-11-23,CMH139 > Pre-Construction > Procurement > Subcontracts > Site & Shell > Site Utilities
PR.1630,Procurement / Site & Shell - Award Fencing Package,20,20,2026-10-19,2026-11-13,CMH139 > Pre-Construction > Procurement > Subcontracts > Site & Shell > Fencing
PR.1810,Procurement / Site & Shell - Prepare Fencing Submittals / Shop Drawings,10,10,2026-11-16,2026-12-01,CMH139 > Pre-Construction > Procurement > Subcontracts > Site & Shell > Fencing
PR.1820,Procurement / Site & Shell - Review & Approve Fencing Submittals / Shop Drawings,10,10,2026-12-02,2026-12-15,CMH139 > Pre-Construction > Procurement > Subcontracts > Site & Shell > Fencing
PR.1830,Procurement / Site & Shell - Fencing Fabrication & Deliver,5,5,2026-12-16,2026-12-22,CMH139 > Pre-Construction > Procurement > Subcontracts > Site & Shell > Fencing
PR.1575,Procurement / Site & Shell - Award Deep Foundations Package,7,0,2026-05-14,2026-06-04,CMH139 > Pre-Construction > Procurement > Subcontracts > Site & Shell > Deep Foundation
PR.1850,Procurement / Site & Shell - Prepare Deep Foundations Submittals / Shop Drawings,10,0,2026-06-05,2026-06-15,CMH139 > Pre-Construction > Procurement > Subcontracts > Site & Shell > Deep Foundation
PR.1860,Procurement / Site & Shell - Review & Approve Submittals / Shop Drawings (EOR),10,0,2026-06-16,2026-06-23,CMH139 > Pre-Construction > Procurement > Subcontracts > Site & Shell > Deep Foundation
PR.2300,Procurement / Site & Shell - Review & Approve Submittals / Shop Drawings (FAA City Submission),30,0,2026-06-29,2026-08-13,CMH139 > Pre-Construction > Procurement > Subcontracts > Site & Shell > Deep Foundation
PR.1840,Procurement / Site & Shell - Deep Foundations Delivery / Mobilization,5,0,2026-07-22,2026-07-28,CMH139 > Pre-Construction > Procurement > Subcontracts > Site & Shell > Deep Foundation
PR.1480,Procurement / Site & Shell - Award CIP Concrete Package,20,0,2026-07-21,2026-09-10,CMH139 > Pre-Construction > Procurement > Subcontracts > Site & Shell > Concrete > Cast In Place
PR.1890,Procurement / Site & Shell - Prepare CIP Submittals / Shop Drawings,10,0,2026-07-31,2026-08-13,CMH139 > Pre-Construction > Procurement > Subcontracts > Site & Shell > Concrete > Cast In Place
PR.1900,Procurement / Site & Shell - Review & Approve CIP Submittals / Shop Drawings,10,0,2026-08-14,2026-08-27,CMH139 > Pre-Construction > Procurement > Subcontracts > Site & Shell > Concrete > Cast In Place
PR.1040,Procurement / Site & Shell - Foundation Materials Fabrication & Deliver,10,0,2026-09-18,2026-10-09,CMH139 > Pre-Construction > Procurement > Subcontracts > Site & Shell > Concrete > Cast In Place
PR.1470,Procurement / Site & Shell - Award Precast Concrete Package,20,5,2026-07-27,2026-10-23,CMH139 > Pre-Construction > Procurement > Subcontracts > Site & Shell > Concrete > Precast
PR.1870,Procurement / Site & Shell - Prepare Precast Concrete Submittals / Shop Drawings,20,20,2026-10-26,2026-11-20,CMH139 > Pre-Construction > Procurement > Subcontracts > Site & Shell > Concrete > Precast
PR.1880,Procurement / Site & Shell - Review & Approve Precast Concrete Submittals / Shop Drawings,10,10,2026-11-23,2026-12-08,CMH139 > Pre-Construction > Procurement > Subcontracts > Site & Shell > Concrete > Precast
PR.1090,Procurement / Site & Shell - Precast Concrete Seq 1 Fabrication & Deliver,30,30,2026-12-09,2027-01-21,CMH139 > Pre-Construction > Procurement > Subcontracts > Site & Shell > Concrete > Precast
PR.1730,Procurement / Site & Shell - Precast Concrete Seq 2 Fabrication & Deliver,30,30,2026-12-31,2027-02-11,CMH139 > Pre-Construction > Procurement > Subcontracts > Site & Shell > Concrete > Precast
PR.1740,Procurement / Site & Shell - Precast Concrete Seq 3 Fabrication & Deliver,30,30,2027-01-22,2027-03-04,CMH139 > Pre-Construction > Procurement > Subcontracts > Site & Shell > Concrete > Precast
PR.1750,Procurement / Site & Shell - Precast Concrete Seq 4 Fabrication & Deliver,30,30,2027-01-29,2027-03-11,CMH139 > Pre-Construction > Procurement > Subcontracts > Site & Shell > Concrete > Precast
PR.1460,Procurement / Site & Shell - Award Steel Package,7,0,2026-05-14,2026-06-10,CMH139 > Pre-Construction > Procurement > Subcontracts > Site & Shell > Steel
PR.1140,<FRAG> Steel Early Funding Delay,131,22,2026-05-14,2026-11-17,CMH139 > Pre-Construction > Procurement > Subcontracts > Site & Shell > Steel
PR.1910,Procurement / Site & Shell - Prepare Steel Submittals / Shop Drawings Seq. 1-3,15,0,2026-08-24,2026-09-23,CMH139 > Pre-Construction > Procurement > Subcontracts > Site & Shell > Steel
PR.2820,Procurement / Site & Shell - Prepare Steel Submittals / Shop Drawings Seq. 4-6,10,0,2026-09-04,2026-09-24,CMH139 > Pre-Construction > Procurement > Subcontracts > Site & Shell > Steel
PR.2830,Procurement / Site & Shell - Prepare Steel Submittals / Shop Drawings Seq. 7-9,10,0,2026-09-11,2026-09-29,CMH139 > Pre-Construction > Procurement > Subcontracts > Site & Shell > Steel
PR.2840,Procurement / Site & Shell - Review & Approve Steel Submittals / Shop Drawings Seq 1-3,10,0,2026-09-24,2026-10-14,CMH139 > Pre-Construction > Procurement > Subcontracts > Site & Shell > Steel
PR.2760,Procurement / Site & Shell - Review & Approve Steel Submittals / Shop Drawings Seq 4-6,10,5,2026-09-25,2026-10-23,CMH139 > Pre-Construction > Procurement > Subcontracts > Site & Shell > Steel
PR.2770,Procurement / Site & Shell - Review & Approve Steel Submittals / Shop Drawings Seq 7-9,10,10,2026-10-19,2026-10-30,CMH139 > Pre-Construction > Procurement > Subcontracts > Site & Shell > Steel
PR.2780,Procurement / Site & Shell - Review & Approve Steel Submittals / Shop Drawings (Screen Wall),5,5,2026-11-02,2026-11-06,CMH139 > Pre-Construction > Procurement > Subcontracts > Site & Shell > Steel
PR.1080,Procurement / Site & Shell - Structural Steel Fabrication & Deliver Seq 1-3,40,40,2026-11-18,2027-01-18,CMH139 > Pre-Construction > Procurement > Subcontracts > Site & Shell > Steel
PR.1710,Procurement / Site & Shell - Structural Steel Fabrication & Deliver Screen Wall,23,23,2026-12-04,2027-01-07,CMH139 > Pre-Construction > Procurement > Subcontracts > Site & Shell > Steel
PR.1690,Procurement / Site & Shell - Structural Steel Fabrication & Deliver Seq 4-6,14,14,2027-01-19,2027-02-05,CMH139 > Pre-Construction > Procurement > Subcontracts > Site & Shell > Steel
PR.1150,Procurement / Site & Shell - Cooper Mobilization,5,5,2027-01-19,2027-01-23,CMH139 > Pre-Construction > Procurement > Subcontracts > Site & Shell > Steel
PR.1700,Procurement / Site & Shell - Structural Steel Fabrication & Deliver Seq 7-9,9,9,2027-02-09,2027-02-19,CMH139 > Pre-Construction > Procurement > Subcontracts > Site & Shell > Steel
PR.2260,Procurement / Site & Shell - Award Stairs Package,5,0,2026-06-04,2026-06-10,CMH139 > Pre-Construction > Procurement > Subcontracts > Site & Shell > Stairs
PR.2150,Procurement / Site & Shell - Review & Approve Stairs Submittals / Shop Drawings,10,10,2026-10-19,2026-10-30,CMH139 > Pre-Construction > Procurement > Subcontracts > Site & Shell > Stairs
PR.1680,Procurement / Site & Shell - Stair Towers (1-3) Fabrication & Deliver,14,14,2026-11-02,2026-11-19,CMH139 > Pre-Construction > Procurement > Subcontracts > Site & Shell > Stairs
PR.1780,Procurement / Site & Shell - Stair Towers (4-6) Fabrication & Deliver,14,14,2026-11-20,2026-12-11,CMH139 > Pre-Construction > Procurement > Subcontracts > Site & Shell > Stairs
PR.1790,Procurement / Site & Shell - Stair Towers (7-9) Fabrication & Deliver,14,14,2026-12-14,2027-01-04,CMH139 > Pre-Construction > Procurement > Subcontracts > Site & Shell > Stairs
PR.1570,Procurement / Site & Shell - Award Screen Wall & Building Siding Package,20,20,2026-10-19,2026-11-13,CMH139 > Pre-Construction > Procurement > Subcontracts > Site & Shell > Screen Wall & Building Siding
PR.1930,Procurement / Site & Shell - Prepare Screen Wall & Building Submittals / Shop Drawings,10,10,2026-11-16,2026-12-01,CMH139 > Pre-Construction > Procurement > Subcontracts > Site & Shell > Screen Wall & Building Siding
PR.1940,Procurement / Site & Shell - Review & Approve Screen Wall & Building Submittals / Shop Drawings,10,10,2026-12-02,2026-12-15,CMH139 > Pre-Construction > Procurement > Subcontracts > Site & Shell > Screen Wall & Building Siding
PR.1070,Procurement / Site & Shell - Screen Wall Fabrication & Deliver,40,40,2026-12-16,2027-02-11,CMH139 > Pre-Construction > Procurement > Subcontracts > Site & Shell > Screen Wall & Building Siding
PR.1060,Procurement / Site & Shell - Building Siding Fabrication & Deliver,40,40,2026-12-16,2027-02-11,CMH139 > Pre-Construction > Procurement > Subcontracts > Site & Shell > Screen Wall & Building Siding
PR.1500,Procurement / Site & Shell - Award Roofing Package,20,20,2026-10-19,2026-11-13,CMH139 > Pre-Construction > Procurement > Subcontracts > Site & Shell > Roofing
PR.1950,Procurement / Site & Shell - Prepare Roofing Submittals / Shop Drawings,10,10,2026-11-16,2026-12-01,CMH139 > Pre-Construction > Procurement > Subcontracts > Site & Shell > Roofing
PR.1960,Procurement / Site & Shell - Review & Approve Roofing Submittals / Shop Drawings,10,10,2026-12-02,2026-12-15,CMH139 > Pre-Construction > Procurement > Subcontracts > Site & Shell > Roofing
PR.1050,Procurement / Site & Shell - Roofing Materials Fabrication & Deliver,20,20,2026-12-16,2027-01-14,CMH139 > Pre-Construction > Procurement > Subcontracts > Site & Shell > Roofing
PR.1450,Procurement / Site & Shell - Award Mechanical Package,10,2,2026-09-08,2026-10-20,CMH139 > Pre-Construction > Procurement > Subcontracts > Site & Shell > Mechanical
PR.1970,Procurement / Site & Shell - Prepare Mechanical Submittals / Shop Drawings,10,10,2026-10-21,2026-11-03,CMH139 > Pre-Construction > Procurement > Subcontracts > Site & Shell > Mechanical
PR.1980,Procurement / Site & Shell - Review & Approve Mechanical Submittals / Shop Drawings,10,10,2026-11-04,2026-11-17,CMH139 > Pre-Construction > Procurement > Subcontracts > Site & Shell > Mechanical
PR.1990,Procurement / Site & Shell - Mechanical Fabrication & Deliver,10,10,2026-11-18,2026-12-03,CMH139 > Pre-Construction > Procurement > Subcontracts > Site & Shell > Mechanical
PR.2000,Procurement / Site & Shell - Award Electrical Package,10,0,2026-08-31,2026-09-08,CMH139 > Pre-Construction > Procurement > Subcontracts > Site & Shell > Electrical
PR.2010,Procurement / Site & Shell - Prepare Electrical Submittals / Shop Drawings,10,5,2026-09-14,2026-10-23,CMH139 > Pre-Construction > Procurement > Subcontracts > Site & Shell > Electrical
PR.1440,Procurement / Site & Shell - Review & Approve Electrical Submittals / Shop Drawings,10,10,2026-10-26,2026-11-06,CMH139 > Pre-Construction > Procurement > Subcontracts > Site & Shell > Electrical
PR.1020,Procurement / Site & Shell - Electrical U/G Conduits Fabrication & Deliver,5,5,2026-11-09,2026-11-13,CMH139 > Pre-Construction > Procurement > Subcontracts > Site & Shell > Electrical
PR.1010,Procurement / Site & Shell - Electrical Duct Bank Material Fabrication & Deliver,5,5,2026-11-09,2026-11-13,CMH139 > Pre-Construction > Procurement > Subcontracts > Site & Shell > Electrical
PR.1430,Procurement / Site & Shell - Award Fire Protection Package,20,5,2026-08-03,2026-10-23,CMH139 > Pre-Construction > Procurement > Subcontracts > Site & Shell > Fire Protection
PR.2020,Procurement / Site & Shell - Prepare Fire Protection Submittals / Shop Drawings,20,5,2026-09-08,2026-10-23,CMH139 > Pre-Construction > Procurement > Subcontracts > Site & Shell > Fire Protection
PR.2030,Procurement / Site & Shell - Review & Approve Fire Protection Submittals / Shop Drawings (EOR),10,10,2026-10-26,2026-11-06,CMH139 > Pre-Construction > Procurement > Subcontracts > Site & Shell > Fire Protection
PR.2450,Procurement / Site & Shell - Review & Approve Fire Protection Submittals / Shop Drawings (City),25,25,2026-10-26,2026-12-01,CMH139 > Pre-Construction > Procurement > Subcontracts > Site & Shell > Fire Protection
PR.1120,Procurement / Site & Shell - Fire Protection Fabricate & Deliver,10,10,2026-12-02,2026-12-15,CMH139 > Pre-Construction > Procurement > Subcontracts > Site & Shell > Fire Protection
PR.1560,Procurement / Site & Shell - Award Masonry Package,20,20,2026-10-19,2026-11-13,CMH139 > Pre-Construction > Procurement > Subcontracts > Site & Shell > Masonry
PR.2040,Procurement / Site & Shell - Prepare Masonry Submittals / Shop Drawings,10,10,2026-11-16,2026-12-01,CMH139 > Pre-Construction > Procurement > Subcontracts > Site & Shell > Masonry
PR.2050,Procurement / Site & Shell - Review & Approve Masonry Submittals / Shop Drawings,10,10,2026-12-02,2026-12-15,CMH139 > Pre-Construction > Procurement > Subcontracts > Site & Shell > Masonry
PR.2180,Procurement / Site & Shell - Masonry Material Fabrication & Deliver,5,5,2026-12-16,2026-12-22,CMH139 > Pre-Construction > Procurement > Subcontracts > Site & Shell > Masonry
PR.1550,Procurement / Site & Shell - Award Drywall Package,20,20,2026-10-19,2026-11-13,CMH139 > Pre-Construction > Procurement > Subcontracts > Site & Shell > Drywall
PR.2060,Procurement / Site & Shell - Prepare Drywall Submittals / Shop Drawings,10,10,2026-11-16,2026-12-01,CMH139 > Pre-Construction > Procurement > Subcontracts > Site & Shell > Drywall
PR.2070,Procurement / Site & Shell - Review & Approve Drywall Submittals / Shop Drawings,10,10,2026-12-02,2026-12-15,CMH139 > Pre-Construction > Procurement > Subcontracts > Site & Shell > Drywall
PR.2190,Procurement / Site & Shell - Drywall Material Fabrication & Deliver,5,5,2026-12-16,2026-12-22,CMH139 > Pre-Construction > Procurement > Subcontracts > Site & Shell > Drywall
PR.1540,Procurement / Site & Shell - Award Paint Package,20,20,2026-10-19,2026-11-13,CMH139 > Pre-Construction > Procurement > Subcontracts > Site & Shell > Paint
PR.2080,Procurement / Site & Shell - Prepare Paint Submittals / Shop Drawings,10,10,2026-11-16,2026-12-01,CMH139 > Pre-Construction > Procurement > Subcontracts > Site & Shell > Paint
PR.2090,Procurement / Site & Shell - Review & Approve Paint Submittals / Shop Drawings,10,10,2026-12-02,2026-12-15,CMH139 > Pre-Construction > Procurement > Subcontracts > Site & Shell > Paint
PR.2200,Procurement / Site & Shell - Paint Material Fabrication & Deliver,5,5,2026-12-16,2026-12-22,CMH139 > Pre-Construction > Procurement > Subcontracts > Site & Shell > Paint
PR.2340,Procurement / Site & Shell - Award Dock Equipment Package,20,20,2026-10-19,2026-11-13,CMH139 > Pre-Construction > Procurement > Subcontracts > Site & Shell > Dock Equipment / Levelers
PR.2350,Procurement / Site & Shell - Prepare Dock Equipment Submittals / Shop Drawings,10,10,2026-11-16,2026-12-01,CMH139 > Pre-Construction > Procurement > Subcontracts > Site & Shell > Dock Equipment / Levelers
PR.2360,Procurement / Site & Shell - Review & Approve Dock Equipment Submittals / Shop Drawings,10,10,2026-12-02,2026-12-15,CMH139 > Pre-Construction > Procurement > Subcontracts > Site & Shell > Dock Equipment / Levelers
PR.1800,Procurement / Site & Shell - Dock Equipment Fabrication & Deliver,60,60,2026-12-16,2027-03-11,CMH139 > Pre-Construction > Procurement > Subcontracts > Site & Shell > Dock Equipment / Levelers
PR.2720,Procurement / Site & Shell - Award Turn Stile Package,20,20,2026-10-19,2026-11-13,CMH139 > Pre-Construction > Procurement > Subcontracts > Site & Shell > Turn Stiles
PR.2740,Procurement / Site & Shell - Prepare Turn Stile Submittals / Shop Drawings,10,10,2026-11-16,2026-12-01,CMH139 > Pre-Construction > Procurement > Subcontracts > Site & Shell > Turn Stiles
PR.2750,Procurement / Site & Shell - Review & Approve Turn Stile Submittals / Shop Drawings,10,10,2026-12-02,2026-12-15,CMH139 > Pre-Construction > Procurement > Subcontracts > Site & Shell > Turn Stiles
PR.2730,Procurement / Site & Shell - Fab and Deliver Turn Stiles,60,60,2026-12-16,2027-03-11,CMH139 > Pre-Construction > Procurement > Subcontracts > Site & Shell > Turn Stiles
PR.2420,Procurement / Site & Shell - Award Glazing Package,20,20,2026-10-19,2026-11-13,CMH139 > Pre-Construction > Procurement > Subcontracts > Site & Shell > Glazing
PR.2430,Procurement / Site & Shell - Prepare Glazing Submittals / Shop Drawings,10,10,2026-11-16,2026-12-01,CMH139 > Pre-Construction > Procurement > Subcontracts > Site & Shell > Glazing
PR.2440,Procurement / Site & Shell - Review & Approve Glazing Submittals / Shop Drawings,10,10,2026-12-02,2026-12-15,CMH139 > Pre-Construction > Procurement > Subcontracts > Site & Shell > Glazing
PR.2410,Procurement / Site & Shell - Glazing Deliver,30,30,2027-05-07,2027-06-18,CMH139 > Pre-Construction > Procurement > Subcontracts > Site & Shell > Glazing
PR.1130,Procurement / Site & Shell - Award Louvers / Backdraft Dampers Package,20,20,2026-10-19,2026-11-13,CMH139 > Pre-Construction > Procurement > Subcontracts > Site & Shell > Louvers & Backdraft Dampers
PR.2100,Procurement / Site & Shell - Prepare Louvers / Backdraft Dampers Submittals / Shop Drawings,10,10,2026-11-16,2026-12-01,CMH139 > Pre-Construction > Procurement > Subcontracts > Site & Shell > Louvers & Backdraft Dampers
PR.2110,Procurement / Site & Shell - Review & Approve Louvers / Backdraft Dampers Submittals / Shop Drawings,10,10,2026-12-02,2026-12-15,CMH139 > Pre-Construction > Procurement > Subcontracts > Site & Shell > Louvers & Backdraft Dampers
PR.1000,Procurement / Site & Shell - Louvers Dampers Fabrication & Deliver,50,50,2026-12-16,2027-02-25,CMH139 > Pre-Construction > Procurement > Subcontracts > Site & Shell > Louvers & Backdraft Dampers
PR.2850,Procurement / Site & Shell - Backdraft Dampers Fabrication & Deliver,50,50,2026-12-16,2027-02-25,CMH139 > Pre-Construction > Procurement > Subcontracts > Site & Shell > Louvers & Backdraft Dampers
PR.1420,Procurement / Site & Shell - Award Elevator Package,11,0,2026-05-14,2026-09-11,CMH139 > Pre-Construction > Procurement > Subcontracts > Site & Shell > Elevator
PR.1110,Procurement / Site & Shell - Elevators Fabricate & Deliver,90,51,2026-08-24,2026-12-31,CMH139 > Pre-Construction > Procurement > Subcontracts > Site & Shell > Elevator
PR.2120,Procurement / Site & Shell - Prepare Elevator Submittals / Shop Drawings,30,5,2026-09-03,2026-10-23,CMH139 > Pre-Construction > Procurement > Subcontracts > Site & Shell > Elevator
PR.2130,Procurement / Site & Shell - Review & Approve Elevator Submittals / Shop Drawings,10,10,2026-10-26,2026-11-06,CMH139 > Pre-Construction > Procurement > Subcontracts > Site & Shell > Elevator
PR.1530,Procurement / Site & Shell - Award OH Doors Package,20,20,2026-10-19,2026-11-13,CMH139 > Pre-Construction > Procurement > Subcontracts > Interior > Doors > Overhead Doors
PR.2230,Procurement / Site & Shell - Prepare OH Doors Submittals / Shop Drawings,10,10,2026-11-16,2026-12-01,CMH139 > Pre-Construction > Procurement > Subcontracts > Interior > Doors > Overhead Doors
PR.2240,Procurement / Site & Shell - Review & Approve OH Doors Submittals / Shop Drawings,10,10,2026-12-02,2026-12-15,CMH139 > Pre-Construction > Procurement > Subcontracts > Interior > Doors > Overhead Doors
PR.2250,Procurement / Site & Shell - OH Doors Fabrication & Deliver,5,5,2026-12-16,2026-12-22,CMH139 > Pre-Construction > Procurement > Subcontracts > Interior > Doors > Overhead Doors
PR.1520,Procurement / Site & Shell - Award Personnel Doors Package,20,20,2026-10-19,2026-11-13,CMH139 > Pre-Construction > Procurement > Subcontracts > Interior > Doors > Personnel Doors
PR.2210,Procurement / Site & Shell - Prepare Personnel Doors Submittals / Shop Drawings,10,10,2026-11-16,2026-12-01,CMH139 > Pre-Construction > Procurement > Subcontracts > Interior > Doors > Personnel Doors
PR.2220,Procurement / Site & Shell - Review & Approve Personnel Doors Submittals / Shop Drawings,10,10,2026-12-02,2026-12-15,CMH139 > Pre-Construction > Procurement > Subcontracts > Interior > Doors > Personnel Doors
PR.1100,Procurement / Site & Shell - Fab and Deliver Personnel Doors,30,30,2026-12-16,2027-01-28,CMH139 > Pre-Construction > Procurement > Subcontracts > Interior > Doors > Personnel Doors
PR.2570,Procurement / Interior - Award Mechanical Package,5,5,2026-09-08,2026-10-23,CMH139 > Pre-Construction > Procurement > Subcontracts > Interior > Mechanical
PR.2630,Procurement / Interior - Prepare Mechanical Submittals / Shop Drawings,10,10,2026-10-26,2026-11-06,CMH139 > Pre-Construction > Procurement > Subcontracts > Interior > Mechanical
PR.2640,Procurement / Interior - Review & Approve Mechanical Submittals / Shop Drawings,10,10,2026-11-09,2026-11-20,CMH139 > Pre-Construction > Procurement > Subcontracts > Interior > Mechanical
PR.2620,Procurement / Interior - Mechanical Fabrication & Deliver,20,20,2026-11-23,2026-12-22,CMH139 > Pre-Construction > Procurement > Subcontracts > Interior > Mechanical
PR.2650,Procurement / Interior - Award Electrical Package,5,5,2026-10-19,2026-10-23,CMH139 > Pre-Construction > Procurement > Subcontracts > Interior > Electrical
PR.2660,Procurement / Interior - Prepare Electrical Submittals / Shop Drawings,10,10,2026-10-26,2026-11-06,CMH139 > Pre-Construction > Procurement > Subcontracts > Interior > Electrical
PR.2580,Procurement / Interior - Review & Approve Electrical Submittals / Shop Drawings,10,10,2026-11-09,2026-11-20,CMH139 > Pre-Construction > Procurement > Subcontracts > Interior > Electrical
PR.2600,Procurement / Interior - Electrical Material Fabrication & Deliver,5,5,2026-11-23,2026-12-01,CMH139 > Pre-Construction > Procurement > Subcontracts > Interior > Electrical
PR.2700,Procurement / Interior - Award Fire Protection Package,20,20,2026-10-19,2026-11-13,CMH139 > Pre-Construction > Procurement > Subcontracts > Interior > Fire Protection
PR.2710,Procurement / Interior - Fire Protection Fabricate & Deliver,10,10,2026-11-16,2026-12-01,CMH139 > Pre-Construction > Procurement > Subcontracts > Interior > Fire Protection
PR.2530,Procurement / Interior - Award Drywall Package,5,5,2026-10-19,2026-10-23,CMH139 > Pre-Construction > Procurement > Subcontracts > Interior > Drywall
PR.2540,Procurement / Interior - Prepare Drywall Submittals / Shop Drawings,10,10,2026-10-26,2026-11-06,CMH139 > Pre-Construction > Procurement > Subcontracts > Interior > Drywall
PR.2550,Procurement / Interior - Review & Approve Drywall Submittals / Shop Drawings,10,10,2026-11-09,2026-11-20,CMH139 > Pre-Construction > Procurement > Subcontracts > Interior > Drywall
PR.2560,Procurement / Interior - Drywall Material Fabrication & Deliver,5,5,2026-11-23,2026-12-01,CMH139 > Pre-Construction > Procurement > Subcontracts > Interior > Drywall
PR.2610,Procurement / Interior - Award Paint Package,5,5,2026-10-19,2026-10-23,CMH139 > Pre-Construction > Procurement > Subcontracts > Interior > Paint
PR.2670,Procurement / Interior - Prepare Paint Submittals / Shop Drawings,10,10,2026-10-26,2026-11-06,CMH139 > Pre-Construction > Procurement > Subcontracts > Interior > Paint
PR.2680,Procurement / Interior - Review & Approve Paint Submittals / Shop Drawings,10,10,2026-11-09,2026-11-20,CMH139 > Pre-Construction > Procurement > Subcontracts > Interior > Paint
PR.2690,Procurement / Interior - Paint Material Fabrication & Deliver,5,5,2026-11-23,2026-12-01,CMH139 > Pre-Construction > Procurement > Subcontracts > Interior > Paint
OFCIP1.310,Phase 1 - OFCI Deliver House Generators [AWS Contract Date 4/12/2027],0,0,,2027-04-12,CMH139 > Pre-Construction > Procurement > OFCI > Phase 1 (ROMP01 & 03)
OFCIP1.190,Phase 1 - OFCI Deliver PDCs [AWS Contract Date 4/12/2027],0,0,,2027-04-12,CMH139 > Pre-Construction > Procurement > OFCI > Phase 1 (ROMP01 & 03)
OFCIP1.180,Phase 1 - OFCI Deliver Main Service and House UPS [AWS Contract Date 4/12/2027],0,0,,2027-04-12,CMH139 > Pre-Construction > Procurement > OFCI > Phase 1 (ROMP01 & 03)
OFCIP1.210,Phase 1 - OFCI Deliver Bus Duct [AWS Contract Date 4/12/2027],0,0,,2027-04-12,CMH139 > Pre-Construction > Procurement > OFCI > Phase 1 (ROMP01 & 03)
OFCIP1.160,Phase 1 - OFCI Deliver USB [AWS Contract Date 4/12/2027],0,0,,2027-04-12,CMH139 > Pre-Construction > Procurement > OFCI > Phase 1 (ROMP01 & 03)
OFCIP1.150,Phase 1 - OFCI Deliver LV Panels [AWS Contract Date 4/12/2027],0,0,,2027-04-12,CMH139 > Pre-Construction > Procurement > OFCI > Phase 1 (ROMP01 & 03)
OFCIP1.140,Phase 1 - OFCI Deliver Transformers [AWS Contract Date 4/12/2027],0,0,,2027-04-12,CMH139 > Pre-Construction > Procurement > OFCI > Phase 1 (ROMP01 & 03)
OFCIP1.130,Phase 1 - OFCI Deliver House and MV SWGR [AWS Contract Date 4/12/2027],0,0,,2027-04-12,CMH139 > Pre-Construction > Procurement > OFCI > Phase 1 (ROMP01 & 03)
OFCIP1.200,Phase 1 - OFCI Deliver Generators [AWS Contract Date 4/12/2027],0,0,,2027-04-12,CMH139 > Pre-Construction > Procurement > OFCI > Phase 1 (ROMP01 & 03)
OFCIP1.120,Phase 1 - OFCI Deliver TAHUs [AWS Contract Date 4/12/2027],0,0,,2027-04-12,CMH139 > Pre-Construction > Procurement > OFCI > Phase 1 (ROMP01 & 03)
OFCIP1.100,Phase 1 - OFCI Deliver Racking [AWS Contract Date 4/12/2027],0,0,,2027-04-12,CMH139 > Pre-Construction > Procurement > OFCI > Phase 1 (ROMP01 & 03)
OFCIP1.110,Phase 1 - OFCI Deliver AMCOP & BACOP [AWS Contract Date 4/12/2027],0,0,,2027-04-12,CMH139 > Pre-Construction > Procurement > OFCI > Phase 1 (ROMP01 & 03)
OFCIP1.330,Phase 1 - OFCI Deliver PDC Whips [AWS Contract Date 4/12/2027],0,0,,2027-04-12,CMH139 > Pre-Construction > Procurement > OFCI > Phase 1 (ROMP01 & 03)
OFCIP1.170,Phase 1 - OFCI Deliver UPS [AWS Contract Date 4/12/2027],0,0,,2027-04-12,CMH139 > Pre-Construction > Procurement > OFCI > Phase 1 (ROMP01 & 03)
OFCIP2.140,Phase 2 - OFCI Deliver Transformers [AWS Contract Date 6/14/2027],0,0,,2027-04-12,CMH139 > Pre-Construction > Procurement > OFCI > Phase 2 (ROMP02 & 04)
OFCIP2.190,Phase 2 - OFCI Deliver PDCs & PDC Whips [AWS Contract Date 6/14/2027],0,0,,2027-06-14,CMH139 > Pre-Construction > Procurement > OFCI > Phase 2 (ROMP02 & 04)
OFCIP2.210,Phase 2 - OFCI Deliver Bus Duct [AWS Contract Date 6/14/2027],0,0,,2027-06-14,CMH139 > Pre-Construction > Procurement > OFCI > Phase 2 (ROMP02 & 04)
OFCIP2.160,Phase 2 - OFCI Deliver USB [AWS Contract Date 6/14/2027],0,0,,2027-06-14,CMH139 > Pre-Construction > Procurement > OFCI > Phase 2 (ROMP02 & 04)
OFCIP2.150,Phase 2 - OFCI Deliver LV Panels [AWS Contract Date 6/14/2027],0,0,,2027-06-14,CMH139 > Pre-Construction > Procurement > OFCI > Phase 2 (ROMP02 & 04)
OFCIP2.200,Phase 2 - OFCI Deliver Generators [AWS Contract Date 6/14/2027],0,0,,2027-06-14,CMH139 > Pre-Construction > Procurement > OFCI > Phase 2 (ROMP02 & 04)
OFCIP2.120,Phase 2 - OFCI Deliver TAHUs [AWS Contract Date 6/14/2027],0,0,,2027-06-14,CMH139 > Pre-Construction > Procurement > OFCI > Phase 2 (ROMP02 & 04)
OFCIP2.100,Phase 2 - OFCI Deliver Racking [AWS Contract Date 6/14/2027],0,0,,2027-06-14,CMH139 > Pre-Construction > Procurement > OFCI > Phase 2 (ROMP02 & 04)
OFCIP2.110,Phase 2 - OFCI Deliver AMCOP & BACOP [AWS Contract Date 6/14/2027],0,0,,2027-06-14,CMH139 > Pre-Construction > Procurement > OFCI > Phase 2 (ROMP02 & 04)
OFCIP2.340,Phase 2 - OFCI Deliver UPS [AWS Contract Date 6/14/2027],0,0,,2027-06-14,CMH139 > Pre-Construction > Procurement > OFCI > Phase 2 (ROMP02 & 04)
OFCIP5.140,Phase 3 - OFCI Deliver Transformers [AWS Contract Date 7/12/2027],0,0,,2027-04-12,CMH139 > Pre-Construction > Procurement > OFCI > Phase 3 (ROMP05 & 07)
OFCIP5.190,Phase 3 - OFCI Deliver PDCs & PDC Whips [AWS Contract Date 7/12/2027],0,0,,2027-07-12,CMH139 > Pre-Construction > Procurement > OFCI > Phase 3 (ROMP05 & 07)
OFCIP5.180,Phase 3 - OFCI Deliver UPS [AWS Contract Date 7/12/2027],0,0,,2027-07-12,CMH139 > Pre-Construction > Procurement > OFCI > Phase 3 (ROMP05 & 07)
OFCIP5.210,Phase 3 - OFCI Deliver Bus Duct [AWS Contract Date 7/12/2027],0,0,,2027-07-12,CMH139 > Pre-Construction > Procurement > OFCI > Phase 3 (ROMP05 & 07)
OFCIP5.160,Phase 3 - OFCI Deliver USB [AWS Contract Date 7/12/2027],0,0,,2027-07-12,CMH139 > Pre-Construction > Procurement > OFCI > Phase 3 (ROMP05 & 07)
OFCIP5.150,Phase 3 - OFCI Deliver LV Panels [AWS Contract Date 7/12/2027],0,0,,2027-07-12,CMH139 > Pre-Construction > Procurement > OFCI > Phase 3 (ROMP05 & 07)
OFCIP5.200,Phase 3 - OFCI Deliver Generators [AWS Contract Date 7/12/2027],0,0,,2027-07-12,CMH139 > Pre-Construction > Procurement > OFCI > Phase 3 (ROMP05 & 07)
OFCIP5.120,Phase 3 - OFCI Deliver TAHUs [AWS Contract Date 7/12/2027],0,0,,2027-07-12,CMH139 > Pre-Construction > Procurement > OFCI > Phase 3 (ROMP05 & 07)
OFCIP5.100,Phase 3 - OFCI Deliver Racking [AWS Contract Date 7/12/2027],0,0,,2027-07-12,CMH139 > Pre-Construction > Procurement > OFCI > Phase 3 (ROMP05 & 07)
OFCIP5.110,Phase 3 - OFCI Deliver AMCOP & BACOP [AWS Contract Date 7/12/2027],0,0,,2027-07-12,CMH139 > Pre-Construction > Procurement > OFCI > Phase 3 (ROMP05 & 07)
OFCIP6.140,Phase 4 - OFCI Deliver Transformers [AWS Contract Date 8/09/2027],0,0,,2027-04-12,CMH139 > Pre-Construction > Procurement > OFCI > Phase 4 (ROMP06 & 08)
OFCIP6.190,Phase 4 - OFCI Deliver PDCs & PDC Whips [AWS Contract Date 8/09/2027],0,0,,2027-08-09,CMH139 > Pre-Construction > Procurement > OFCI > Phase 4 (ROMP06 & 08)
OFCIP6.180,Phase 4 - OFCI Deliver UPS [AWS Contract Date 8/09/2027],0,0,,2027-08-09,CMH139 > Pre-Construction > Procurement > OFCI > Phase 4 (ROMP06 & 08)
OFCIP6.210,Phase 4 - OFCI Deliver Bus Duct [AWS Contract Date 8/09/2027],0,0,,2027-08-09,CMH139 > Pre-Construction > Procurement > OFCI > Phase 4 (ROMP06 & 08)
OFCIP6.160,Phase 4 - OFCI Deliver USB [AWS Contract Date 8/09/2027],0,0,,2027-08-09,CMH139 > Pre-Construction > Procurement > OFCI > Phase 4 (ROMP06 & 08)
OFCIP6.150,Phase 4 - OFCI Deliver LV Panels [AWS Contract Date 8/09/2027],0,0,,2027-08-09,CMH139 > Pre-Construction > Procurement > OFCI > Phase 4 (ROMP06 & 08)
OFCIP6.200,Phase 4 - OFCI Deliver Generators [AWS Contract Date 8/09/2027],0,0,,2027-08-09,CMH139 > Pre-Construction > Procurement > OFCI > Phase 4 (ROMP06 & 08)
OFCIP6.120,Phase 4 - OFCI Deliver TAHUs [AWS Contract Date 8/09/2027],0,0,,2027-08-09,CMH139 > Pre-Construction > Procurement > OFCI > Phase 4 (ROMP06 & 08)
OFCIP6.100,Phase 4 - OFCI Deliver Racking [AWS Contract Date 8/09/2027],0,0,,2027-08-09,CMH139 > Pre-Construction > Procurement > OFCI > Phase 4 (ROMP06 & 08)
OFCIP6.110,Phase 4 - OFCI Deliver AMCOP & BACOP [AWS Contract Date 8/09/2027],0,0,,2027-08-09,CMH139 > Pre-Construction > Procurement > OFCI > Phase 4 (ROMP06 & 08)
OFCIP6.500,Phase 5 - OFCI Deliver Transformers [AWS Contract Date 9/06/2027],0,0,,2027-04-12,CMH139 > Pre-Construction > Procurement > OFCI > Phase 5 (ROMP09 & 11)
OFCIP6.440,Phase 5 - OFCI Deliver PDCs & PDC Whips [AWS Contract Date 9/06/2027],0,0,,2027-09-07,CMH139 > Pre-Construction > Procurement > OFCI > Phase 5 (ROMP09 & 11)
OFCIP6.450,Phase 5 - OFCI Deliver UPS [AWS Contract Date 9/06/2027],0,0,,2027-09-07,CMH139 > Pre-Construction > Procurement > OFCI > Phase 5 (ROMP09 & 11)
OFCIP6.460,Phase 5 - OFCI Deliver Bus Duct [AWS Contract Date 9/06/2027],0,0,,2027-09-07,CMH139 > Pre-Construction > Procurement > OFCI > Phase 5 (ROMP09 & 11)
OFCIP6.480,Phase 5 - OFCI Deliver USB [AWS Contract Date 9/06/2027],0,0,,2027-09-07,CMH139 > Pre-Construction > Procurement > OFCI > Phase 5 (ROMP09 & 11)
OFCIP6.490,Phase 5 - OFCI Deliver LV Panels [AWS Contract Date 9/06/2027],0,0,,2027-09-07,CMH139 > Pre-Construction > Procurement > OFCI > Phase 5 (ROMP09 & 11)
OFCIP6.510,Phase 5 - OFCI Deliver Generators [AWS Contract Date 9/06/2027],0,0,,2027-09-07,CMH139 > Pre-Construction > Procurement > OFCI > Phase 5 (ROMP09 & 11)
OFCIP9.120,Phase 5 - OFCI Deliver TAHUs [AWS Contract Date 9/06/2027],0,0,,2027-09-07,CMH139 > Pre-Construction > Procurement > OFCI > Phase 5 (ROMP09 & 11)
OFCIP6.530,Phase 5 - OFCI Deliver Racking [AWS Contract Date 9/06/2027],0,0,,2027-09-07,CMH139 > Pre-Construction > Procurement > OFCI > Phase 5 (ROMP09 & 11)
OFCIP6.540,Phase 5 - OFCI Deliver AMCOP & BACOP [AWS Contract Date 9/06/2027],0,0,,2027-09-07,CMH139 > Pre-Construction > Procurement > OFCI > Phase 5 (ROMP09 & 11)
OFCIP6.610,Phase 6 - OFCI Deliver Transformers [AWS Contract Date 10/11/2027],0,0,,2027-04-12,CMH139 > Pre-Construction > Procurement > OFCI > Phase 6 (ROMP10 & 12)
OFCIP6.550,Phase 6 - OFCI Deliver PDCs & PDC Whips [AWS Contract Date 10/11/2027],0,0,,2027-10-11,CMH139 > Pre-Construction > Procurement > OFCI > Phase 6 (ROMP10 & 12)
OFCIP6.560,Phase 6 - OFCI Deliver UPS [AWS Contract Date 10/11/2027],0,0,,2027-10-11,CMH139 > Pre-Construction > Procurement > OFCI > Phase 6 (ROMP10 & 12)
OFCIP6.570,Phase 6 - OFCI Deliver Bus Duct [AWS Contract Date 10/11/2027],0,0,,2027-10-11,CMH139 > Pre-Construction > Procurement > OFCI > Phase 6 (ROMP10 & 12)
OFCIP6.590,Phase 6 - OFCI Deliver USB [AWS Contract Date 10/11/2027],0,0,,2027-10-11,CMH139 > Pre-Construction > Procurement > OFCI > Phase 6 (ROMP10 & 12)
OFCIP6.600,Phase 6 - OFCI Deliver LV Panels [AWS Contract Date 10/11/2027],0,0,,2027-10-11,CMH139 > Pre-Construction > Procurement > OFCI > Phase 6 (ROMP10 & 12)
OFCIP6.620,Phase 6 - OFCI Deliver Generators [AWS Contract Date 10/11/2027],0,0,,2027-10-11,CMH139 > Pre-Construction > Procurement > OFCI > Phase 6 (ROMP10 & 12)
OFCIP10.120,Phase 6 - OFCI Deliver TAHUs [AWS Contract Date 10/11/2027],0,0,,2027-10-11,CMH139 > Pre-Construction > Procurement > OFCI > Phase 6 (ROMP10 & 12)
OFCIP6.640,Phase 6 - OFCI Deliver Racking [AWS Contract Date 10/11/2027],0,0,,2027-10-11,CMH139 > Pre-Construction > Procurement > OFCI > Phase 6 (ROMP10 & 12)
OFCIP6.650,Phase 6 - OFCI Deliver AMCOP & BACOP [AWS Contract Date 10/11/2027],0,0,,2027-10-11,CMH139 > Pre-Construction > Procurement > OFCI > Phase 6 (ROMP10 & 12)
P1LLE160,Phase 1 LLE - VRF Delivery,20,20,2026-10-19,2026-11-13,CMH139 > Pre-Construction > Procurement > Long Lead Equipment > Phase 1 (ROMP01 & 03)
P1LLE150,Phase 1 LLE - Doors & Hardware,60,60,2026-10-19,2027-01-14,CMH139 > Pre-Construction > Procurement > Long Lead Equipment > Phase 1 (ROMP01 & 03)
P1LLE170,Phase 1 LLE - Hot Aisle Containment (Polycarbonate Panels),50,50,2026-10-19,2026-12-30,CMH139 > Pre-Construction > Procurement > Long Lead Equipment > Phase 1 (ROMP01 & 03)
P1LLE130,Phase 1 LLE - Pressure Relief Dampers,45,45,2026-10-19,2026-12-22,CMH139 > Pre-Construction > Procurement > Long Lead Equipment > Phase 1 (ROMP01 & 03)
P1LLE120,Phase 1 LLE - Cable Bus/Tray/Basket/Wire,30,30,2026-10-19,2026-12-01,CMH139 > Pre-Construction > Procurement > Long Lead Equipment > Phase 1 (ROMP01 & 03)
P1LLE110,Phase 1 LLE - Fab & Deliver CFCI IW Tanks,60,60,2026-10-19,2027-01-14,CMH139 > Pre-Construction > Procurement > Long Lead Equipment > Phase 1 (ROMP01 & 03)
P1LLE100,Phase 1 LLE - MV Cable,160,160,2026-10-19,2027-06-04,CMH139 > Pre-Construction > Procurement > Long Lead Equipment > Phase 1 (ROMP01 & 03)
P1LLE140,Phase 1 LLE - CRAC Units,230,230,2026-10-19,2027-09-14,CMH139 > Pre-Construction > Procurement > Long Lead Equipment > Phase 1 (ROMP01 & 03)
P1LLE180,Phase 1 LLE - Generator Platforms,20,20,2027-07-09,2027-08-05,CMH139 > Pre-Construction > Procurement > Long Lead Equipment > Phase 1 (ROMP01 & 03)
P2LLE140,Phase 2 LLE - Doors & Hardware,10,10,2026-10-19,2026-10-30,CMH139 > Pre-Construction > Procurement > Long Lead Equipment > Phase 2 (ROMP02 & 04)
P2LLE150,Phase 2 LLE - Hot Aisle Containment (Polycarbonate Panels),10,10,2026-10-19,2026-10-30,CMH139 > Pre-Construction > Procurement > Long Lead Equipment > Phase 2 (ROMP02 & 04)
P2LLE130,Phase 2 LLE - Pressure Relief Dampers,10,10,2026-10-19,2026-10-30,CMH139 > Pre-Construction > Procurement > Long Lead Equipment > Phase 2 (ROMP02 & 04)
P2LLE100,Phase 2 LLE - Cable Bus/Tray/Basket/Wire,10,10,2026-10-19,2026-10-30,CMH139 > Pre-Construction > Procurement > Long Lead Equipment > Phase 2 (ROMP02 & 04)
P2LLE160,Phase 2 LLE - CRAC Units,230,230,2026-10-19,2027-09-14,CMH139 > Pre-Construction > Procurement > Long Lead Equipment > Phase 2 (ROMP02 & 04)
P2LLE120,Phase 2 LLE - Generator Platforms,20,20,2027-07-12,2027-08-06,CMH139 > Pre-Construction > Procurement > Long Lead Equipment > Phase 2 (ROMP02 & 04)
P3LLE130,Phase 3 LLE - Doors & Hardware,10,10,2026-10-19,2026-10-30,CMH139 > Pre-Construction > Procurement > Long Lead Equipment > Phase 3 (ROMP05 & 07)
P3LLE150,Phase 3 LLE - Hot Aisle Containment (Polycarbonate Panels),10,10,2026-10-19,2026-10-30,CMH139 > Pre-Construction > Procurement > Long Lead Equipment > Phase 3 (ROMP05 & 07)
P3LLE140,Phase 3 LLE - Pressure Relief Dampers,10,10,2026-10-19,2026-10-30,CMH139 > Pre-Construction > Procurement > Long Lead Equipment > Phase 3 (ROMP05 & 07)
P3LLE100,Phase 3 LLE - Cable Bus/Tray/Basket/Wire,10,10,2026-10-19,2026-10-30,CMH139 > Pre-Construction > Procurement > Long Lead Equipment > Phase 3 (ROMP05 & 07)
P3LLE160,Phase 3 LLE - CRAC Units,230,230,2026-10-19,2027-09-14,CMH139 > Pre-Construction > Procurement > Long Lead Equipment > Phase 3 (ROMP05 & 07)
P3LLE110,Phase 3 LLE - Generator Platforms,20,20,2027-07-19,2027-08-13,CMH139 > Pre-Construction > Procurement > Long Lead Equipment > Phase 3 (ROMP05 & 07)
P4LLE120,Phase 4 LLE - Doors & Hardware,10,10,2026-10-19,2026-10-30,CMH139 > Pre-Construction > Procurement > Long Lead Equipment > Phase 4 (ROMP06 & 08)
P4LLE140,Phase 4 LLE - Hot Aisle Containment (Polycarbonate Panels),10,10,2026-10-19,2026-10-30,CMH139 > Pre-Construction > Procurement > Long Lead Equipment > Phase 4 (ROMP06 & 08)
P4LLE130,Phase 4 LLE - Pressure Relief Dampers,10,10,2026-10-19,2026-10-30,CMH139 > Pre-Construction > Procurement > Long Lead Equipment > Phase 4 (ROMP06 & 08)
P4LLE110,Phase 4 LLE - Cable Bus/Tray/Basket/Wire,10,10,2026-10-19,2026-10-30,CMH139 > Pre-Construction > Procurement > Long Lead Equipment > Phase 4 (ROMP06 & 08)
P4LLE150,Phase 4 LLE - CRAC Units,230,230,2026-10-19,2027-09-14,CMH139 > Pre-Construction > Procurement > Long Lead Equipment > Phase 4 (ROMP06 & 08)
P4LLE160,Phase 4 LLE - Generator Platforms,20,20,2027-08-12,2027-09-09,CMH139 > Pre-Construction > Procurement > Long Lead Equipment > Phase 4 (ROMP06 & 08)
P5LLE120,Phase 5 LLE - Doors & Hardware,10,10,2026-10-19,2026-10-30,CMH139 > Pre-Construction > Procurement > Long Lead Equipment > Phase 5 (ROMP09 & 11)
P5LLE140,Phase 5 LLE - Hot Aisle Containment (Polycarbonate Panels),10,10,2026-10-19,2026-10-30,CMH139 > Pre-Construction > Procurement > Long Lead Equipment > Phase 5 (ROMP09 & 11)
P5LLE130,Phase 5 LLE - Pressure Relief Dampers,10,10,2026-10-19,2026-10-30,CMH139 > Pre-Construction > Procurement > Long Lead Equipment > Phase 5 (ROMP09 & 11)
P5LLE100,Phase 5 LLE - Cable Bus/Tray/Basket/Wire,10,10,2026-10-19,2026-10-30,CMH139 > Pre-Construction > Procurement > Long Lead Equipment > Phase 5 (ROMP09 & 11)
P5LLE150,Phase 5 LLE - CRAC Units,230,230,2026-10-19,2027-09-14,CMH139 > Pre-Construction > Procurement > Long Lead Equipment > Phase 5 (ROMP09 & 11)
P5LLE170,Phase 5 LLE - Generator Platforms,20,20,2027-09-09,2027-10-06,CMH139 > Pre-Construction > Procurement > Long Lead Equipment > Phase 5 (ROMP09 & 11)
P6LLE120,Phase 6 LLE - Doors & Hardware,10,10,2026-10-19,2026-10-30,CMH139 > Pre-Construction > Procurement > Long Lead Equipment > Phase 6 (ROMP10 & 12)
P6LLE140,Phase 6 LLE - Hot Aisle Containment (Polycarbonate Panels),10,10,2026-10-19,2026-10-30,CMH139 > Pre-Construction > Procurement > Long Lead Equipment > Phase 6 (ROMP10 & 12)
P6LLE130,Phase 6 LLE - Pressure Relief Dampers,10,10,2026-10-19,2026-10-30,CMH139 > Pre-Construction > Procurement > Long Lead Equipment > Phase 6 (ROMP10 & 12)
P6LLE100,Phase 6 LLE - Cable Bus/Tray/Basket/Wire,10,10,2026-10-19,2026-10-30,CMH139 > Pre-Construction > Procurement > Long Lead Equipment > Phase 6 (ROMP10 & 12)
P6LLE150,Phase 6 LLE - CRAC Units,230,230,2026-10-19,2027-09-14,CMH139 > Pre-Construction > Procurement > Long Lead Equipment > Phase 6 (ROMP10 & 12)
P6LLE180,Phase 6 LLE - Generator Platforms,20,20,2027-10-14,2027-11-10,CMH139 > Pre-Construction > Procurement > Long Lead Equipment > Phase 6 (ROMP10 & 12)
SI.1000,Site - Mobilization,1,0,2026-07-27,2026-07-27,CMH139 > Construction > Site > Sitework
SI.1010,Site - Install Rammed Aggregate Piers,20,0,2026-07-29,2026-08-05,CMH139 > Construction > Site > Sitework
SI.1470,Site - DLB Conduits (FLORES),10,10,2026-11-16,2026-12-01,CMH139 > Construction > Site > Sitework
SI.3130,Site - Set Security Poles,5,5,2026-11-16,2026-11-20,CMH139 > Construction > Site > Sitework
SI.1390,Site - Connect SA & IWW to Vault,3,3,2027-01-05,2027-01-07,CMH139 > Construction > Site > Sitework
SI.1440,Site - Install IWW Meter / Pump,3,3,2027-01-08,2027-01-12,CMH139 > Construction > Site > Sitework
SI.1500,Site - Energize IWW / SA Commission,5,5,2027-01-13,2027-01-19,CMH139 > Construction > Site > Sitework
SI.1800,Site - Fine Grade & Stone Utility / Gen Yard,5,5,2027-01-15,2027-01-21,CMH139 > Construction > Site > Sitework
SI.1620,Site - Excavate Loading Dock,3,3,2027-04-26,2027-04-28,CMH139 > Construction > Site > Sitework
SI.1750,Site - South Storm Bldg Tie In,6,6,2027-04-28,2027-05-05,CMH139 > Construction > Site > Sitework
SI.1760,"Site - MV-A, MV-B Pad - Prep / Place / Cure",3,3,2027-04-30,2027-05-04,CMH139 > Construction > Site > Sitework
SI.1770,Site - North Storm Bldg Tie In,3,3,2027-04-30,2027-05-04,CMH139 > Construction > Site > Sitework
SI.1810,Site - Set MV-A & MV-B Switchgears,4,4,2027-05-05,2027-05-10,CMH139 > Construction > Site > Sitework
SI.1830,Site - Inspection of MV Gear,2,2,2027-05-12,2027-05-13,CMH139 > Construction > Site > Sitework
SI.1740,Site - Prep / Place / Cure East Screen Wall / Dumpster Foundations,3,3,2027-05-13,2027-05-17,CMH139 > Construction > Site > Sitework
SI.1820,Site - Pull MV Feeders - MV-A & MV-B,5,5,2027-06-07,2027-06-11,CMH139 > Construction > Site > Sitework
SI.1700,Site - Prep / Place / Cure Concrete Pavement (Loading Dock),7,7,2027-06-07,2027-06-15,CMH139 > Construction > Site > Sitework
SI.1840,Site - Power Solutions Terminate & Testing of MV Feeders,4,4,2027-06-14,2027-06-17,CMH139 > Construction > Site > Sitework
SI.1850,Site - Energize MV Switchgear,2,2,2027-06-18,2027-06-21,CMH139 > Construction > Site > Sitework
SI.1710,Site - Prep / Place / Cure Sidewalks,15,15,2027-06-29,2027-07-20,CMH139 > Construction > Site > Sitework
SI.1720,Site - Site Finalization,19,19,2027-07-21,2027-08-16,CMH139 > Construction > Site > Sitework
CN1720,Structure / Foundations - F/R/P Fdns Seq 1 - Blue Elevator Pits,5,1,2026-10-13,2026-10-19,CMH139 > Construction > Structure > Foundation
CN1730,Structure / Foundations - F/R/P Fdns Seq 2 - Red 14-1 Line,5,5,2026-10-19,2026-10-23,CMH139 > Construction > Structure > Foundation
CN1750,Structure / Foundations - F/R/P Fdns Seq 4 - Green,5,5,2026-10-26,2026-10-30,CMH139 > Construction > Structure > Foundation
CN1820,Structure / Foundations - Install Stem Wall (Red),10,10,2026-10-26,2026-11-06,CMH139 > Construction > Structure > Foundation
CN1760,Structure / Foundations - F/R/P Fdns Seq 5 - Light Blue,4,4,2026-11-02,2026-11-05,CMH139 > Construction > Structure > Foundation
CN1980,Structure / Foundations - Install Stem Wall (Green),10,10,2026-11-02,2026-11-13,CMH139 > Construction > Structure > Foundation
CN1780,Structure / Foundations - F/R/P Fdns Seq 7 - Yellow,7,7,2026-11-06,2026-11-16,CMH139 > Construction > Structure > Foundation
CN1770,Structure / Foundations - F/R/P Fdns Seq 6 - Gray,3,3,2026-11-17,2026-11-19,CMH139 > Construction > Structure > Foundation
CN1740,Structure / Foundations - F/R/P Fdns Seq 3 - Screen Wall Foundations & Piers (G.1 Line - 3-20.1),10,10,2026-12-31,2027-01-14,CMH139 > Construction > Structure > Foundation
CN1810,Structure / Foundations - F/R/P Fdns Seq 9 - MV Pads,4,4,2026-12-31,2027-01-06,CMH139 > Construction > Structure > Foundation
SH.1620,Structure / Foundations - SOG Prep / Pour 1 (CL 1-4),5,5,2027-01-05,2027-01-11,CMH139 > Construction > Structure > Foundation
SH.1670,Structure / Foundations - SOG Prep / Pour 2 (CL 4-7),5,5,2027-01-08,2027-01-14,CMH139 > Construction > Structure > Foundation
SH.1720,Structure / Foundations - SOG Prep / Pour 3 (CL 7-12),6,6,2027-01-13,2027-01-20,CMH139 > Construction > Structure > Foundation
SH.1750,Structure / Foundations - SOG Prep / Pour 4 (CL 12-16),6,6,2027-01-26,2027-02-02,CMH139 > Construction > Structure > Foundation
SH.2500,Structure / Foundations - SOG Prep / Pour 5 (16-21),6,6,2027-01-29,2027-02-05,CMH139 > Construction > Structure > Foundation
SH.2510,Structure / Foundations - L2 Mezz SOMD Prep / Pour 1 (CL 3-10),3,3,2027-03-26,2027-03-30,CMH139 > Construction > Structure > Foundation
SH.2841,Structure / Foundations - L2 SOMD Prep / Pour 1 (CL 1-3),4,4,2027-03-31,2027-04-05,CMH139 > Construction > Structure > Foundation
SH.2851,Structure / Foundations - L2 SOMD Prep / Pour 2 (CL 3-5),4,4,2027-04-05,2027-04-08,CMH139 > Construction > Structure > Foundation
SH.2861,Structure / Foundations - L2 SOMD Prep / Pour 3 (CL 5-7),4,4,2027-04-08,2027-04-13,CMH139 > Construction > Structure > Foundation
SH.2871,Structure / Foundations - L2 SOMD Prep / Pour 4 (CL 7-10),4,4,2027-04-13,2027-04-16,CMH139 > Construction > Structure > Foundation
SH.2921,Structure / Foundations - L1 Mezz SOMD Prep / Pour 1 (CL 1-3),3,3,2027-04-16,2027-04-20,CMH139 > Construction > Structure > Foundation
SH.2931,Structure / Foundations - L1 Mezz SOMD Prep / Pour 2 (CL 3-10),3,3,2027-04-20,2027-04-22,CMH139 > Construction > Structure > Foundation
SH.2831,Structure / Foundations - L2 Mezz SOMD Prep / Pour 2 (CL 10-21),3,3,2027-04-22,2027-04-26,CMH139 > Construction > Structure > Foundation
SH.2881,Structure / Foundations - L2 SOMD Prep / Pour 5 (CL 10-14),4,4,2027-04-26,2027-04-29,CMH139 > Construction > Structure > Foundation
SH.2891,Structure / Foundations - L2 SOMD Prep / Pour 6 (CL 14-17),4,4,2027-04-29,2027-05-04,CMH139 > Construction > Structure > Foundation
SH.2901,Structure / Foundations - L2 SOMD Prep / Pour 7 (CL 17-20),4,4,2027-05-04,2027-05-07,CMH139 > Construction > Structure > Foundation
CN1840,Structure / Foundations - F/R/P Fdns Seq 12 - IW Tank Foundation,4,4,2027-05-07,2027-05-12,CMH139 > Construction > Structure > Foundation
SH.2941,Structure / Foundations - L1 Mezz SOMD Prep / Pour 3,3,3,2027-05-07,2027-05-11,CMH139 > Construction > Structure > Foundation
CN1850,Structure / Foundations - F/R/P Fdns Seq 13 - Fuel Tank Pads,4,4,2027-05-13,2027-05-18,CMH139 > Construction > Structure > Foundation
CN1830,Structure / Foundations - F/R/P Fdns Seq 11 - Loading Dock Foundation / Walls,9,9,2027-06-16,2027-06-28,CMH139 > Construction > Structure > Foundation
CN1860,Structure / Foundations - F/R/P Fdns Seq 14 - T-Steel Foundations,22,22,2027-07-09,2027-08-09,CMH139 > Construction > Structure > Foundation
CN15870,Structure / UG - Install Soil Improvements,8,0,2026-07-27,2026-08-05,CMH139 > Construction > Structure > Underground
CN3000,Structure / UG - Install Domestic Water & Fire Suppression Piping,10,10,2026-11-16,2026-12-01,CMH139 > Construction > Structure > Underground
SH.1460,Structure / UG - Install U/G Fiber,10,10,2026-11-16,2026-12-01,CMH139 > Construction > Structure > Underground
CN1390,Structure / UG - Install U/G Sanitary Piping,5,5,2026-11-24,2026-12-02,CMH139 > Construction > Structure > Underground
SH.1470,Structure / UG - Install U/G Security Conduits,5,5,2026-12-02,2026-12-08,CMH139 > Construction > Structure > Underground
SH.1500,Structure / UG - Install U/G Electrical,5,5,2026-12-02,2026-12-08,CMH139 > Construction > Structure > Underground
CN6610,Structure / UG - Install U/G Plumbing (Line 1 - 10),20,20,2026-12-04,2027-01-04,CMH139 > Construction > Structure > Underground
SH.1280,Structure / UG - Underslab Power (MV),4,4,2027-01-05,2027-01-08,CMH139 > Construction > Structure > Underground
CN6620,Structure / UG - Install U/G Plumbing (Line 10 - 22),15,15,2027-01-05,2027-01-25,CMH139 > Construction > Structure > Underground
SH.1310,Structure / UG - Underslab Controls,5,5,2027-01-07,2027-01-13,CMH139 > Construction > Structure > Underground
SH.1400,Structure / UG - Underslab Grounding - Pour 1,2,2,2027-01-11,2027-01-12,CMH139 > Construction > Structure > Underground
SH.2590,Structure / UG - Underslab Grounding - Pours 2 to 6,9,9,2027-01-14,2027-01-26,CMH139 > Construction > Structure > Underground
SH.1150,Structural Steel - Erect Steel Frame & Joists Seq 1 (CL 1-3),11,11,2027-01-25,2027-02-05,CMH139 > Construction > Structure > Structural Steel > Erection
SH.1200,Structural Steel - Erect Steel Frame & Joists Seq 2 (CL 3-5),9,9,2027-02-01,2027-02-10,CMH139 > Construction > Structure > Structural Steel > Erection
SH.1250,Structural Steel - Erect Steel Frame & Joists Seq 3 (CL 5-7),9,9,2027-02-05,2027-02-15,CMH139 > Construction > Structure > Structural Steel > Erection
SH.1370,Structural Steel - Erect Steel Frame & Joists Seq 4 (CL 7-9),9,9,2027-02-10,2027-02-19,CMH139 > Construction > Structure > Structural Steel > Erection
SH.1430,Structural Steel - Erect Steel Frame & Joists Seq 5 (CL 9-11),8,8,2027-02-15,2027-02-23,CMH139 > Construction > Structure > Structural Steel > Erection
SH.1480,Structural Steel - Erect Steel Frame & Joists Seq 6 (CL 11-13),8,8,2027-02-19,2027-02-27,CMH139 > Construction > Structure > Structural Steel > Erection
SH.2310,Structural Steel - Erect Steel Frame & Joists Seq 7 (CL 13-16),8,8,2027-02-24,2027-03-04,CMH139 > Construction > Structure > Structural Steel > Erection
SH.1110,Structural Steel - Erect Steel Frame & Joists Seq 8 (CL 16-18),8,8,2027-03-01,2027-03-09,CMH139 > Construction > Structure > Structural Steel > Erection
SH.3361,Structural Steel - Erect Steel Frame & Joists Seq 9 (CL 18-20),8,8,2027-03-05,2027-03-13,CMH139 > Construction > Structure > Structural Steel > Erection
SH.1170,Structural Steel - Steel Detailing Seq 1 (CL 1-3),12,12,2027-02-01,2027-02-13,CMH139 > Construction > Structure > Structural Steel > Detailing
SH.2400,Structural Steel - Steel Detailing Seq 2 (CL 3-5),9,9,2027-02-05,2027-02-15,CMH139 > Construction > Structure > Structural Steel > Detailing
SH.2430,Structural Steel - Steel Detailing Seq 3 (CL 5-7),11,11,2027-02-10,2027-02-22,CMH139 > Construction > Structure > Structural Steel > Detailing
SH.2410,Structural Steel - Steel Detailing Seq 4 (CL 7-9),11,11,2027-02-15,2027-02-26,CMH139 > Construction > Structure > Structural Steel > Detailing
SH.2420,Structural Steel - Steel Detailing Seq 5 (CL 9-11),10,10,2027-02-19,2027-03-02,CMH139 > Construction > Structure > Structural Steel > Detailing
SH.2440,Structural Steel - Steel Detailing Seq 6 (CL 11-13),10,10,2027-02-24,2027-03-06,CMH139 > Construction > Structure > Structural Steel > Detailing
SH.2390,Structural Steel - Steel Detailing Seq 7 (CL 13-16),10,10,2027-03-01,2027-03-11,CMH139 > Construction > Structure > Structural Steel > Detailing
SH.2450,Structural Steel - Steel Detailing Seq 8 (CL 16-18),10,10,2027-03-05,2027-03-16,CMH139 > Construction > Structure > Structural Steel > Detailing
SH.3371,Structural Steel - Steel Detailing Seq 9 (CL 18-20),10,10,2027-03-10,2027-03-20,CMH139 > Construction > Structure > Structural Steel > Detailing
SH.1290,Structural Steel - Steel Decking & Studs Seq 1 (CL 1-3),16,16,2027-02-15,2027-03-04,CMH139 > Construction > Structure > Structural Steel > Decking
SH.1350,Structural Steel - Steel Decking & Studs Seq 2 (CL 3-5),16,16,2027-02-19,2027-03-09,CMH139 > Construction > Structure > Structural Steel > Decking
SH.1520,Structural Steel - Steel Decking & Studs Seq 3 (CL 5-7),16,16,2027-02-24,2027-03-13,CMH139 > Construction > Structure > Structural Steel > Decking
SH.1420,Structural Steel - Steel Decking & Studs Seq 4 (CL 7-9),16,16,2027-03-01,2027-03-18,CMH139 > Construction > Structure > Structural Steel > Decking
SH.1550,Structural Steel - Steel Decking & Studs Seq 5 (CL 9-11),16,16,2027-03-05,2027-03-23,CMH139 > Construction > Structure > Structural Steel > Decking
SH.1570,Structural Steel - Steel Decking & Studs Seq 6 (CL 11-13),16,16,2027-03-08,2027-03-25,CMH139 > Construction > Structure > Structural Steel > Decking
SH.1190,Structural Steel - Steel Decking & Studs Seq 7 (CL 13-16),16,16,2027-03-12,2027-03-30,CMH139 > Construction > Structure > Structural Steel > Decking
SH.2340,Structural Steel - Steel Decking & Studs Seq 8 (CL 16-18),16,16,2027-03-17,2027-04-03,CMH139 > Construction > Structure > Structural Steel > Decking
SH.3381,Structural Steel - Steel Decking & Studs Seq 9 (CL 18-20),16,16,2027-03-22,2027-04-08,CMH139 > Construction > Structure > Structural Steel > Decking
SH.3131,Structural Steel - Decking Sign-Off (Intermediate EOR),1,1,2027-03-25,2027-03-25,CMH139 > Construction > Structure > Structural Steel > Decking
SH.3141,Structural Steel - Decking Sign-Off (Full),1,1,2027-04-08,2027-04-08,CMH139 > Construction > Structure > Structural Steel > Decking
SH.2680,Structure / Penthouse - Deck & Detail,3,3,2027-03-05,2027-03-09,CMH139 > Construction > Structure > Penthouse
SH.1740,Structure / Penthouse - Penthouse Roofing,5,5,2027-03-10,2027-03-16,CMH139 > Construction > Structure > Penthouse
SH.1650,Structure / Penthouse - Metal Studs & Sheathing at Penthouse,7,7,2027-03-26,2027-04-05,CMH139 > Construction > Structure > Penthouse
SH.1700,Structure / Penthouse - Penthouse Siding,5,5,2027-04-06,2027-04-12,CMH139 > Construction > Structure > Penthouse
SH.1680,Structure / Stair Tower - Steel Stair #2,7,7,2027-04-06,2027-04-14,CMH139 > Construction > Structure > Stair Towers
SH.1830,Structure / Stair Tower - Steel Stair #1,5,5,2027-04-15,2027-04-21,CMH139 > Construction > Structure > Stair Towers
SH.1990,Structure / Stair Tower - Steel Stair #4,5,5,2027-04-15,2027-04-21,CMH139 > Construction > Structure > Stair Towers
SH.2240,Structure / Stair Tower - Frame & Hang Drywall in Stair Tower #2,4,4,2027-04-15,2027-04-20,CMH139 > Construction > Structure > Stair Towers
SH.1930,Structure / Stair Tower - Steel Stair #3,5,5,2027-04-22,2027-04-28,CMH139 > Construction > Structure > Stair Towers
SH.2220,Structure / Stair Tower - Frame & Hang Drywall in Stair Tower #1,4,4,2027-04-22,2027-04-27,CMH139 > Construction > Structure > Stair Towers
SH.2250,Structure / Stair Tower - Frame & Hang Drywall in Stair Tower #3,4,4,2027-04-29,2027-05-04,CMH139 > Construction > Structure > Stair Towers
SH.2260,Structure / Stair Tower - Frame & Hang Drywall in Stair Tower #4,4,4,2027-05-05,2027-05-10,CMH139 > Construction > Structure > Stair Towers
SH.2270,Structure / Stair Tower - Frame & Hang Drywall in Stair Tower #5,4,4,2027-05-11,2027-05-14,CMH139 > Construction > Structure > Stair Towers
SH.2020,Structure / Stair Tower - Steel Stair #5,5,5,2027-05-17,2027-05-21,CMH139 > Construction > Structure > Stair Towers
SH.2280,Structure / Stair Tower - Frame out & Hang Drywall in Stair Tower #6,4,4,2027-05-17,2027-05-20,CMH139 > Construction > Structure > Stair Towers
SH.2230,Structure / Stair Tower - Frame & Hang Drywall in Stair Tower #7,4,4,2027-05-21,2027-05-26,CMH139 > Construction > Structure > Stair Towers
SH.2060,Structure / Stair Tower - Steel Stair #6,5,5,2027-05-24,2027-05-28,CMH139 > Construction > Structure > Stair Towers
SH.2801,Structure / Stair Tower - Frame & Hang Drywall in Stair Tower #8,4,4,2027-05-27,2027-06-02,CMH139 > Construction > Structure > Stair Towers
SH.2811,Structure / Stair Tower - Frame & Hang Drywall in Stair Tower #9,4,4,2027-05-27,2027-06-02,CMH139 > Construction > Structure > Stair Towers
SH.2140,Structure / Stair Tower - Steel Stair #7,5,5,2027-06-01,2027-06-07,CMH139 > Construction > Structure > Stair Towers
SH.2150,Structure / Stair Tower - Steel Stair #8,5,5,2027-06-08,2027-06-14,CMH139 > Construction > Structure > Stair Towers
SH.2821,Structure / Stair Tower - Steel Stair #9,5,5,2027-06-15,2027-06-21,CMH139 > Construction > Structure > Stair Towers
SH.1300,Structure / Roof - Set Curbs & Cut Roof Opening For RTU / Admin,3,3,2027-03-15,2027-03-17,CMH139 > Construction > Structure > Roof
SH.1730,Structure / Roof - Roofing Field,20,20,2027-03-18,2027-04-14,CMH139 > Construction > Structure > Roof
SH.2741,Structure / Roof - Detailing,15,15,2027-05-14,2027-06-04,CMH139 > Construction > Structure > Roof
SH.2000,Structure / Roof - Scuppers & Downspouts,5,5,2027-05-28,2027-06-04,CMH139 > Construction > Structure > Roof
SH.2080,Structure / Roof - Install Roof Walkway Pads,10,10,2027-06-07,2027-06-18,CMH139 > Construction > Structure > Roof
SH.1610,Structure / Exterior - Underslab Dock Pits,5,5,2026-10-19,2026-10-23,CMH139 > Construction > Structure > Exterior
SH.1710,Structure / Exterior - Frame IMP Seq 1 (CL 4 - 9),10,10,2027-03-31,2027-04-13,CMH139 > Construction > Structure > Exterior
SH.1760,Structure / Exterior - Frame IMP Seq 2 (CL 9 - 15),10,10,2027-04-14,2027-04-27,CMH139 > Construction > Structure > Exterior
SH.1940,Structure / Exterior - Install IMP Seq 1 (CL 4 - 9),10,10,2027-04-14,2027-04-27,CMH139 > Construction > Structure > Exterior
SH.1590,Structure / Exterior - Install Precast Seq 1 (CL 3F to E),5,5,2027-04-23,2027-04-29,CMH139 > Construction > Structure > Exterior
SH.1910,Structure / Exterior - Frame IMP Seq 3 (CL 15 - 22),10,10,2027-04-28,2027-05-11,CMH139 > Construction > Structure > Exterior
SH.1950,Structure / Exterior - Install IMP Seq 2 (CL 9 - 15),10,10,2027-04-28,2027-05-11,CMH139 > Construction > Structure > Exterior
SH.1640,Structure / Exterior - Install Precast Seq 2 (CL E to 5A),5,5,2027-04-30,2027-05-06,CMH139 > Construction > Structure > Exterior
SH.1880,Structure / Exterior - External Caulking at Precast Seq 1,2,2,2027-04-30,2027-05-01,CMH139 > Construction > Structure > Exterior
SH.2771,Structure / Exterior - Install Exterior Personnel Doors Office & Phase 1,10,10,2027-04-30,2027-05-13,CMH139 > Construction > Structure > Exterior
SH.1890,Structure / Exterior - Internal Caulking at Precast Seq 1,3,3,2027-05-03,2027-05-05,CMH139 > Construction > Structure > Exterior
SH.1980,Structure / Exterior - Texture / Paint Seq 1-3,15,15,2027-05-03,2027-05-21,CMH139 > Construction > Structure > Exterior
SH.1690,Structure / Exterior - Install Precast Seq 3 (CL 5A to 20A),5,5,2027-05-07,2027-05-13,CMH139 > Construction > Structure > Exterior
SH.3241,Structure / Exterior - External Caulking at Precast Seq 2,2,2,2027-05-07,2027-05-08,CMH139 > Construction > Structure > Exterior
SH.3201,Structure / Exterior - Internal Caulking at Precast Seq 2,3,3,2027-05-10,2027-05-12,CMH139 > Construction > Structure > Exterior
SH.1960,Structure / Exterior - Install IMP Seq 3 (CL 15 - 22),10,10,2027-05-12,2027-05-25,CMH139 > Construction > Structure > Exterior
SH.2460,Structure / Exterior - Install Precast Seq 4 (CL 20A to 20F),5,5,2027-05-14,2027-05-20,CMH139 > Construction > Structure > Exterior
SH.3251,Structure / Exterior - External Caulking at Precast Seq 3,2,2,2027-05-14,2027-05-15,CMH139 > Construction > Structure > Exterior
SH.3211,Structure / Exterior - Internal Caulking at Precast Seq 3,3,3,2027-05-17,2027-05-19,CMH139 > Construction > Structure > Exterior
SH.1660,Structure / Exterior - Install Overhead Doors,5,5,2027-05-21,2027-05-27,CMH139 > Construction > Structure > Exterior
SH.3261,Structure / Exterior - External Caulking at Precast Seq 4,2,2,2027-05-21,2027-05-22,CMH139 > Construction > Structure > Exterior
SH.1891,Structure / Exterior - Internal Caulking at Precast Lines 4,3,3,2027-05-24,2027-05-26,CMH139 > Construction > Structure > Exterior
SH.3351,Structure / Exterior - Texture / Paint Seq 4-6,15,15,2027-05-24,2027-06-10,CMH139 > Construction > Structure > Exterior
SH.2070,Structure / Exterior - Parapet Wall Coping,8,8,2027-06-14,2027-06-23,CMH139 > Construction > Structure > Exterior
SH.2781,Structure / Exterior - Install Exterior Storefront & Door,8,8,2027-06-21,2027-06-30,CMH139 > Construction > Structure > Exterior
SH.1860,Structure / Exterior - Install Glazing,10,10,2027-06-21,2027-07-02,CMH139 > Construction > Structure > Exterior
SH.2110,Structure / Exterior - Lightning Protection,10,10,2027-06-28,2027-07-12,CMH139 > Construction > Structure > Exterior
SH.2480,Structure / Exterior - Install Dock Equipment,10,10,2027-06-29,2027-07-13,CMH139 > Construction > Structure > Exterior
SH.2580,Structure / Exterior - Install Louver Supplemental Steel CL 1-10,10,10,2027-05-14,2027-05-27,CMH139 > Construction > Structure > Exterior > North Louvers
SH.2600,Structure / Exterior - Louver Opening Waterproofing CL 1-10,10,10,2027-05-21,2027-06-04,CMH139 > Construction > Structure > Exterior > North Louvers
SH.2530,Structure / Exterior - Install Louvers North - 2nd Floor 1-10,10,10,2027-05-28,2027-06-11,CMH139 > Construction > Structure > Exterior > North Louvers
SH.3991,Structure / Exterior - Install Louver Supplemental Steel CL 11-20,10,10,2027-05-28,2027-06-11,CMH139 > Construction > Structure > Exterior > North Louvers
SH.4001,Structure / Exterior - Louver Opening Waterproofing CL 11-20,10,10,2027-06-07,2027-06-18,CMH139 > Construction > Structure > Exterior > North Louvers
SH.2520,Structure / Exterior - Install Louvers North - 1st Floor 1-10,10,10,2027-06-14,2027-06-25,CMH139 > Construction > Structure > Exterior > North Louvers
SH.1920,Structure / Exterior - Install Louvers North - 2nd Floor 10-19,10,10,2027-06-28,2027-07-12,CMH139 > Construction > Structure > Exterior > North Louvers
SH.2560,Structure / Exterior - Install Louvers North - 1st Floor 10-19,10,10,2027-07-13,2027-07-26,CMH139 > Construction > Structure > Exterior > North Louvers
SH.4011,Structure / Exterior - Install Backdraft Damper Supplemental Steel CL 1-10,10,10,2027-04-23,2027-05-06,CMH139 > Construction > Structure > Exterior > South Backdraft Dampers
SH.4031,Structure / Exterior - Install Backdraft Damper Supplemental Steel CL 11-20,10,10,2027-04-23,2027-05-06,CMH139 > Construction > Structure > Exterior > South Backdraft Dampers
SH.4021,Structure / Exterior - Backdraft Damper Opening Waterproofing CL 1-10,10,10,2027-04-30,2027-05-13,CMH139 > Construction > Structure > Exterior > South Backdraft Dampers
SH.4041,Structure / Exterior - Backdraft Damper Opening Waterproofing CL 11-20,10,10,2027-04-30,2027-05-13,CMH139 > Construction > Structure > Exterior > South Backdraft Dampers
SH.2550,Structure / Exterior - Install Backdraft Dampers South - 2nd Floor 1-10,5,5,2027-05-14,2027-05-20,CMH139 > Construction > Structure > Exterior > South Backdraft Dampers
SH.1800,Structure / Exterior - Install Backdraft Dampers South - 1st Floor 1-10,5,5,2027-05-21,2027-05-27,CMH139 > Construction > Structure > Exterior > South Backdraft Dampers
SH.2540,Structure / Exterior - Install Backdraft Dampers South - 2nd Floor 10-19,5,5,2027-05-28,2027-06-04,CMH139 > Construction > Structure > Exterior > South Backdraft Dampers
SH.2570,Structure / Exterior - Install Backdraft Dampers South - 1st Floor 10-19,5,5,2027-06-07,2027-06-11,CMH139 > Construction > Structure > Exterior > South Backdraft Dampers
SH.2650,Structure / Elevators - Steel Install 2nd Floor to Roof,7,7,2027-03-05,2027-03-15,CMH139 > Construction > Structure > Elevators
SH.2660,Structure / Elevators - Steel Install 2nd Floor to Penthouse,7,7,2027-03-10,2027-03-18,CMH139 > Construction > Structure > Elevators
SH.1140,Structure / Elevators - Set Elevator Equipment,5,5,2027-03-17,2027-03-23,CMH139 > Construction > Structure > Elevators
SH.1100,Structure / Elevators - Install Sump Pump Drain,2,2,2027-07-30,2027-08-02,CMH139 > Construction > Structure > Elevators
SH.1120,Structure / Elevators - Elevator Pit Light & Receptacle Install,2,2,2027-07-30,2027-08-02,CMH139 > Construction > Structure > Elevators
SH.2670,Elevators / Freight - Steel Install 1st Floor to 2nd Floor (Freight),7,7,2027-03-05,2027-03-15,CMH139 > Construction > Structure > Elevators > Freight
SH.2675,Elevators / Freight - Supplemental Elevator Steel (Freight),5,5,2027-03-16,2027-03-22,CMH139 > Construction > Structure > Elevators > Freight
SH.2690,Elevators / Freight - Frame & Hang Drywall (Freight),8,8,2027-04-15,2027-04-26,CMH139 > Construction > Structure > Elevators > Freight
SH.1900,"Elevators / Freight - Mobilize, Survey Hoistway & Hand Rigging",3,3,2027-05-10,2027-05-12,CMH139 > Construction > Structure > Elevators > Freight
SH.3711,Elevators / Freight - Install Machine Room Equipment,3,3,2027-05-13,2027-05-18,CMH139 > Construction > Structure > Elevators > Freight
SH.3721,Elevators / Freight - Install Starter Rails,3,3,2027-05-19,2027-05-24,CMH139 > Construction > Structure > Elevators > Freight
SH.1970,Elevators / Freight - Build Work Deck,2,2,2027-05-25,2027-05-26,CMH139 > Construction > Structure > Elevators > Freight
SH.2040,Elevators / Freight - Install Remaining Brackets & Rails,6,6,2027-05-27,2027-06-08,CMH139 > Construction > Structure > Elevators > Freight
SH.2050,Elevators / Freight - Install Jacks,3,3,2027-06-09,2027-06-14,CMH139 > Construction > Structure > Elevators > Freight
SH.2090,Elevators / Freight - Remove Workdeck,2,2,2027-06-15,2027-06-16,CMH139 > Construction > Structure > Elevators > Freight
SH.3731,Elevators / Freight - Install Oil Line,5,5,2027-06-17,2027-06-24,CMH139 > Construction > Structure > Elevators > Freight
SH.2120,Elevators / Freight - Build Car Sling,3,3,2027-06-28,2027-06-30,CMH139 > Construction > Structure > Elevators > Freight
SH.2130,Elevators / Freight - Install Platform,5,5,2027-07-01,2027-07-12,CMH139 > Construction > Structure > Elevators > Freight
SH.2160,Elevators / Freight - Build Cab,3,3,2027-07-13,2027-07-15,CMH139 > Construction > Structure > Elevators > Freight
SH.2720,Elevators / Freight - Intumescent Paint,4,4,2027-07-19,2027-07-22,CMH139 > Construction > Structure > Elevators > Freight
SH.3061,Elevators / Freight - Install Fire Alarm,1,1,2027-07-19,2027-07-19,CMH139 > Construction > Structure > Elevators > Freight
SH.2170,Elevators / Freight - Install Entrances,8,8,2027-07-19,2027-07-29,CMH139 > Construction > Structure > Elevators > Freight
SH.2700,Elevators / Freight - Install Fire Suppression,1,1,2027-07-20,2027-07-20,CMH139 > Construction > Structure > Elevators > Freight
SH.2290,Elevators / Freight - Install Doors,4,4,2027-08-02,2027-08-05,CMH139 > Construction > Structure > Elevators > Freight
SH.2190,Elevators / Freight - Install Raceway & Hoistway Wiring,2,2,2027-08-09,2027-08-10,CMH139 > Construction > Structure > Elevators > Freight
SH.2200,Elevators / Freight - Build Cab Fronts & Install Door Operators,3,3,2027-08-11,2027-08-16,CMH139 > Construction > Structure > Elevators > Freight
SH.2300,Elevators / Freight - Install Top of Car & COPs,3,3,2027-08-17,2027-08-19,CMH139 > Construction > Structure > Elevators > Freight
SH.2330,Elevators / Freight - Pull / Wire,2,2,2027-08-23,2027-08-24,CMH139 > Construction > Structure > Elevators > Freight
SH.2320,Elevators / Freight - Wire Controller & Car,2,2,2027-08-25,2027-08-26,CMH139 > Construction > Structure > Elevators > Freight
SH.2210,Elevators / Freight - Elevator Adjustments & Startup,12,12,2027-08-30,2027-09-20,CMH139 > Construction > Structure > Elevators > Freight
SH.2640,Elevators / Passenger - Steel Install 1st Floor to 2nd Floor (Passenger),7,7,2027-03-05,2027-03-15,CMH139 > Construction > Structure > Elevators > Passenger
SH.2645,Elevators / Passenger - Supplemental Elevator Steel (Passenger),7,7,2027-03-19,2027-03-29,CMH139 > Construction > Structure > Elevators > Passenger
SH.1810,Elevators / Passenger - Frame & Hang Drywall (Passenger),10,10,2027-04-15,2027-04-28,CMH139 > Construction > Structure > Elevators > Passenger
SH.2470,"Elevators / Passenger - Mobilize, Survey, & Hang Rigging",3,3,2027-06-28,2027-06-30,CMH139 > Construction > Structure > Elevators > Passenger
SH.3741,Elevators / Passenger - Install Machine Room Equipment,3,3,2027-07-01,2027-07-07,CMH139 > Construction > Structure > Elevators > Passenger
SH.3851,Elevators / Passenger - Install Starter Rails,3,3,2027-07-08,2027-07-13,CMH139 > Construction > Structure > Elevators > Passenger
SH.3841,Elevators / Passenger - Install False Car,2,2,2027-07-14,2027-07-15,CMH139 > Construction > Structure > Elevators > Passenger
SH.3751,Elevators / Passenger - Install Remaining Brackets & Rails,6,6,2027-07-19,2027-07-27,CMH139 > Construction > Structure > Elevators > Passenger
SH.3761,Elevators / Passenger - Build Jack Pedestals,2,2,2027-07-28,2027-07-29,CMH139 > Construction > Structure > Elevators > Passenger
SH.3861,"Elevators / Passenger - Install Jack, Sheaves, & Governor",5,5,2027-08-02,2027-08-09,CMH139 > Construction > Structure > Elevators > Passenger
SH.3771,Elevators / Passenger - Install Oil Line & Raceway,3,3,2027-08-10,2027-08-12,CMH139 > Construction > Structure > Elevators > Passenger
SH.3781,Elevators / Passenger - Build Car Sling,3,3,2027-08-16,2027-08-18,CMH139 > Construction > Structure > Elevators > Passenger
SH.3871,Elevators / Passenger - Install Platform / Cab Walls,3,3,2027-08-19,2027-08-24,CMH139 > Construction > Structure > Elevators > Passenger
SH.3791,Elevators / Passenger - Install Ropes,2,2,2027-08-25,2027-08-26,CMH139 > Construction > Structure > Elevators > Passenger
SH.3881,Elevators / Passenger - Remove False Car,1,1,2027-08-30,2027-08-30,CMH139 > Construction > Structure > Elevators > Passenger
SH.2761,Elevators / Passenger - Intumescent Paint,4,4,2027-08-31,2027-09-03,CMH139 > Construction > Structure > Elevators > Passenger
SH.3691,Elevators / Passenger - Install Fire Alarm,1,1,2027-08-31,2027-08-31,CMH139 > Construction > Structure > Elevators > Passenger
SH.3801,Elevators / Passenger - Install Entrances,9,9,2027-08-31,2027-09-15,CMH139 > Construction > Structure > Elevators > Passenger
SH.3701,Elevators / Passenger - Install Fire Suppression,1,1,2027-09-01,2027-09-01,CMH139 > Construction > Structure > Elevators > Passenger
SH.3811,Elevators / Passenger - Install Raceway & Hoistway Wiring,2,2,2027-09-16,2027-09-20,CMH139 > Construction > Structure > Elevators > Passenger
SH.3821,"Elevators / Passenger - Build Cab Fronts, Door Operators",3,3,2027-09-21,2027-09-23,CMH139 > Construction > Structure > Elevators > Passenger
SH.3891,Elevators / Passenger - Install Top / COPs,3,3,2027-09-27,2027-09-29,CMH139 > Construction > Structure > Elevators > Passenger
SH.3831,Elevators / Passenger - Pull Wire,2,2,2027-09-30,2027-10-04,CMH139 > Construction > Structure > Elevators > Passenger
SH.3901,Elevators / Passenger - Wire Controller & Car,2,2,2027-10-05,2027-10-06,CMH139 > Construction > Structure > Elevators > Passenger
SH.2791,Elevators / Passenger - Elevator Adjustments & Startup,12,12,2027-10-07,2027-10-27,CMH139 > Construction > Structure > Elevators > Passenger
CN1250,Structure / Gen Yard - Install Gen Yard U/G Electrical (MV Transformer),20,20,2026-12-02,2026-12-30,CMH139 > Construction > Structure > Gen Yard (Structure)
CN1020,Structure / Gen Yard - Install Downspout Drains,5,5,2027-01-15,2027-01-21,CMH139 > Construction > Structure > Gen Yard (Structure)
CN1800,Structure / Gen Yard - F/R/P Transformer Pads (Phases 1 & 2),14,14,2027-01-22,2027-02-10,CMH139 > Construction > Structure > Gen Yard (Structure)
CN10230,Structure / Gen Yard - F/R/P Transformer Pads (Phases 3 & 4),3,3,2027-02-11,2027-02-13,CMH139 > Construction > Structure > Gen Yard (Structure)
CN10240,Structure / Gen Yard - F/R/P Transformer Pads (Phases 5 & 6),3,3,2027-02-15,2027-02-17,CMH139 > Construction > Structure > Gen Yard (Structure)
CN1080,Structure / Gen Yard - Seq 4 - Set Screen Wall Steel (CL 3 - 10),15,15,2027-05-07,2027-05-27,CMH139 > Construction > Structure > Gen Yard (Structure)
CN1090,Structure / Gen Yard - Start Screen Wall Metal Panels (CL 3 - 10),15,15,2027-05-18,2027-06-08,CMH139 > Construction > Structure > Gen Yard (Structure)
CN1110,Structure / Gen Yard - Install OFCI Protection (Scaffolding) (CL 3 - 10),15,15,2027-05-28,2027-06-18,CMH139 > Construction > Structure > Gen Yard (Structure)
CN10170,Structure / Gen Yard - Seq 4 - Set Screen Wall Steel (CL 10 - 22),12,12,2027-05-28,2027-06-11,CMH139 > Construction > Structure > Gen Yard (Structure)
CN1070,Structure / Gen Yard - Install Stone Out To The Face Of T-Steel (CL 3 - 10),5,5,2027-06-07,2027-06-11,CMH139 > Construction > Structure > Gen Yard (Structure)
CN10180,Structure / Gen Yard - Seq 5 - Start Screen Wall Metal Panels (CL 10 - 22),15,15,2027-06-09,2027-06-25,CMH139 > Construction > Structure > Gen Yard (Structure)
CN10220,Structure / Gen Yard - Seq 7 - Install OFCI Protection (Scaffolding) (CL 10 - 22),15,15,2027-06-11,2027-06-28,CMH139 > Construction > Structure > Gen Yard (Structure)
CN15860,Structure / Gen Yard - Seq 3C - Install Stone Out To The Face Of T-Steel (CL 10 - 22),5,5,2027-06-12,2027-06-17,CMH139 > Construction > Structure > Gen Yard (Structure)
CN1120,Structure / Gen Yard - Seq 8 - F/R/P Gen Pads (Phases 1 & 2),8,8,2027-06-21,2027-06-30,CMH139 > Construction > Structure > Gen Yard (Structure)
CN1210,Structure / Gen Yard - Cure Time (Phase 1 & 2),7,7,2027-07-01,2027-07-07,CMH139 > Construction > Structure > Gen Yard (Structure)
CN10130,Structure / Gen Yard - Seq 8 - F/R/P Gen Pads (Phases 3 & 4),4,4,2027-07-01,2027-07-06,CMH139 > Construction > Structure > Gen Yard (Structure)
CN10140,Structure / Gen Yard - Seq 8 - F/R/P Gen Pads (Phases 5 & 6),2,2,2027-07-07,2027-07-08,CMH139 > Construction > Structure > Gen Yard (Structure)
CN10150,Structure / Gen Yard - Seq 8 - Cure Time (Phase 3 & 4),7,7,2027-07-07,2027-07-14,CMH139 > Construction > Structure > Gen Yard (Structure)
CN1130,Structure / Gen Yard - Install Security Pole Bases / Security Conduits,5,5,2027-07-09,2027-07-15,CMH139 > Construction > Structure > Gen Yard (Structure)
CN1160,Structure / Gen Yard - Install Gen Grounding,5,5,2027-07-09,2027-07-15,CMH139 > Construction > Structure > Gen Yard (Structure)
CN10160,Structure / Gen Yard - Seq 8 - Cure Time (Phase 5 & 6),7,7,2027-07-09,2027-07-16,CMH139 > Construction > Structure > Gen Yard (Structure)
CN1320,Structure / Gen Yard - Seq 4 - Set Trestle Steel (CL 3 - 10),5,5,2027-07-10,2027-07-15,CMH139 > Construction > Structure > Gen Yard (Structure)
CN1140,Structure / Gen Yard - Install Pipe Bollards,5,5,2027-07-13,2027-07-19,CMH139 > Construction > Structure > Gen Yard (Structure)
CN1150,Structure / Gen Yard - Install Security Fence Poles,5,5,2027-07-13,2027-07-19,CMH139 > Construction > Structure > Gen Yard (Structure)
CN1170,Structure / Gen Yard - Install Stone In Between Gen Pads,5,5,2027-07-16,2027-07-22,CMH139 > Construction > Structure > Gen Yard (Structure)
CN1180,Structure / Gen Yard - Verify Generators Setting,1,1,2027-08-10,2027-08-10,CMH139 > Construction > Structure > Gen Yard (Structure)
CN1190,Structure / Gen Yard - Form / Pour Remaining Sidewalk Near Curb,5,5,2027-08-11,2027-08-17,CMH139 > Construction > Structure > Gen Yard (Structure)
CN1200,Structure / Gen Yard - Set Remaining Gen Steel / Platforms,5,5,2027-08-13,2027-08-19,CMH139 > Construction > Structure > Gen Yard (Structure)
CN1220,Structure / Gen Yard - Install Remaining Stone,5,5,2027-08-18,2027-08-24,CMH139 > Construction > Structure > Gen Yard (Structure)
CN1230,Structure / Gen Yard - Install Fence Fabric / Gates / Hardware,5,5,2027-08-25,2027-08-31,CMH139 > Construction > Structure > Gen Yard (Structure)
CN3100,Structure / Gen Yard - Seq 4 - Set Trestle Steel (CL 10-22),5,5,2027-10-14,2027-10-19,CMH139 > Construction > Structure > Gen Yard (Structure)
SH.1820,Structure / Interior - Install IW Mains & Insulation Phase 1,15,15,2027-03-23,2027-04-12,CMH139 > Construction > Structure > Interior Buildout
SH.1630,Structure / Interior - Construction Power,15,15,2027-04-09,2027-04-29,CMH139 > Construction > Structure > Interior Buildout
SH.2951,Structure / Interior - Install IW Mains & Insulation Phase 2,15,15,2027-04-13,2027-05-03,CMH139 > Construction > Structure > Interior Buildout
SH.1870,Structure / Interior - IW Mains Testing Phase 1,1,1,2027-04-13,2027-04-13,CMH139 > Construction > Structure > Interior Buildout
SH.2961,Structure / Interior - Install IW Mains & Insulation Phase 3,15,15,2027-05-04,2027-05-24,CMH139 > Construction > Structure > Interior Buildout
SH.3001,Structure / Interior - IW Mains Testing Phase 2,1,1,2027-05-04,2027-05-04,CMH139 > Construction > Structure > Interior Buildout
SH.2971,Structure / Interior - Install IW Mains & Insulation Phase 4,15,15,2027-05-25,2027-06-15,CMH139 > Construction > Structure > Interior Buildout
SH.3011,Structure / Interior - IW Mains Testing Phase 3,1,1,2027-05-25,2027-05-25,CMH139 > Construction > Structure > Interior Buildout
SH.1850,Structure / Interior - Install Fire Alarm,15,15,2027-06-14,2027-07-02,CMH139 > Construction > Structure > Interior Buildout
SH.2981,Structure / Interior - Install IW Mains & Insulation Phase 5,10,10,2027-06-16,2027-06-29,CMH139 > Construction > Structure > Interior Buildout
SH.3021,Structure / Interior - IW Mains Testing Phase 4,1,1,2027-06-16,2027-06-16,CMH139 > Construction > Structure > Interior Buildout
SH.2991,Structure / Interior - Install IW Mains & Insulation Phase 6,10,10,2027-06-30,2027-07-14,CMH139 > Construction > Structure > Interior Buildout
SH.3031,Structure / Interior - IW Mains Testing Phase 5,1,1,2027-06-30,2027-06-30,CMH139 > Construction > Structure > Interior Buildout
SH.3041,Structure / Interior - IW Mains Testing Phase 6,1,1,2027-07-15,2027-07-15,CMH139 > Construction > Structure > Interior Buildout
SH.2010,Structure / Interior - Fire Riser Room,15,15,2027-08-04,2027-08-24,CMH139 > Construction > Structure > Interior Buildout
SH.2100,Structure / Interior - L1 Fire Sprinkler Testing,2,2,2027-09-01,2027-09-02,CMH139 > Construction > Structure > Interior Buildout
SH.2180,Structure / Interior - L2 Fire Sprinkler Testing,2,2,2027-09-03,2027-09-07,CMH139 > Construction > Structure > Interior Buildout
CN6490,Admin - Install Elevator Pit Sump Pumps,1,1,2027-08-03,2027-08-03,CMH139 > Construction > Main Building - Building D > Admin
OFF.1130,Admin - Set OFCI Panels,5,5,2027-08-04,2027-08-10,CMH139 > Construction > Main Building - Building D > Admin
OFF.1200,Admin - Toilet Room Accessories,5,5,2027-08-04,2027-08-10,CMH139 > Construction > Main Building - Building D > Admin
OFF.1990,Admin - Set Electrical LV Panelboards,5,5,2027-08-11,2027-08-17,CMH139 > Construction > Main Building - Building D > Admin
OFF.1140,Admin - House Electrical Room LV Terminations,5,5,2027-08-18,2027-08-24,CMH139 > Construction > Main Building - Building D > Admin
OFF.1270,Admin - Final Paint,5,5,2027-09-07,2027-09-13,CMH139 > Construction > Main Building - Building D > Admin
OFF.1260,Admin - Devices & Trim,5,5,2027-09-07,2027-09-13,CMH139 > Construction > Main Building - Building D > Admin
OFF.1950,Admin / Lvl 1 - Layout,2,2,2027-04-06,2027-04-07,CMH139 > Construction > Main Building - Building D > Admin > Admin - Level 1
CN6350,Admin / Lvl 1 - Framing & Door Frames (Blue),7,7,2027-04-08,2027-04-16,CMH139 > Construction > Main Building - Building D > Admin > Admin - Level 1
CN6470,Admin / Lvl 1 - Install Masonry Walls Conference OARB,10,10,2027-04-08,2027-04-21,CMH139 > Construction > Main Building - Building D > Admin > Admin - Level 1
CN1900,Admin / Lvl 1 - Install Drywall Seq 1 - Blue (Top 12'),10,10,2027-04-14,2027-04-24,CMH139 > Construction > Main Building - Building D > Admin > Admin - Level 1
CN6360,Admin / Lvl 1 - Framing & Door Frames (Red),7,7,2027-04-14,2027-04-22,CMH139 > Construction > Main Building - Building D > Admin > Admin - Level 1
CN6370,Admin / Lvl 1 - Framing & Door Frames (Green),7,7,2027-04-20,2027-04-28,CMH139 > Construction > Main Building - Building D > Admin > Admin - Level 1
CN6640,Admin / Lvl 1 - Install Beams & Decking For Masonry Walls,2,2,2027-04-22,2027-04-23,CMH139 > Construction > Main Building - Building D > Admin > Admin - Level 1
CN6380,Admin / Lvl 1 - Framing & Door Frames (Magenta),7,7,2027-04-26,2027-05-04,CMH139 > Construction > Main Building - Building D > Admin > Admin - Level 1
CN6390,Admin / Lvl 1 - Prime & Paint Drywall (Blue),5,5,2027-04-26,2027-04-30,CMH139 > Construction > Main Building - Building D > Admin > Admin - Level 1
CN6630,Admin / Lvl 1 - Prep & Pour Concrete Cap For Masonry Walls,2,2,2027-04-26,2027-04-27,CMH139 > Construction > Main Building - Building D > Admin > Admin - Level 1
CN1910,Admin / Lvl 1 - Install Drywall Seq 2 - Red (Top 12'),21,21,2027-04-28,2027-05-21,CMH139 > Construction > Main Building - Building D > Admin > Admin - Level 1
CN6430,Admin / Lvl 1 - In Wall Plumbing (Office),15,15,2027-04-29,2027-05-19,CMH139 > Construction > Main Building - Building D > Admin > Admin - Level 1
CN1920,Admin / Lvl 1 - Install Drywall Seq 3 - Green (Top 12'),15,15,2027-05-10,2027-05-26,CMH139 > Construction > Main Building - Building D > Admin > Admin - Level 1
CN6560,Admin / Lvl 1 - Install Fire Proofing,10,10,2027-05-17,2027-05-28,CMH139 > Construction > Main Building - Building D > Admin > Admin - Level 1
CN1930,Admin / Lvl 1 - Install Drywall Seq 4 - Magenta (Top 12'),10,10,2027-05-18,2027-05-28,CMH139 > Construction > Main Building - Building D > Admin > Admin - Level 1
CN1940,Admin / Lvl 1 - In Wall Electrical Rough In (Blue),5,5,2027-05-20,2027-05-26,CMH139 > Construction > Main Building - Building D > Admin > Admin - Level 1
CN6400,Admin / Lvl 1 - Install Fire Protection,10,10,2027-05-24,2027-06-07,CMH139 > Construction > Main Building - Building D > Admin > Admin - Level 1
CN6520,Admin / Lvl 1 - Prime & Paint Drywall (Red),5,5,2027-05-24,2027-05-28,CMH139 > Construction > Main Building - Building D > Admin > Admin - Level 1
CN1950,Admin / Lvl 1 - In Wall Electrical Rough In (Red),5,5,2027-05-24,2027-05-28,CMH139 > Construction > Main Building - Building D > Admin > Admin - Level 1
CN1960,Admin / Lvl 1 - In Wall Electrical Rough In (Green),5,5,2027-05-26,2027-06-02,CMH139 > Construction > Main Building - Building D > Admin > Admin - Level 1
OFF.1010,Admin / Lvl 1 - Fiber Closets Electrical & Fire Alarm Rough-In,3,3,2027-05-27,2027-06-01,CMH139 > Construction > Main Building - Building D > Admin > Admin - Level 1
CN6530,Admin / Lvl 1 - Prime & Paint Drywall (Green),5,5,2027-05-27,2027-06-03,CMH139 > Construction > Main Building - Building D > Admin > Admin - Level 1
CN6660,Admin / Lvl 1 - In Wall Electrical Inspection (Blue),5,5,2027-05-27,2027-06-03,CMH139 > Construction > Main Building - Building D > Admin > Admin - Level 1
OFF.1980,Admin / Lvl 1 - IW Supply,10,10,2027-06-01,2027-06-14,CMH139 > Construction > Main Building - Building D > Admin > Admin - Level 1
CN6540,Admin / Lvl 1 - Prime & Paint Drywall (Magenta),5,5,2027-06-01,2027-06-07,CMH139 > Construction > Main Building - Building D > Admin > Admin - Level 1
CN6710,Admin / Lvl 1 - In Wall Electrical Inspection (Red),5,5,2027-06-01,2027-06-07,CMH139 > Construction > Main Building - Building D > Admin > Admin - Level 1
CN6670,Admin / Lvl 1 - In Wall Electrical Inspection (Green),5,5,2027-06-03,2027-06-09,CMH139 > Construction > Main Building - Building D > Admin > Admin - Level 1
CN6310,Admin / Lvl 1 - Install Drywall Seq 1 - Blue (Remaining),10,10,2027-06-04,2027-06-15,CMH139 > Construction > Main Building - Building D > Admin > Admin - Level 1
CN6410,Admin / Lvl 1 - Install OH Electrical Rough In,15,15,2027-06-04,2027-06-24,CMH139 > Construction > Main Building - Building D > Admin > Admin - Level 1
CN6420,Admin / Lvl 1 - Install Duct Work,20,20,2027-06-04,2027-07-01,CMH139 > Construction > Main Building - Building D > Admin > Admin - Level 1
CN6450,Admin / Lvl 1 - Install Plumbing (Mechanical Room),15,15,2027-06-04,2027-06-24,CMH139 > Construction > Main Building - Building D > Admin > Admin - Level 1
CN6460,Admin / Lvl 1 - Install Split System & Refrigeration,20,20,2027-06-08,2027-07-06,CMH139 > Construction > Main Building - Building D > Admin > Admin - Level 1
CN15910,Admin / Lvl 1 - Install EUHs,10,10,2027-06-08,2027-06-21,CMH139 > Construction > Main Building - Building D > Admin > Admin - Level 1
CN15920,Admin / Lvl 1 - Install ERVs,3,3,2027-06-08,2027-06-10,CMH139 > Construction > Main Building - Building D > Admin > Admin - Level 1
CN6500,Admin / Lvl 1 - OH Plumbing (Office),15,15,2027-06-11,2027-07-01,CMH139 > Construction > Main Building - Building D > Admin > Admin - Level 1
CN1970,Admin / Lvl 1 - In Wall Electrical Rough In (Magenta),5,5,2027-06-11,2027-06-17,CMH139 > Construction > Main Building - Building D > Admin > Admin - Level 1
CN6320,Admin / Lvl 1 - Install Drywall Seq 2 - Red (Remaining),15,15,2027-06-16,2027-07-02,CMH139 > Construction > Main Building - Building D > Admin > Admin - Level 1
CN6440,Admin / Lvl 1 - Install VAVs,20,20,2027-06-18,2027-07-16,CMH139 > Construction > Main Building - Building D > Admin > Admin - Level 1
CN6650,Admin / Lvl 1 - In Wall Electrical Inspection (Magenta),5,5,2027-06-18,2027-06-24,CMH139 > Construction > Main Building - Building D > Admin > Admin - Level 1
CN6330,Admin / Lvl 1 - Install Drywall Seq 3 - Green (Remaining),15,15,2027-06-24,2027-07-12,CMH139 > Construction > Main Building - Building D > Admin > Admin - Level 1
CN6340,Admin / Lvl 1 - Install Drywall Seq 4 - Magenta (Remaining),10,10,2027-07-01,2027-07-13,CMH139 > Construction > Main Building - Building D > Admin > Admin - Level 1
OFF.1280,Admin / Lvl 1 - Office Doors & Hardware,5,5,2027-07-13,2027-07-19,CMH139 > Construction > Main Building - Building D > Admin > Admin - Level 1
OFF.1050,Admin / Lvl 1 - A/G Plumbing Rough In,15,15,2027-07-14,2027-08-03,CMH139 > Construction > Main Building - Building D > Admin > Admin - Level 1
CN6570,Admin / Lvl 1 - Mechanical Inspection,1,1,2027-07-19,2027-07-19,CMH139 > Construction > Main Building - Building D > Admin > Admin - Level 1
OFF.1180,Admin / Lvl 1 - Overhead Electrical Rough In,5,5,2027-07-28,2027-08-03,CMH139 > Construction > Main Building - Building D > Admin > Admin - Level 1
OFF.1330,Admin / Lvl 1 - Casework,3,3,2027-08-04,2027-08-06,CMH139 > Construction > Main Building - Building D > Admin > Admin - Level 1
OFF.1060,Admin / Lvl 1 - Fiber Closets Fire Protection Connections,1,1,2027-08-04,2027-08-04,CMH139 > Construction > Main Building - Building D > Admin > Admin - Level 1
OFF.2030,Admin / Lvl 1 - 1st Floor Seismic Install,5,5,2027-08-04,2027-08-10,CMH139 > Construction > Main Building - Building D > Admin > Admin - Level 1
OFF.1110,Admin / Lvl 1 - Fiber Closets Basket Tray,4,4,2027-08-05,2027-08-10,CMH139 > Construction > Main Building - Building D > Admin > Admin - Level 1
OFF.1240,Admin / Lvl 1 - Ceiling Grid,8,8,2027-08-11,2027-08-20,CMH139 > Construction > Main Building - Building D > Admin > Admin - Level 1
OFF.1080,Admin / Lvl 1 - Fiber Closets Light Fixtures / Devices / Trim,2,2,2027-08-11,2027-08-12,CMH139 > Construction > Main Building - Building D > Admin > Admin - Level 1
CN6590,Admin / Lvl 1 - Hard Lids,10,10,2027-08-11,2027-08-24,CMH139 > Construction > Main Building - Building D > Admin > Admin - Level 1
OFF.1340,Admin / Lvl 1 - Ceiling Tile,3,3,2027-08-23,2027-08-25,CMH139 > Construction > Main Building - Building D > Admin > Admin - Level 1
OFF.1320,Admin / Lvl 1 - Grilles / Registers / Diffusers,5,5,2027-08-23,2027-08-27,CMH139 > Construction > Main Building - Building D > Admin > Admin - Level 1
OFF.1350,Admin / Lvl 1 - Tile Flooring & Walls,10,10,2027-08-23,2027-09-03,CMH139 > Construction > Main Building - Building D > Admin > Admin - Level 1
CN6510,Admin / Lvl 1 - DFH Finish Carpentry,10,10,2027-08-23,2027-09-03,CMH139 > Construction > Main Building - Building D > Admin > Admin - Level 1
OFF.1120,Admin / Lvl 1 - Fiber Room Finalization,25,25,2027-08-23,2027-09-27,CMH139 > Construction > Main Building - Building D > Admin > Admin - Level 1
OFF.1250,Admin / Lvl 1 - Overhead Inspections,1,1,2027-08-30,2027-08-30,CMH139 > Construction > Main Building - Building D > Admin > Admin - Level 1
OFF.1290,Admin / Lvl 1 - Fire Protection Heads,2,2,2027-08-31,2027-09-01,CMH139 > Construction > Main Building - Building D > Admin > Admin - Level 1
OFF.1310,Admin / Lvl 1 - Light Fixtures,5,5,2027-08-31,2027-09-07,CMH139 > Construction > Main Building - Building D > Admin > Admin - Level 1
CN6580,Admin / Lvl 1 - Fire Alarm Devices,2,2,2027-08-31,2027-09-01,CMH139 > Construction > Main Building - Building D > Admin > Admin - Level 1
CN1990,Admin / Lvl 1 - Install Turn Stiles,5,5,2027-08-31,2027-09-07,CMH139 > Construction > Main Building - Building D > Admin > Admin - Level 1
OFF.1300,Admin / Lvl 1 - Carpet Flooring & Resilient Base,3,3,2027-09-08,2027-09-10,CMH139 > Construction > Main Building - Building D > Admin > Admin - Level 1
CN6600,Admin / Lvl 1 - Toilet Partitions,5,5,2027-09-08,2027-09-14,CMH139 > Construction > Main Building - Building D > Admin > Admin - Level 1
CN6480,Admin / Lvl 1 - Install Plumbing Fixtures,10,10,2027-09-15,2027-09-28,CMH139 > Construction > Main Building - Building D > Admin > Admin - Level 1
CN6550,Admin / Lvl 1 - Final Plumbing Inspection,1,1,2027-09-29,2027-09-29,CMH139 > Construction > Main Building - Building D > Admin > Admin - Level 1
OFF.2040,Admin / Lvl 2 - Layout,2,2,2027-04-08,2027-04-09,CMH139 > Construction > Main Building - Building D > Admin > Admin - Level 2
CN7010,Admin / Lvl 2 - Framing & Door Frames (Blue),7,7,2027-04-12,2027-04-20,CMH139 > Construction > Main Building - Building D > Admin > Admin - Level 2
CN6680,Admin / Lvl 2 - Install Drywall Seq 1 - Blue (Top 12'),10,10,2027-04-16,2027-04-27,CMH139 > Construction > Main Building - Building D > Admin > Admin - Level 2
CN6690,Admin / Lvl 2 - Framing & Door Frames (Red),7,7,2027-04-16,2027-04-26,CMH139 > Construction > Main Building - Building D > Admin > Admin - Level 2
CN6700,Admin / Lvl 2 - Framing & Door Frames (Green),7,7,2027-04-22,2027-04-30,CMH139 > Construction > Main Building - Building D > Admin > Admin - Level 2
CN6760,Admin / Lvl 2 - Install Drywall Seq 2 - Red (Top 12'),18,18,2027-04-27,2027-05-17,CMH139 > Construction > Main Building - Building D > Admin > Admin - Level 2
CN6750,Admin / Lvl 2 - Framing & Door Frames (Magenta),7,7,2027-04-28,2027-05-06,CMH139 > Construction > Main Building - Building D > Admin > Admin - Level 2
CN6730,Admin / Lvl 2 - Prime & Paint Drywall (Blue),5,5,2027-04-28,2027-05-04,CMH139 > Construction > Main Building - Building D > Admin > Admin - Level 2
CN6840,Admin / Lvl 2 - In Wall Plumbing (Office),15,15,2027-05-03,2027-05-21,CMH139 > Construction > Main Building - Building D > Admin > Admin - Level 2
CN6780,Admin / Lvl 2 - Install Drywall Seq 3 - Green (Top 12'),12,12,2027-05-07,2027-05-20,CMH139 > Construction > Main Building - Building D > Admin > Admin - Level 2
CN6820,Admin / Lvl 2 - Install Fire Proofing,10,10,2027-05-12,2027-05-25,CMH139 > Construction > Main Building - Building D > Admin > Admin - Level 2
CN6800,Admin / Lvl 2 - Install Drywall Seq 4 - Magenta (Top 12'),10,10,2027-05-14,2027-05-25,CMH139 > Construction > Main Building - Building D > Admin > Admin - Level 2
CN6830,Admin / Lvl 2 - Install Fire Protection,10,10,2027-05-18,2027-06-01,CMH139 > Construction > Main Building - Building D > Admin > Admin - Level 2
CN6770,Admin / Lvl 2 - Prime & Paint Drywall (Red),5,5,2027-05-18,2027-05-24,CMH139 > Construction > Main Building - Building D > Admin > Admin - Level 2
CN7030,Admin / Lvl 2 - In Wall Electrical Rough In (Blue),5,5,2027-05-20,2027-05-26,CMH139 > Construction > Main Building - Building D > Admin > Admin - Level 2
OFF.2050,Admin / Lvl 2 - Fiber Closets Electrical & Fire Alarm Rough-In,3,3,2027-05-21,2027-05-25,CMH139 > Construction > Main Building - Building D > Admin > Admin - Level 2
CN6790,Admin / Lvl 2 - Prime & Paint Drywall (Green),5,5,2027-05-21,2027-05-27,CMH139 > Construction > Main Building - Building D > Admin > Admin - Level 2
CN15880,Admin / Lvl 2 - In Wall Electrical Rough In (Red),5,5,2027-05-24,2027-05-28,CMH139 > Construction > Main Building - Building D > Admin > Admin - Level 2
OFF.1970,Admin / Lvl 2 - IW Supply,10,10,2027-05-26,2027-06-09,CMH139 > Construction > Main Building - Building D > Admin > Admin - Level 2
CN6810,Admin / Lvl 2 - Prime & Paint Drywall (Magenta),5,5,2027-05-26,2027-06-02,CMH139 > Construction > Main Building - Building D > Admin > Admin - Level 2
CN15890,Admin / Lvl 2 - In Wall Electrical Rough In (Green),5,5,2027-05-26,2027-06-02,CMH139 > Construction > Main Building - Building D > Admin > Admin - Level 2
CN7040,Admin / Lvl 2 - In Wall Electrical Inspection (Blue),5,5,2027-05-27,2027-06-03,CMH139 > Construction > Main Building - Building D > Admin > Admin - Level 2
CN6850,Admin / Lvl 2 - Install Plumbing (Mechanical Room),15,15,2027-05-28,2027-06-18,CMH139 > Construction > Main Building - Building D > Admin > Admin - Level 2
CN15900,Admin / Lvl 2 - In Wall Electrical Rough In (Magenta),5,5,2027-05-28,2027-06-04,CMH139 > Construction > Main Building - Building D > Admin > Admin - Level 2
CN7050,Admin / Lvl 2 - In Wall Electrical Inspection (Red),5,5,2027-06-01,2027-06-07,CMH139 > Construction > Main Building - Building D > Admin > Admin - Level 2
CN6870,Admin / Lvl 2 - Install Split System & Refrigeration,20,20,2027-06-03,2027-06-30,CMH139 > Construction > Main Building - Building D > Admin > Admin - Level 2
CN15930,Admin / Lvl 2 - Install EUHs,10,10,2027-06-03,2027-06-16,CMH139 > Construction > Main Building - Building D > Admin > Admin - Level 2
CN15940,Admin / Lvl 2 - Install ERVs,3,3,2027-06-03,2027-06-07,CMH139 > Construction > Main Building - Building D > Admin > Admin - Level 2
CN7060,Admin / Lvl 2 - In Wall Electrical Inspection (Green),5,5,2027-06-03,2027-06-09,CMH139 > Construction > Main Building - Building D > Admin > Admin - Level 2
CN6740,Admin / Lvl 2 - Install Drywall Seq 1 - Blue (Remaining),10,10,2027-06-04,2027-06-15,CMH139 > Construction > Main Building - Building D > Admin > Admin - Level 2
CN6880,Admin / Lvl 2 - In Wall Electrical Inspection (Magenta),5,5,2027-06-07,2027-06-11,CMH139 > Construction > Main Building - Building D > Admin > Admin - Level 2
CN6900,Admin / Lvl 2 - Install Duct Work,20,20,2027-06-10,2027-07-08,CMH139 > Construction > Main Building - Building D > Admin > Admin - Level 2
CN6930,Admin / Lvl 2 - Install Drywall Seq 2 - Red (Remaining),18,18,2027-06-16,2027-07-07,CMH139 > Construction > Main Building - Building D > Admin > Admin - Level 2
CN6860,Admin / Lvl 2 - OH Plumbing (Office),15,15,2027-06-17,2027-07-08,CMH139 > Construction > Main Building - Building D > Admin > Admin - Level 2
CN7020,Admin / Lvl 2 - Install OH Electrical Rough In,15,15,2027-06-17,2027-07-08,CMH139 > Construction > Main Building - Building D > Admin > Admin - Level 2
CN6940,Admin / Lvl 2 - Install Drywall Seq 3 - Green (Remaining),15,15,2027-06-24,2027-07-12,CMH139 > Construction > Main Building - Building D > Admin > Admin - Level 2
CN6910,Admin / Lvl 2 - Install VAVs,20,20,2027-06-24,2027-07-22,CMH139 > Construction > Main Building - Building D > Admin > Admin - Level 2
CN6950,Admin / Lvl 2 - Install Drywall Seq 4 - Magenta (Remaining),10,10,2027-07-01,2027-07-13,CMH139 > Construction > Main Building - Building D > Admin > Admin - Level 2
OFF.2060,Admin / Lvl 2 - Office Doors & Hardware,5,5,2027-07-13,2027-07-19,CMH139 > Construction > Main Building - Building D > Admin > Admin - Level 2
OFF.1900,Admin / Lvl 2 - A/G Plumbing Rough In,15,15,2027-07-14,2027-08-03,CMH139 > Construction > Main Building - Building D > Admin > Admin - Level 2
CN6920,Admin / Lvl 2 - Mechanical Inspection,1,1,2027-07-23,2027-07-23,CMH139 > Construction > Main Building - Building D > Admin > Admin - Level 2
OFF.2140,Admin / Lvl 2 - Overhead Electrical Rough In,5,5,2027-07-28,2027-08-03,CMH139 > Construction > Main Building - Building D > Admin > Admin - Level 2
OFF.1910,Admin / Lvl 2 - Casework,3,3,2027-08-04,2027-08-06,CMH139 > Construction > Main Building - Building D > Admin > Admin - Level 2
OFF.2000,Admin / Lvl 2 - 2nd Floor Seismic Install,5,5,2027-08-04,2027-08-10,CMH139 > Construction > Main Building - Building D > Admin > Admin - Level 2
OFF.2090,Admin / Lvl 2 - Fiber Closets Fire Protection Connections,1,1,2027-08-04,2027-08-04,CMH139 > Construction > Main Building - Building D > Admin > Admin - Level 2
OFF.2130,Admin / Lvl 2 - Fiber Closets Basket Tray,4,4,2027-08-05,2027-08-10,CMH139 > Construction > Main Building - Building D > Admin > Admin - Level 2
OFF.2120,Admin / Lvl 2 - Fiber Closets Light Fixtures / Devices / Trim,2,2,2027-08-05,2027-08-06,CMH139 > Construction > Main Building - Building D > Admin > Admin - Level 2
OFF.1840,Admin / Lvl 2 - Ceiling Grid,8,8,2027-08-11,2027-08-20,CMH139 > Construction > Main Building - Building D > Admin > Admin - Level 2
CN6960,Admin / Lvl 2 - Hard Lids,10,10,2027-08-11,2027-08-24,CMH139 > Construction > Main Building - Building D > Admin > Admin - Level 2
OFF.1920,Admin / Lvl 2 - Tile Flooring & Walls,10,10,2027-08-23,2027-09-03,CMH139 > Construction > Main Building - Building D > Admin > Admin - Level 2
OFF.1880,Admin / Lvl 2 - Ceiling Tile,3,3,2027-08-23,2027-08-25,CMH139 > Construction > Main Building - Building D > Admin > Admin - Level 2
OFF.1860,Admin / Lvl 2 - Grilles / Registers / Diffusers,5,5,2027-08-23,2027-08-27,CMH139 > Construction > Main Building - Building D > Admin > Admin - Level 2
CN6980,Admin / Lvl 2 - DFH Finish Carpentry,10,10,2027-08-23,2027-09-03,CMH139 > Construction > Main Building - Building D > Admin > Admin - Level 2
OFF.1830,Admin / Lvl 2 - Overhead Inspections,1,1,2027-08-30,2027-08-30,CMH139 > Construction > Main Building - Building D > Admin > Admin - Level 2
OFF.1870,Admin / Lvl 2 - Fire Protection Heads,2,2,2027-08-31,2027-09-01,CMH139 > Construction > Main Building - Building D > Admin > Admin - Level 2
OFF.1850,Admin / Lvl 2 - Light Fixtures,5,5,2027-08-31,2027-09-07,CMH139 > Construction > Main Building - Building D > Admin > Admin - Level 2
CN6970,Admin / Lvl 2 - Fire Alarm Devices,4,4,2027-08-31,2027-09-03,CMH139 > Construction > Main Building - Building D > Admin > Admin - Level 2
OFF.1940,Admin / Lvl 2 - Carpet Flooring & Resilient Base,3,3,2027-09-02,2027-09-07,CMH139 > Construction > Main Building - Building D > Admin > Admin - Level 2
CN6990,Admin / Lvl 2 - Toilet Partitions,5,5,2027-09-08,2027-09-14,CMH139 > Construction > Main Building - Building D > Admin > Admin - Level 2
CN7000,Admin / Lvl 2 - Install Plumbing Fixtures,10,10,2027-09-15,2027-09-28,CMH139 > Construction > Main Building - Building D > Admin > Admin - Level 2
CN6890,Admin / Lvl 2 - Final Plumbing Inspection,1,1,2027-09-29,2027-09-29,CMH139 > Construction > Main Building - Building D > Admin > Admin - Level 2
P1EX.1230,Phase 1 / Gen Yard - Pour Sidewalk,5,5,2027-06-14,2027-06-18,CMH139 > Construction > Main Building - Building D > Phase 1 (ROMP01 & 03) > Phase 1 - Gen Yard
P1EX.1240,Phase 1 / Gen Yard - Install Foundations & Fencing,4,4,2027-08-13,2027-08-18,CMH139 > Construction > Main Building - Building D > Phase 1 (ROMP01 & 03) > Phase 1 - Gen Yard
P1EX.1030,Phase 1 / Gen Yard - Set Transformers,2,2,2027-04-13,2027-04-14,CMH139 > Construction > Main Building - Building D > Phase 1 (ROMP01 & 03) > Phase 1 - Gen Yard > Electrical
P1EX.1280,Phase 1 / Gen Yard - Install Fuel System Control Conduit,10,10,2027-06-04,2027-06-17,CMH139 > Construction > Main Building - Building D > Phase 1 (ROMP01 & 03) > Phase 1 - Gen Yard > Electrical
P1EX.1050,"Phase 1 / Gen Yard - Pull, Term & Test MV through XFMRs",7,7,2027-06-22,2027-06-30,CMH139 > Construction > Main Building - Building D > Phase 1 (ROMP01 & 03) > Phase 1 - Gen Yard > Electrical
P1EX.1110,Phase 1 / Gen Yard - Pull In DLB Loop (FLORES),5,5,2027-07-01,2027-07-08,CMH139 > Construction > Main Building - Building D > Phase 1 (ROMP01 & 03) > Phase 1 - Gen Yard > Electrical
P1EX.1190,"Phase 1 / Gen Yard - Pull, Test & Term Mech Gen Feeder Wire",2,2,2027-07-13,2027-07-14,CMH139 > Construction > Main Building - Building D > Phase 1 (ROMP01 & 03) > Phase 1 - Gen Yard > Electrical
P1EX.1200,Phase 1 / Gen Yard - Pull & Term Mech Gen Controls,4,4,2027-07-15,2027-07-20,CMH139 > Construction > Main Building - Building D > Phase 1 (ROMP01 & 03) > Phase 1 - Gen Yard > Electrical
P1EX.1040,Phase 1 / Gen Yard - Install Cable Bus Structure,5,5,2027-07-16,2027-07-22,CMH139 > Construction > Main Building - Building D > Phase 1 (ROMP01 & 03) > Phase 1 - Gen Yard > Electrical
P1EX.1210,Phase 1 / Gen Yard - Install Power & Conduit Inside Mech Gen,2,2,2027-07-21,2027-07-22,CMH139 > Construction > Main Building - Building D > Phase 1 (ROMP01 & 03) > Phase 1 - Gen Yard > Electrical
P1EX.1070,Phase 1 / Gen Yard - LV Cable Bus and Feeders - XFMRs to USBs,10,10,2027-07-23,2027-08-05,CMH139 > Construction > Main Building - Building D > Phase 1 (ROMP01 & 03) > Phase 1 - Gen Yard > Electrical
P1EX.1290,Phase 1 / Gen Yard - Grounding / Lightning Protection,2,2,2027-07-28,2027-07-29,CMH139 > Construction > Main Building - Building D > Phase 1 (ROMP01 & 03) > Phase 1 - Gen Yard > Electrical
P1EX.1250,Phase 1 / Gen Yard - Energize Electrical - Site to Phase,0,0,,2027-08-05,CMH139 > Construction > Main Building - Building D > Phase 1 (ROMP01 & 03) > Phase 1 - Gen Yard > Electrical
P1EX.1300,Phase 1 / Gen Yard - LV Cable Bus and Feeders - Gens to USBs,15,15,2027-08-06,2027-08-26,CMH139 > Construction > Main Building - Building D > Phase 1 (ROMP01 & 03) > Phase 1 - Gen Yard > Electrical
P1EX.1260,Phase 1 / Gen Yard - Set Fuel Tank,1,1,2027-05-19,2027-05-19,CMH139 > Construction > Main Building - Building D > Phase 1 (ROMP01 & 03) > Phase 1 - Gen Yard > Mechanical
P1EX.1270,Phase 1 / Gen Yard - Install Fuel Piping,30,30,2027-05-20,2027-07-01,CMH139 > Construction > Main Building - Building D > Phase 1 (ROMP01 & 03) > Phase 1 - Gen Yard > Mechanical
P1EX.1160,Phase 1 / Gen Yard - Set Mechanical Generator,1,1,2027-07-08,2027-07-08,CMH139 > Construction > Main Building - Building D > Phase 1 (ROMP01 & 03) > Phase 1 - Gen Yard > Mechanical
P1EX.1060,Phase 1 / Gen Yard - Set Main Service Generators,2,2,2027-07-08,2027-07-09,CMH139 > Construction > Main Building - Building D > Phase 1 (ROMP01 & 03) > Phase 1 - Gen Yard > Mechanical
P1EX.1170,Phase 1 / Gen Yard - Set Exhaust For Mechanical Generator,3,3,2027-07-09,2027-07-13,CMH139 > Construction > Main Building - Building D > Phase 1 (ROMP01 & 03) > Phase 1 - Gen Yard > Mechanical
P1EX.1220,Phase 1 / Gen Yard - CAT Load Banking,2,2,2027-07-09,2027-07-12,CMH139 > Construction > Main Building - Building D > Phase 1 (ROMP01 & 03) > Phase 1 - Gen Yard > Mechanical
P1EX.1090,Phase 1 / Gen Yard - Set Exhaust Stack and Shroud,12,12,2027-07-12,2027-07-27,CMH139 > Construction > Main Building - Building D > Phase 1 (ROMP01 & 03) > Phase 1 - Gen Yard > Mechanical
P1EX.1080,Phase 1 / Gen Yard - Install Generator Platforms,5,5,2027-08-06,2027-08-12,CMH139 > Construction > Main Building - Building D > Phase 1 (ROMP01 & 03) > Phase 1 - Gen Yard > Mechanical
P1EX.1100,Phase 1 / Tank Yard - Build/Set IW Storage Tanks,15,15,2027-05-13,2027-06-03,CMH139 > Construction > Main Building - Building D > Phase 1 (ROMP01 & 03) > Phase 1 - Tank Yard
P1EX.1330,Phase 1 / Tank Yard - Install Fence,14,14,2027-06-04,2027-06-23,CMH139 > Construction > Main Building - Building D > Phase 1 (ROMP01 & 03) > Phase 1 - Tank Yard
P1EX.1310,Phase 1 / Tank Yard - Install Fence Foundations,6,6,2027-06-04,2027-06-11,CMH139 > Construction > Main Building - Building D > Phase 1 (ROMP01 & 03) > Phase 1 - Tank Yard
P1EX.1320,Phase 1 / Tank Yard - Leak Test,6,6,2027-06-04,2027-06-11,CMH139 > Construction > Main Building - Building D > Phase 1 (ROMP01 & 03) > Phase 1 - Tank Yard
P1EX.1340,Phase 1 / Tank Yard - Pipe IW Storage Tanks,50,50,2027-06-11,2027-08-20,CMH139 > Construction > Main Building - Building D > Phase 1 (ROMP01 & 03) > Phase 1 - Tank Yard
P1EX.1350,Phase 1 / Tank Yard - Install Control Conduit,14,14,2027-08-23,2027-09-10,CMH139 > Construction > Main Building - Building D > Phase 1 (ROMP01 & 03) > Phase 1 - Tank Yard
P1EX.1360,Phase 1 / Tank Yard - Install Lighting,8,8,2027-08-24,2027-09-03,CMH139 > Construction > Main Building - Building D > Phase 1 (ROMP01 & 03) > Phase 1 - Tank Yard
P1ER.1320,Phase 1 / Elec Rm - Layout,1,1,2027-04-09,2027-04-09,CMH139 > Construction > Main Building - Building D > Phase 1 (ROMP01 & 03) > Phase 1 - Electrical Room
P1ER.1130,Phase 1 / Elec Rm - Install DriClad,10,10,2027-04-12,2027-04-23,CMH139 > Construction > Main Building - Building D > Phase 1 (ROMP01 & 03) > Phase 1 - Electrical Room
P1ER.1000,Phase 1 / Elec Rm - Pull TAHU Feeders,5,5,2027-04-15,2027-04-21,CMH139 > Construction > Main Building - Building D > Phase 1 (ROMP01 & 03) > Phase 1 - Electrical Room
P1ER.1010,Phase 1 / Elec Rm - Pull Lighting Control Wiring,7,7,2027-04-22,2027-04-30,CMH139 > Construction > Main Building - Building D > Phase 1 (ROMP01 & 03) > Phase 1 - Electrical Room
P1ER.1040,Phase 1 / Elec Rm - Wall Electric & Fire Alarm Rough-in,5,5,2027-04-26,2027-04-30,CMH139 > Construction > Main Building - Building D > Phase 1 (ROMP01 & 03) > Phase 1 - Electrical Room
P1ER.1020,Phase 1 / Elec Rm - Stud Framing,4,4,2027-04-27,2027-04-30,CMH139 > Construction > Main Building - Building D > Phase 1 (ROMP01 & 03) > Phase 1 - Electrical Room
P1ER.1170,Phase 1 / Elec Rm - Hangers,3,3,2027-05-03,2027-05-05,CMH139 > Construction > Main Building - Building D > Phase 1 (ROMP01 & 03) > Phase 1 - Electrical Room
P1ER.1260,Phase 1 / Elec Rm - Fire Protection Rough In,3,3,2027-05-06,2027-05-10,CMH139 > Construction > Main Building - Building D > Phase 1 (ROMP01 & 03) > Phase 1 - Electrical Room
P1ER.1240,Phase 1 / Elec Rm - Install OH Conduit / Mechanical Feeders,5,5,2027-05-06,2027-05-12,CMH139 > Construction > Main Building - Building D > Phase 1 (ROMP01 & 03) > Phase 1 - Electrical Room
P1ER.1070,Phase 1 / Elec Rm - Set USB (LV Gear),5,5,2027-05-13,2027-05-19,CMH139 > Construction > Main Building - Building D > Phase 1 (ROMP01 & 03) > Phase 1 - Electrical Room
P1ER.1100,Phase 1 / Elec Rm - Breaker Testing USB,5,5,2027-05-20,2027-05-26,CMH139 > Construction > Main Building - Building D > Phase 1 (ROMP01 & 03) > Phase 1 - Electrical Room
P1ER.1330,Phase 1 / Elec Rm - Fill Buck Out,4,4,2027-05-20,2027-05-25,CMH139 > Construction > Main Building - Building D > Phase 1 (ROMP01 & 03) > Phase 1 - Electrical Room
P1ER.1340,Phase 1 / Elec Rm - Install Cable Tray,7,7,2027-05-20,2027-05-28,CMH139 > Construction > Main Building - Building D > Phase 1 (ROMP01 & 03) > Phase 1 - Electrical Room
P1ER.1390,Phase 1 / Elec Rm - Pull / Term HUPPs,2,2,2027-05-20,2027-05-21,CMH139 > Construction > Main Building - Building D > Phase 1 (ROMP01 & 03) > Phase 1 - Electrical Room
P1ER.1210,Phase 1 / Elec Rm - Set SCCS Setting for Breakers,1,1,2027-05-27,2027-05-27,CMH139 > Construction > Main Building - Building D > Phase 1 (ROMP01 & 03) > Phase 1 - Electrical Room
P1ER.1140,Phase 1 / Elec Rm - Fire Alarm / VESDA,5,5,2027-06-08,2027-06-14,CMH139 > Construction > Main Building - Building D > Phase 1 (ROMP01 & 03) > Phase 1 - Electrical Room
P1ER.1145,Phase 1 / Elec Rm - ERRS Antenna Install,4,4,2027-06-15,2027-06-18,CMH139 > Construction > Main Building - Building D > Phase 1 (ROMP01 & 03) > Phase 1 - Electrical Room
P1ER.1350,Phase 1 / Elec Rm - Install Bus Duct,7,7,2027-06-01,2027-06-09,CMH139 > Construction > Main Building - Building D > Phase 1 (ROMP01 & 03) > Phase 1 - Electrical Room
P1ER.1090,Phase 1 / Elec Rm - Install Control Conduit,5,5,2027-06-01,2027-06-07,CMH139 > Construction > Main Building - Building D > Phase 1 (ROMP01 & 03) > Phase 1 - Electrical Room
P1ER.1060,Phase 1 / Elec Rm - Hang Drywall & Finish,5,5,2027-06-16,2027-06-22,CMH139 > Construction > Main Building - Building D > Phase 1 (ROMP01 & 03) > Phase 1 - Electrical Room
P1ER.1080,Phase 1 / Elec Rm - Prime & First Coat Paint,1,1,2027-06-23,2027-06-23,CMH139 > Construction > Main Building - Building D > Phase 1 (ROMP01 & 03) > Phase 1 - Electrical Room
P1ER.1190,Phase 1 / Elec Rm - Doors & Hardware,5,5,2027-06-24,2027-06-30,CMH139 > Construction > Main Building - Building D > Phase 1 (ROMP01 & 03) > Phase 1 - Electrical Room
P1ER.1110,Phase 1 / Elec Rm - Set OFCI Electrical Panels,5,5,2027-06-24,2027-06-30,CMH139 > Construction > Main Building - Building D > Phase 1 (ROMP01 & 03) > Phase 1 - Electrical Room
P1ER.1120,Phase 1 / Elec Rm - Install AMCOP Panels,1,1,2027-06-24,2027-06-24,CMH139 > Construction > Main Building - Building D > Phase 1 (ROMP01 & 03) > Phase 1 - Electrical Room
P1ER.1300,Phase 1 / Elec Rm - Install Electrical Raceways (Branch Conduits),10,10,2027-07-01,2027-07-15,CMH139 > Construction > Main Building - Building D > Phase 1 (ROMP01 & 03) > Phase 1 - Electrical Room
P1ER.1380,Phase 1 / Elec Rm - Pull & Term DLB Fiber,5,5,2027-07-01,2027-07-08,CMH139 > Construction > Main Building - Building D > Phase 1 (ROMP01 & 03) > Phase 1 - Electrical Room
P1ER.1400,Phase 1 / Elec Rm - Install UPS,4,4,2027-07-01,2027-07-07,CMH139 > Construction > Main Building - Building D > Phase 1 (ROMP01 & 03) > Phase 1 - Electrical Room
P1ER.1150,Phase 1 / Elec Rm - Pull PDC Feeders,5,5,2027-07-02,2027-07-09,CMH139 > Construction > Main Building - Building D > Phase 1 (ROMP01 & 03) > Phase 1 - Electrical Room
P1ER.1160,Phase 1 / Elec Rm - Terminate LV Electrical Panels,5,5,2027-07-07,2027-07-13,CMH139 > Construction > Main Building - Building D > Phase 1 (ROMP01 & 03) > Phase 1 - Electrical Room
P1ER.1200,Phase 1 / Elec Rm - Manufacturer Inspection USB,1,1,2027-07-09,2027-07-09,CMH139 > Construction > Main Building - Building D > Phase 1 (ROMP01 & 03) > Phase 1 - Electrical Room
P1ER.1050,Phase 1 / Elec Rm - Seismic Install,1,1,2027-07-12,2027-07-12,CMH139 > Construction > Main Building - Building D > Phase 1 (ROMP01 & 03) > Phase 1 - Electrical Room
P1ER.1230,Phase 1 / Elec Rm - Test & Terminate PDC Feeders,5,5,2027-07-12,2027-07-16,CMH139 > Construction > Main Building - Building D > Phase 1 (ROMP01 & 03) > Phase 1 - Electrical Room
P1ER.1220,Phase 1 / Elec Rm - Install Lighting,3,3,2027-07-12,2027-07-14,CMH139 > Construction > Main Building - Building D > Phase 1 (ROMP01 & 03) > Phase 1 - Electrical Room
P1ER.1270,Phase 1 / Elec Rm - Egress Lighting,3,3,2027-07-12,2027-07-14,CMH139 > Construction > Main Building - Building D > Phase 1 (ROMP01 & 03) > Phase 1 - Electrical Room
P1ER.1180,Phase 1 / Elec Rm - BMS System,10,10,2027-07-14,2027-07-27,CMH139 > Construction > Main Building - Building D > Phase 1 (ROMP01 & 03) > Phase 1 - Electrical Room
P1ER.1290,Phase 1 / Elec Rm - Trade Repair,3,3,2027-07-16,2027-07-20,CMH139 > Construction > Main Building - Building D > Phase 1 (ROMP01 & 03) > Phase 1 - Electrical Room
P1ER.1280,Phase 1 / Elec Rm - Final Paint / Touch Up,1,1,2027-07-21,2027-07-21,CMH139 > Construction > Main Building - Building D > Phase 1 (ROMP01 & 03) > Phase 1 - Electrical Room
P1ER.1030,Phase 1 / Elec Rm - Cable Bus Termination,4,4,2027-07-23,2027-07-28,CMH139 > Construction > Main Building - Building D > Phase 1 (ROMP01 & 03) > Phase 1 - Electrical Room
P1ER.1310,Phase 1 / Elec Rm - Energize BMS Panels,1,1,2027-07-29,2027-07-29,CMH139 > Construction > Main Building - Building D > Phase 1 (ROMP01 & 03) > Phase 1 - Electrical Room
P1ER.1360,Phase 1 / Elec Rm - Install CRAC Unit & Exhaust Fan,5,5,2027-09-15,2027-09-21,CMH139 > Construction > Main Building - Building D > Phase 1 (ROMP01 & 03) > Phase 1 - Electrical Room
P1ER.1370,Phase 1 / Elec Rm - OA Reference Piping,5,5,2027-09-22,2027-09-28,CMH139 > Construction > Main Building - Building D > Phase 1 (ROMP01 & 03) > Phase 1 - Electrical Room
P1RP.1590,Phase 1 / Data Hall - Fire Protection Rough In,5,5,2027-03-23,2027-03-29,CMH139 > Construction > Main Building - Building D > Phase 1 (ROMP01 & 03) > Phase 1 - Data Hall
P1RP.1510,Phase 1 / Data Hall - Install Temp Wall Bulkhead,5,5,2027-04-22,2027-04-28,CMH139 > Construction > Main Building - Building D > Phase 1 (ROMP01 & 03) > Phase 1 - Data Hall
P1RP.1430,Phase 1 / Data Hall - Stud Framing (Data Hall / Elec Rm Wall),5,5,2027-04-27,2027-05-03,CMH139 > Construction > Main Building - Building D > Phase 1 (ROMP01 & 03) > Phase 1 - Data Hall
P1RP.1100,Phase 1 / Data Hall - Wall Elec & FA Rough-In (IMP),4,4,2027-04-29,2027-05-04,CMH139 > Construction > Main Building - Building D > Phase 1 (ROMP01 & 03) > Phase 1 - Data Hall
P1RP.1360,Phase 1 / Data Hall - Above Ceiling Cable Tray,3,3,2027-05-03,2027-05-05,CMH139 > Construction > Main Building - Building D > Phase 1 (ROMP01 & 03) > Phase 1 - Data Hall
P1RP.1040,Phase 1 / Data Hall - Stud Framing (Equipment Platform),5,5,2027-05-03,2027-05-07,CMH139 > Construction > Main Building - Building D > Phase 1 (ROMP01 & 03) > Phase 1 - Data Hall
P1RP.1500,Phase 1 / Data Hall - Wall Elec & FA Rough-In (Data Hall / Elec Rm),4,4,2027-05-04,2027-05-07,CMH139 > Construction > Main Building - Building D > Phase 1 (ROMP01 & 03) > Phase 1 - Data Hall
P1RP.1350,Phase 1 / Data Hall - Seismic Install,2,2,2027-05-06,2027-05-07,CMH139 > Construction > Main Building - Building D > Phase 1 (ROMP01 & 03) > Phase 1 - Data Hall
P1RP.1570,Phase 1 / Data Hall - OH Electric Rough In,5,5,2027-05-10,2027-05-14,CMH139 > Construction > Main Building - Building D > Phase 1 (ROMP01 & 03) > Phase 1 - Data Hall
P1RP.1130,Phase 1 / Data Hall - In Wall Rough In Inspection (Electrical / FA),1,1,2027-05-20,2027-05-20,CMH139 > Construction > Main Building - Building D > Phase 1 (ROMP01 & 03) > Phase 1 - Data Hall
P1RP.1460,Phase 1 / Data Hall - Hang Drywall & Finish (Data Hall / Elec Rm),5,5,2027-05-21,2027-05-27,CMH139 > Construction > Main Building - Building D > Phase 1 (ROMP01 & 03) > Phase 1 - Data Hall
P1RP.1190,Phase 1 / Data Hall - Prime & First Coat Paint,3,3,2027-05-28,2027-06-02,CMH139 > Construction > Main Building - Building D > Phase 1 (ROMP01 & 03) > Phase 1 - Data Hall
P1RP.1420,Phase 1 / Data Hall - Install Backdraft Dampers,5,5,2027-06-03,2027-06-09,CMH139 > Construction > Main Building - Building D > Phase 1 (ROMP01 & 03) > Phase 1 - Data Hall
P1RP.1050,Phase 1 / Data Hall - Fire Protection Drops,5,5,2027-06-03,2027-06-09,CMH139 > Construction > Main Building - Building D > Phase 1 (ROMP01 & 03) > Phase 1 - Data Hall
P1RP.1020,Phase 1 / Data Hall - MARS Racking,7,7,2027-06-08,2027-06-16,CMH139 > Construction > Main Building - Building D > Phase 1 (ROMP01 & 03) > Phase 1 - Data Hall
P1RP.1070,Phase 1 / Data Hall - Install Lighting Wiring & Fixtures,5,5,2027-06-17,2027-06-23,CMH139 > Construction > Main Building - Building D > Phase 1 (ROMP01 & 03) > Phase 1 - Data Hall
P1RP.1200,Phase 1 / Data Hall - Temp Wall Install,5,5,2027-06-17,2027-06-23,CMH139 > Construction > Main Building - Building D > Phase 1 (ROMP01 & 03) > Phase 1 - Data Hall
P1RP.1060,Phase 1 / Data Hall - Upper Polycarbonate Panels and Cold Aisle Cable Tray Arms,3,3,2027-06-17,2027-06-21,CMH139 > Construction > Main Building - Building D > Phase 1 (ROMP01 & 03) > Phase 1 - Data Hall
P1RP.1090,Phase 1 / Data Hall - Power PDC Whips,10,10,2027-06-17,2027-06-30,CMH139 > Construction > Main Building - Building D > Phase 1 (ROMP01 & 03) > Phase 1 - Data Hall
P1RP.1150,Phase 1 / Data Hall - PDC Feeders Drops & Supports,10,10,2027-06-17,2027-06-30,CMH139 > Construction > Main Building - Building D > Phase 1 (ROMP01 & 03) > Phase 1 - Data Hall
P1RP.1520,Phase 1 / Data Hall - ACT Grid Corridors,4,4,2027-06-17,2027-06-22,CMH139 > Construction > Main Building - Building D > Phase 1 (ROMP01 & 03) > Phase 1 - Data Hall
P1RP.1030,Phase 1 / Data Hall - Install Snubbers,5,5,2027-06-17,2027-06-23,CMH139 > Construction > Main Building - Building D > Phase 1 (ROMP01 & 03) > Phase 1 - Data Hall
P1RP.1230,Phase 1 / Data Hall - Install Control Dampers (PRD),5,5,2027-06-21,2027-06-25,CMH139 > Construction > Main Building - Building D > Phase 1 (ROMP01 & 03) > Phase 1 - Data Hall
P1RP.1530,Phase 1 / Data Hall - ACT Grid Cold Aisles,5,5,2027-06-21,2027-06-25,CMH139 > Construction > Main Building - Building D > Phase 1 (ROMP01 & 03) > Phase 1 - Data Hall
P1RP.1260,Phase 1 / Data Hall - Perfect Position,4,4,2027-06-22,2027-06-25,CMH139 > Construction > Main Building - Building D > Phase 1 (ROMP01 & 03) > Phase 1 - Data Hall
P1RP.1250,Phase 1 / Data Hall - Doors and Hardware,2,2,2027-06-24,2027-06-25,CMH139 > Construction > Main Building - Building D > Phase 1 (ROMP01 & 03) > Phase 1 - Data Hall
P1RP.1490,Phase 1 / Data Hall - Avenue Basket/Cable Tray (South),2,2,2027-06-28,2027-06-29,CMH139 > Construction > Main Building - Building D > Phase 1 (ROMP01 & 03) > Phase 1 - Data Hall
P1RP.1380,Phase 1 / Data Hall - Install Fire Protection Heads Avenue,2,2,2027-06-28,2027-06-29,CMH139 > Construction > Main Building - Building D > Phase 1 (ROMP01 & 03) > Phase 1 - Data Hall
P1RP.1280,Phase 1 / Data Hall - Install Fire Protection Heads Cold Aisle,2,2,2027-06-28,2027-06-29,CMH139 > Construction > Main Building - Building D > Phase 1 (ROMP01 & 03) > Phase 1 - Data Hall
P1RP.1160,Phase 1 / Data Hall - Cold Aisle Basket/Cable Tray,3,3,2027-06-28,2027-06-30,CMH139 > Construction > Main Building - Building D > Phase 1 (ROMP01 & 03) > Phase 1 - Data Hall
P1RP.1540,Phase 1 / Data Hall - ACT Borders For Corridors,1,1,2027-06-28,2027-06-28,CMH139 > Construction > Main Building - Building D > Phase 1 (ROMP01 & 03) > Phase 1 - Data Hall
P1RP.1580,Phase 1 / Data Hall - Install Control Wiring,5,5,2027-06-28,2027-07-02,CMH139 > Construction > Main Building - Building D > Phase 1 (ROMP01 & 03) > Phase 1 - Data Hall
P1RP.1550,Phase 1 / Data Hall - ACT Borders For Cold Aisles,1,1,2027-06-29,2027-06-29,CMH139 > Construction > Main Building - Building D > Phase 1 (ROMP01 & 03) > Phase 1 - Data Hall
P1RP.1390,Phase 1 / Data Hall - Structural Overhead Inspection (Avenue),1,1,2027-06-30,2027-06-30,CMH139 > Construction > Main Building - Building D > Phase 1 (ROMP01 & 03) > Phase 1 - Data Hall
P1RP.1290,Phase 1 / Data Hall - Avenue Basket/Cable Tray (North),2,2,2027-06-30,2027-07-01,CMH139 > Construction > Main Building - Building D > Phase 1 (ROMP01 & 03) > Phase 1 - Data Hall
P1RP.1560,Phase 1 / Data Hall - ACT Remaining Tile Drops Post Inspection,3,3,2027-07-01,2027-07-06,CMH139 > Construction > Main Building - Building D > Phase 1 (ROMP01 & 03) > Phase 1 - Data Hall
P1RP.1340,Phase 1 / Data Hall - CAT6 Cable Install,3,3,2027-07-02,2027-07-07,CMH139 > Construction > Main Building - Building D > Phase 1 (ROMP01 & 03) > Phase 1 - Data Hall
P1RP.1220,Phase 1 / Data Hall - Touch Up Paint,4,4,2027-07-06,2027-07-09,CMH139 > Construction > Main Building - Building D > Phase 1 (ROMP01 & 03) > Phase 1 - Data Hall
P1RP.1080,Phase 1 / Data Hall - Set PDC Cabinets,3,3,2027-07-07,2027-07-09,CMH139 > Construction > Main Building - Building D > Phase 1 (ROMP01 & 03) > Phase 1 - Data Hall
P1RP.1120,Phase 1 / Data Hall - EPMS,15,15,2027-07-12,2027-07-30,CMH139 > Construction > Main Building - Building D > Phase 1 (ROMP01 & 03) > Phase 1 - Data Hall
P1RP.1110,Phase 1 / Data Hall - BMS,15,15,2027-07-12,2027-07-30,CMH139 > Construction > Main Building - Building D > Phase 1 (ROMP01 & 03) > Phase 1 - Data Hall
P1RP.1270,Phase 1 / Data Hall - PDC Feeders Test & Terminate,10,10,2027-07-12,2027-07-23,CMH139 > Construction > Main Building - Building D > Phase 1 (ROMP01 & 03) > Phase 1 - Data Hall
P1RP.1180,Phase 1 / Data Hall - Lower Polycarbonate Panels,5,5,2027-08-02,2027-08-06,CMH139 > Construction > Main Building - Building D > Phase 1 (ROMP01 & 03) > Phase 1 - Data Hall
P1RP.1240,Phase 1 / Data Hall - NEA Finalization,10,10,2027-09-28,2027-10-11,CMH139 > Construction > Main Building - Building D > Phase 1 (ROMP01 & 03) > Phase 1 - Data Hall
P1RP.1300,Phase 1 / Data Hall - H2C Readiness Coordination,14,14,2027-10-12,2027-10-29,CMH139 > Construction > Main Building - Building D > Phase 1 (ROMP01 & 03) > Phase 1 - Data Hall
P1DG.1330,Phase 1 / TAHU - Fire Protection Rough In,2,2,2027-03-19,2027-03-22,CMH139 > Construction > Main Building - Building D > Phase 1 (ROMP01 & 03) > Phase 1 - TAHU Gallery
P1DG.1170,Phase 1 / TAHU - Seismic Install,2,2,2027-05-20,2027-05-21,CMH139 > Construction > Main Building - Building D > Phase 1 (ROMP01 & 03) > Phase 1 - TAHU Gallery
P1DG.1320,Phase 1 / TAHU - Sound Attenuator,10,10,2027-05-20,2027-06-03,CMH139 > Construction > Main Building - Building D > Phase 1 (ROMP01 & 03) > Phase 1 - TAHU Gallery
P1DG.1110,Phase 1 / TAHU - Install CFMF IMP Support,10,10,2027-05-20,2027-06-03,CMH139 > Construction > Main Building - Building D > Phase 1 (ROMP01 & 03) > Phase 1 - TAHU Gallery
P1DG.1200,Phase 1 / TAHU - Hang Outside Stairwell / Lobby Drywall,4,4,2027-05-20,2027-05-25,CMH139 > Construction > Main Building - Building D > Phase 1 (ROMP01 & 03) > Phase 1 - TAHU Gallery
P1DG.1040,Phase 1 / TAHU - Install IMP Panels,6,6,2027-06-04,2027-06-11,CMH139 > Construction > Main Building - Building D > Phase 1 (ROMP01 & 03) > Phase 1 - TAHU Gallery
P1DG.1080,Phase 1 / TAHU - Prime & Paint Drywall,3,3,2027-06-14,2027-06-16,CMH139 > Construction > Main Building - Building D > Phase 1 (ROMP01 & 03) > Phase 1 - TAHU Gallery
P1DG.1010,Phase 1 / TAHU - BMS Controls Rough In,10,10,2027-06-14,2027-06-25,CMH139 > Construction > Main Building - Building D > Phase 1 (ROMP01 & 03) > Phase 1 - TAHU Gallery
P1DG.1030,Phase 1 / TAHU - Wall Elec & Fire Alarm Rough-In,5,5,2027-06-14,2027-06-18,CMH139 > Construction > Main Building - Building D > Phase 1 (ROMP01 & 03) > Phase 1 - TAHU Gallery
P1DG.1095,Phase 1 / TAHU - Fire Alarm (VESDA),5,5,2027-06-14,2027-06-18,CMH139 > Construction > Main Building - Building D > Phase 1 (ROMP01 & 03) > Phase 1 - TAHU Gallery
P1DG.1190,Phase 1 / TAHU - Control Dampers,5,5,2027-06-17,2027-06-23,CMH139 > Construction > Main Building - Building D > Phase 1 (ROMP01 & 03) > Phase 1 - TAHU Gallery
P1DG.1050,Phase 1 / TAHU - Pull & Terminate Fire Alarm Cable,5,5,2027-06-21,2027-06-25,CMH139 > Construction > Main Building - Building D > Phase 1 (ROMP01 & 03) > Phase 1 - TAHU Gallery
P1DG.1070,Phase 1 / TAHU - Set TAHUs,2,2,2027-06-28,2027-06-29,CMH139 > Construction > Main Building - Building D > Phase 1 (ROMP01 & 03) > Phase 1 - TAHU Gallery
P1DG.1140,Phase 1 / TAHU - Doors and Hardware,3,3,2027-06-30,2027-07-02,CMH139 > Construction > Main Building - Building D > Phase 1 (ROMP01 & 03) > Phase 1 - TAHU Gallery
P1DG.1060,Phase 1 / TAHU - IW Supply Piping at TAHUs,10,10,2027-06-30,2027-07-14,CMH139 > Construction > Main Building - Building D > Phase 1 (ROMP01 & 03) > Phase 1 - TAHU Gallery
P1DG.1150,Phase 1 / TAHU - Lighting,5,5,2027-06-30,2027-07-07,CMH139 > Construction > Main Building - Building D > Phase 1 (ROMP01 & 03) > Phase 1 - TAHU Gallery
P1DG.1100,Phase 1 / TAHU - TAHU Trim,10,10,2027-06-30,2027-07-14,CMH139 > Construction > Main Building - Building D > Phase 1 (ROMP01 & 03) > Phase 1 - TAHU Gallery
P1DG.1160,Phase 1 / TAHU - Paint Doors & Frames,2,2,2027-07-06,2027-07-07,CMH139 > Construction > Main Building - Building D > Phase 1 (ROMP01 & 03) > Phase 1 - TAHU Gallery
P1DG.1000,Phase 1 / TAHU - Tie In TAHUs,10,10,2027-07-15,2027-07-28,CMH139 > Construction > Main Building - Building D > Phase 1 (ROMP01 & 03) > Phase 1 - TAHU Gallery
P1DG.1130,Phase 1 / TAHU - BMS Tie In,2,2,2027-07-27,2027-07-28,CMH139 > Construction > Main Building - Building D > Phase 1 (ROMP01 & 03) > Phase 1 - TAHU Gallery
P1DG.1120,Phase 1 / TAHU - IW Drain Piping at TAHUs,5,5,2027-07-29,2027-08-04,CMH139 > Construction > Main Building - Building D > Phase 1 (ROMP01 & 03) > Phase 1 - TAHU Gallery
P1DG.1180,Phase 1 / TAHU - Terminate Power To TAHUs,3,3,2027-08-05,2027-08-09,CMH139 > Construction > Main Building - Building D > Phase 1 (ROMP01 & 03) > Phase 1 - TAHU Gallery
P1C1.1220,Phase 1 / C1 - Intumescent Paint on Structural Steel,4,4,2027-02-08,2027-02-11,CMH139 > Construction > Main Building - Building D > Phase 1 (ROMP01 & 03) > Phase 1 - Catcher C1
P1C1.1120,Phase 1 / C1 - Install AMCOP Panels,5,5,2027-04-13,2027-04-19,CMH139 > Construction > Main Building - Building D > Phase 1 (ROMP01 & 03) > Phase 1 - Catcher C1
P1C1.1000,Phase 1 / C1 - Pull Lighting Control Wiring,7,7,2027-05-03,2027-05-11,CMH139 > Construction > Main Building - Building D > Phase 1 (ROMP01 & 03) > Phase 1 - Catcher C1
P1C1.1240,Phase 1 / C1 - Seismic Install,1,1,2027-05-20,2027-05-20,CMH139 > Construction > Main Building - Building D > Phase 1 (ROMP01 & 03) > Phase 1 - Catcher C1
P1C1.1010,Phase 1 / C1 - Stud Framing,5,5,2027-05-21,2027-05-27,CMH139 > Construction > Main Building - Building D > Phase 1 (ROMP01 & 03) > Phase 1 - Catcher C1
P1C1.1030,Phase 1 / C1 - Wall Electric & Fire Alarm Rough-in,2,2,2027-05-26,2027-05-27,CMH139 > Construction > Main Building - Building D > Phase 1 (ROMP01 & 03) > Phase 1 - Catcher C1
P1C1.1050,Phase 1 / C1 - Hang Drywall & Finish,5,5,2027-05-28,2027-06-04,CMH139 > Construction > Main Building - Building D > Phase 1 (ROMP01 & 03) > Phase 1 - Catcher C1
P1C1.1060,Phase 1 / C1 - Set USB,2,2,2027-06-02,2027-06-03,CMH139 > Construction > Main Building - Building D > Phase 1 (ROMP01 & 03) > Phase 1 - Catcher C1
P1C1.1140,Phase 1 / C1 - Set SCCS Setting for Breakers,1,1,2027-06-04,2027-06-04,CMH139 > Construction > Main Building - Building D > Phase 1 (ROMP01 & 03) > Phase 1 - Catcher C1
P1C1.1090,Phase 1 / C1 - Breaker Testing USB,5,5,2027-06-04,2027-06-10,CMH139 > Construction > Main Building - Building D > Phase 1 (ROMP01 & 03) > Phase 1 - Catcher C1
P1C1.1080,Phase 1 / C1 - Install Busway C1 & C2,5,5,2027-06-04,2027-06-10,CMH139 > Construction > Main Building - Building D > Phase 1 (ROMP01 & 03) > Phase 1 - Catcher C1
P1C1.1190,Phase 1 / C1 - Doors and Hardware,5,5,2027-06-07,2027-06-11,CMH139 > Construction > Main Building - Building D > Phase 1 (ROMP01 & 03) > Phase 1 - Catcher C1
P1C1.1070,Phase 1 / C1 - Prime & First Coat Paint,2,2,2027-06-07,2027-06-08,CMH139 > Construction > Main Building - Building D > Phase 1 (ROMP01 & 03) > Phase 1 - Catcher C1
P1C1.1110,Phase 1 / C1 - Install Split Systems & ERV,10,10,2027-06-09,2027-06-22,CMH139 > Construction > Main Building - Building D > Phase 1 (ROMP01 & 03) > Phase 1 - Catcher C1
P1C1.1100,Phase 1 / C1 - Set OFCI Electrical Panels,5,5,2027-06-09,2027-06-15,CMH139 > Construction > Main Building - Building D > Phase 1 (ROMP01 & 03) > Phase 1 - Catcher C1
P1C1.1130,Phase 1 / C1 - Manufacturer Inspection USB,1,1,2027-06-11,2027-06-11,CMH139 > Construction > Main Building - Building D > Phase 1 (ROMP01 & 03) > Phase 1 - Catcher C1
P1C1.1150,Phase 1 / C1 - Install Lighting,10,10,2027-06-16,2027-06-29,CMH139 > Construction > Main Building - Building D > Phase 1 (ROMP01 & 03) > Phase 1 - Catcher C1
P1C1.1160,Phase 1 / C1 - Terminate LV Electrical Panels,5,5,2027-07-07,2027-07-13,CMH139 > Construction > Main Building - Building D > Phase 1 (ROMP01 & 03) > Phase 1 - Catcher C1
P1C1.1180,Phase 1 / C1 - BMS System,10,10,2027-07-14,2027-07-27,CMH139 > Construction > Main Building - Building D > Phase 1 (ROMP01 & 03) > Phase 1 - Catcher C1
P1C1.1210,Phase 1 / C1 - LV Panelboards Energized,0,0,,2027-08-26,CMH139 > Construction > Main Building - Building D > Phase 1 (ROMP01 & 03) > Phase 1 - Catcher C1
P1C2.1220,Phase 1 / C2 - Intumescent Paint Structural Steel,4,4,2027-02-08,2027-02-11,CMH139 > Construction > Main Building - Building D > Phase 1 (ROMP01 & 03) > Phase 1 - Catcher C2
P1C2.1120,Phase 1 / C2 - Install AMCOP Panels,5,5,2027-04-13,2027-04-19,CMH139 > Construction > Main Building - Building D > Phase 1 (ROMP01 & 03) > Phase 1 - Catcher C2
P1C2.1030,Phase 1 / C2 - Wall Electric & Fire Alarm Rough-in,5,5,2027-04-26,2027-04-30,CMH139 > Construction > Main Building - Building D > Phase 1 (ROMP01 & 03) > Phase 1 - Catcher C2
P1C2.1010,Phase 1 / C2 - Stud Framing,4,4,2027-04-27,2027-04-30,CMH139 > Construction > Main Building - Building D > Phase 1 (ROMP01 & 03) > Phase 1 - Catcher C2
P1C2.1240,Phase 1 / C2 - Hang Drywall & Finish,6,6,2027-05-03,2027-05-10,CMH139 > Construction > Main Building - Building D > Phase 1 (ROMP01 & 03) > Phase 1 - Catcher C2
P1C2.1050,Phase 1 / C2 - Hang Drywall & Finish (One Side),6,6,2027-05-03,2027-05-10,CMH139 > Construction > Main Building - Building D > Phase 1 (ROMP01 & 03) > Phase 1 - Catcher C2
P1C2.1000,Phase 1 / C2 - Pull Lighting Control Wiring,7,7,2027-05-03,2027-05-11,CMH139 > Construction > Main Building - Building D > Phase 1 (ROMP01 & 03) > Phase 1 - Catcher C2
P1C2.1070,Phase 1 / C2 - Prime & First Coat Paint,1,1,2027-05-11,2027-05-11,CMH139 > Construction > Main Building - Building D > Phase 1 (ROMP01 & 03) > Phase 1 - Catcher C2
P1C2.1110,Phase 1 / C2 - Install Split Systems & ERV,10,10,2027-05-12,2027-05-25,CMH139 > Construction > Main Building - Building D > Phase 1 (ROMP01 & 03) > Phase 1 - Catcher C2
P1C2.1230,Phase 1 / C2 - Seismic Install,1,1,2027-05-21,2027-05-21,CMH139 > Construction > Main Building - Building D > Phase 1 (ROMP01 & 03) > Phase 1 - Catcher C2
P1C2.1020,Phase 1 / C2 - OSA Ductwork,3,3,2027-06-07,2027-06-09,CMH139 > Construction > Main Building - Building D > Phase 1 (ROMP01 & 03) > Phase 1 - Catcher C2
P1C2.1060,Phase 1 / C2 - Set USB,2,2,2027-06-10,2027-06-11,CMH139 > Construction > Main Building - Building D > Phase 1 (ROMP01 & 03) > Phase 1 - Catcher C2
P1C2.1140,Phase 1 / C2 - Set SCCS Setting for Breakers,1,1,2027-06-14,2027-06-14,CMH139 > Construction > Main Building - Building D > Phase 1 (ROMP01 & 03) > Phase 1 - Catcher C2
P1C2.1190,Phase 1 / C2 - Doors and Hardware,5,5,2027-06-14,2027-06-18,CMH139 > Construction > Main Building - Building D > Phase 1 (ROMP01 & 03) > Phase 1 - Catcher C2
P1C2.1090,Phase 1 / C2 - Breaker Testing USB,5,5,2027-06-14,2027-06-18,CMH139 > Construction > Main Building - Building D > Phase 1 (ROMP01 & 03) > Phase 1 - Catcher C2
P1C2.1100,Phase 1 / C2 - Set OFCI Electrical Panels,1,1,2027-06-14,2027-06-14,CMH139 > Construction > Main Building - Building D > Phase 1 (ROMP01 & 03) > Phase 1 - Catcher C2
P1C2.1080,Phase 1 / C2 - Install Busway C1 & C2,5,5,2027-06-14,2027-06-18,CMH139 > Construction > Main Building - Building D > Phase 1 (ROMP01 & 03) > Phase 1 - Catcher C2
P1C2.1150,Phase 1 / C2 - Install Lighting,10,10,2027-06-15,2027-06-28,CMH139 > Construction > Main Building - Building D > Phase 1 (ROMP01 & 03) > Phase 1 - Catcher C2
P1C2.1130,Phase 1 / C2 - Manufacturer Inspection USB,1,1,2027-06-21,2027-06-21,CMH139 > Construction > Main Building - Building D > Phase 1 (ROMP01 & 03) > Phase 1 - Catcher C2
P1C2.1160,Phase 1 / C2 - Terminate LV Electrical Panels,3,3,2027-07-07,2027-07-09,CMH139 > Construction > Main Building - Building D > Phase 1 (ROMP01 & 03) > Phase 1 - Catcher C2
P1C2.1180,Phase 1 / C2 - BMS System,10,10,2027-07-12,2027-07-23,CMH139 > Construction > Main Building - Building D > Phase 1 (ROMP01 & 03) > Phase 1 - Catcher C2
P1C2.1210,Phase 1 / C2 - LV Panelboards Energized,0,0,,2027-08-26,CMH139 > Construction > Main Building - Building D > Phase 1 (ROMP01 & 03) > Phase 1 - Catcher C2
P1CX.1020,Phase 1 / Cx - EC 3rd Party Busway Bus Plug Testing (L2),2,2,2027-06-10,2027-06-11,CMH139 > Construction > Main Building - Building D > Phase 1 (ROMP01 & 03) > Phase 1 - Cx
P1CX.1050,Phase 1 / Cx - EC 3rd Party Testing & Inspection USB (L2),3,3,2027-06-14,2027-06-16,CMH139 > Construction > Main Building - Building D > Phase 1 (ROMP01 & 03) > Phase 1 - Cx
P1CX.1180,Phase 1 / Cx - Tie In MOP C1,2,2,2027-06-14,2027-06-15,CMH139 > Construction > Main Building - Building D > Phase 1 (ROMP01 & 03) > Phase 1 - Cx
P1CX.2020,Phase 1 / Cx - Tie In MOP C2,2,2,2027-06-16,2027-06-17,CMH139 > Construction > Main Building - Building D > Phase 1 (ROMP01 & 03) > Phase 1 - Cx
P1CX.1140,Phase 1 / Cx - EC 3rd Party Busway C1 / C2 Testing,2,2,2027-06-21,2027-06-22,CMH139 > Construction > Main Building - Building D > Phase 1 (ROMP01 & 03) > Phase 1 - Cx
P1CX.1170,Phase 1 / Cx - EC Busway C1 / C2 L2 Cx Review,1,1,2027-06-23,2027-06-23,CMH139 > Construction > Main Building - Building D > Phase 1 (ROMP01 & 03) > Phase 1 - Cx
P1CX.1220,Phase 1 / Cx - EC Busway C1 L3 Cx,2,2,2027-06-24,2027-06-25,CMH139 > Construction > Main Building - Building D > Phase 1 (ROMP01 & 03) > Phase 1 - Cx
P1CX.1320,Phase 1 / Cx - AMCOP / BACOP Start Up & Cx,5,5,2027-06-25,2027-07-01,CMH139 > Construction > Main Building - Building D > Phase 1 (ROMP01 & 03) > Phase 1 - Cx
P1CX.2010,Phase 1 / Cx - EC Busway C2 L3 Cx,2,2,2027-06-28,2027-06-29,CMH139 > Construction > Main Building - Building D > Phase 1 (ROMP01 & 03) > Phase 1 - Cx
P1CX.1000,Phase 1 / Cx - EC 3rd Party LV Panelboard Testing (L2),3,3,2027-07-01,2027-07-06,CMH139 > Construction > Main Building - Building D > Phase 1 (ROMP01 & 03) > Phase 1 - Cx
P1CX.1100,Phase 1 / Cx - EC L2 Cx Review for MV Switchgear,1,1,2027-07-01,2027-07-01,CMH139 > Construction > Main Building - Building D > Phase 1 (ROMP01 & 03) > Phase 1 - Cx
P1CX.1080,Phase 1 / Cx - EC L2 CX Review for MV XFMRs,1,1,2027-07-02,2027-07-02,CMH139 > Construction > Main Building - Building D > Phase 1 (ROMP01 & 03) > Phase 1 - Cx
P1CX.1200,Phase 1 / Cx - Fuel System Cx,7,7,2027-07-02,2027-07-13,CMH139 > Construction > Main Building - Building D > Phase 1 (ROMP01 & 03) > Phase 1 - Cx
P1CX.1090,Phase 1 / Cx - EC L3 Cx for MV XFMRs,5,5,2027-07-06,2027-07-12,CMH139 > Construction > Main Building - Building D > Phase 1 (ROMP01 & 03) > Phase 1 - Cx
P1CX.1430,Phase 1 / Cx - Eaton XFMR Testing,3,3,2027-07-06,2027-07-08,CMH139 > Construction > Main Building - Building D > Phase 1 (ROMP01 & 03) > Phase 1 - Cx
P1CX.2000,"Phase 1 / Cx - Fire Alarm Programming, Pretest & Witness",2,2,2027-07-06,2027-07-07,CMH139 > Construction > Main Building - Building D > Phase 1 (ROMP01 & 03) > Phase 1 - Cx
P1CX.1130,Phase 1 / Cx - EC L3 Cx for MV,3,3,2027-07-09,2027-07-13,CMH139 > Construction > Main Building - Building D > Phase 1 (ROMP01 & 03) > Phase 1 - Cx
P1CX.1420,Phase 1 / Cx - Eaton DLB Programming & Test (FLORES),5,5,2027-07-09,2027-07-15,CMH139 > Construction > Main Building - Building D > Phase 1 (ROMP01 & 03) > Phase 1 - Cx
P1CX.1120,Phase 1 / Cx - Construction Power To Generator,3,3,2027-07-12,2027-07-14,CMH139 > Construction > Main Building - Building D > Phase 1 (ROMP01 & 03) > Phase 1 - Cx
P1CX.1160,Phase 1 / Cx - HUPPS Panelboards Energized,1,1,2027-07-14,2027-07-14,CMH139 > Construction > Main Building - Building D > Phase 1 (ROMP01 & 03) > Phase 1 - Cx
P1CX.1340,Phase 1 / Cx - Energize Control Network Arch,1,1,2027-07-15,2027-07-15,CMH139 > Construction > Main Building - Building D > Phase 1 (ROMP01 & 03) > Phase 1 - Cx
P1CX.1030,Phase 1 / Cx - CAT L2 Cx Generators,2,2,2027-07-15,2027-07-16,CMH139 > Construction > Main Building - Building D > Phase 1 (ROMP01 & 03) > Phase 1 - Cx
P1CX.1350,Phase 1 / Cx - Office HVAC / Mechanical Startup,5,5,2027-07-16,2027-07-22,CMH139 > Construction > Main Building - Building D > Phase 1 (ROMP01 & 03) > Phase 1 - Cx
P1CX.2050,Phase 1 / Cx - EPMS Point to Point (USB),4,4,2027-07-16,2027-07-21,CMH139 > Construction > Main Building - Building D > Phase 1 (ROMP01 & 03) > Phase 1 - Cx
P1CX.2070,Phase 1 / Cx - EPMS Point to Point (PDC),4,4,2027-07-19,2027-07-22,CMH139 > Construction > Main Building - Building D > Phase 1 (ROMP01 & 03) > Phase 1 - Cx
P1CX.2060,Phase 1 / Cx - BMS Point to Point (TAHUs),5,5,2027-07-28,2027-08-03,CMH139 > Construction > Main Building - Building D > Phase 1 (ROMP01 & 03) > Phase 1 - Cx
P1CX.1150,Phase 1 / Cx - EC L3 Cx USBs,2,2,2027-08-06,2027-08-09,CMH139 > Construction > Main Building - Building D > Phase 1 (ROMP01 & 03) > Phase 1 - Cx
P1CX.1250,Phase 1 / Cx - Vendor UPS Start Up & Cx,9,9,2027-08-10,2027-08-20,CMH139 > Construction > Main Building - Building D > Phase 1 (ROMP01 & 03) > Phase 1 - Cx
P1CX.1310,Phase 1 / Cx - ATS L3 Cx,1,1,2027-08-10,2027-08-10,CMH139 > Construction > Main Building - Building D > Phase 1 (ROMP01 & 03) > Phase 1 - Cx
P1CX.1210,Phase 1 / Cx - MC TAHU L2 Cx,5,5,2027-08-10,2027-08-16,CMH139 > Construction > Main Building - Building D > Phase 1 (ROMP01 & 03) > Phase 1 - Cx
P1CX.1440,Phase 1 / Cx - Eaton DLB Testing,2,2,2027-08-10,2027-08-11,CMH139 > Construction > Main Building - Building D > Phase 1 (ROMP01 & 03) > Phase 1 - Cx
OFCX.1400,Phase 1 / Cx - Admin VRF L2 Cx Review,2,2,2027-08-11,2027-08-12,CMH139 > Construction > Main Building - Building D > Phase 1 (ROMP01 & 03) > Phase 1 - Cx
P1CX.1370,Phase 1 / Cx - Energize MSDBs,1,1,2027-08-11,2027-08-11,CMH139 > Construction > Main Building - Building D > Phase 1 (ROMP01 & 03) > Phase 1 - Cx
OFCX.1220,Phase 1 / Cx - Admin VRF L3 Cx,5,5,2027-08-13,2027-08-19,CMH139 > Construction > Main Building - Building D > Phase 1 (ROMP01 & 03) > Phase 1 - Cx
P1CX.1410,Phase 1 / Cx - IW System L2 Cx,2,2,2027-08-23,2027-08-24,CMH139 > Construction > Main Building - Building D > Phase 1 (ROMP01 & 03) > Phase 1 - Cx
P1EX.1130,Phase 1 / Cx - Pull / Term / Test Fire Riser,5,5,2027-08-25,2027-08-31,CMH139 > Construction > Main Building - Building D > Phase 1 (ROMP01 & 03) > Phase 1 - Cx
P1CX.1400,Phase 1 / Cx - IW System L3 Cx,10,10,2027-08-25,2027-09-08,CMH139 > Construction > Main Building - Building D > Phase 1 (ROMP01 & 03) > Phase 1 - Cx
P1CX.1190,Phase 1 / Cx - EC L2 CX Review for LV Panelboard,2,2,2027-08-25,2027-08-26,CMH139 > Construction > Main Building - Building D > Phase 1 (ROMP01 & 03) > Phase 1 - Cx
P1CX.1040,Phase 1 / Cx - EC L2 Cx Review for Generator,1,1,2027-08-27,2027-08-27,CMH139 > Construction > Main Building - Building D > Phase 1 (ROMP01 & 03) > Phase 1 - Cx
P1CX.1260,Phase 1 / Cx - EC L3 Cx LV Panelboard,1,1,2027-08-27,2027-08-27,CMH139 > Construction > Main Building - Building D > Phase 1 (ROMP01 & 03) > Phase 1 - Cx
P1CX.1070,Phase 1 / Cx - EC L3 Cx Generators,3,3,2027-08-30,2027-09-01,CMH139 > Construction > Main Building - Building D > Phase 1 (ROMP01 & 03) > Phase 1 - Cx
P1CX.1060,Phase 1 / Cx - CAT L3 Cx Generators Testing,5,5,2027-08-30,2027-09-03,CMH139 > Construction > Main Building - Building D > Phase 1 (ROMP01 & 03) > Phase 1 - Cx
P1CX.1290,Phase 1 / Cx - Split System Startup & Commissioning,5,5,2027-08-30,2027-09-03,CMH139 > Construction > Main Building - Building D > Phase 1 (ROMP01 & 03) > Phase 1 - Cx
P1CX.1280,Phase 1 / Cx - ERV Startup & Commissioning,5,5,2027-08-30,2027-09-03,CMH139 > Construction > Main Building - Building D > Phase 1 (ROMP01 & 03) > Phase 1 - Cx
P1CX.1270,Phase 1 / Cx - EDH Startup & Commissioning,4,4,2027-08-30,2027-09-02,CMH139 > Construction > Main Building - Building D > Phase 1 (ROMP01 & 03) > Phase 1 - Cx
P1CX.1240,Phase 1 / Cx - Vendor TAHU L3 Cx,10,10,2027-09-09,2027-09-22,CMH139 > Construction > Main Building - Building D > Phase 1 (ROMP01 & 03) > Phase 1 - Cx
OFCX.1330,Phase 1 / Cx - Office Test & Balance,3,3,2027-09-13,2027-09-15,CMH139 > Construction > Main Building - Building D > Phase 1 (ROMP01 & 03) > Phase 1 - Cx
P1CX.1330,Phase 1 / Cx - Test & Balance,5,5,2027-09-23,2027-09-29,CMH139 > Construction > Main Building - Building D > Phase 1 (ROMP01 & 03) > Phase 1 - Cx
P1CX.1360,Phase 1 / Cx - Life Safety Walkthrough,1,1,2027-10-28,2027-10-28,CMH139 > Construction > Main Building - Building D > Phase 1 (ROMP01 & 03) > Phase 1 - Cx
P1CX.1380,Phase 1 / Cx - L4 / L5 Cx,18,18,2027-11-01,2027-11-24,CMH139 > Construction > Main Building - Building D > Phase 1 (ROMP01 & 03) > Phase 1 - Cx
P2EX.1030,Phase 2 / Gen Yard - Set Transformers,2,2,2027-04-15,2027-04-16,CMH139 > Construction > Main Building - Building D > Phase 2 (ROMP02 & 04) > Phase 2 - Gen Yard
P2EX.1050,"Phase 2 / Gen Yard - Pull, Term & Test MV through XFMRs",7,7,2027-04-19,2027-04-27,CMH139 > Construction > Main Building - Building D > Phase 2 (ROMP02 & 04) > Phase 2 - Gen Yard
P2EX.1100,Phase 2 / Gen Yard - Pull In FLORES Loop,5,5,2027-04-28,2027-05-04,CMH139 > Construction > Main Building - Building D > Phase 2 (ROMP02 & 04) > Phase 2 - Gen Yard
P2EX.1370,Phase 2 / Gen Yard - Install Fuel Piping,30,30,2027-05-20,2027-07-01,CMH139 > Construction > Main Building - Building D > Phase 2 (ROMP02 & 04) > Phase 2 - Gen Yard
P2EX.1380,Phase 2 / Gen Yard - Install Fuel System Control Conduit,10,10,2027-06-04,2027-06-17,CMH139 > Construction > Main Building - Building D > Phase 2 (ROMP02 & 04) > Phase 2 - Gen Yard
P2EX.1160,Phase 2 / Gen Yard - Pour Sidewalk,5,5,2027-06-14,2027-06-18,CMH139 > Construction > Main Building - Building D > Phase 2 (ROMP02 & 04) > Phase 2 - Gen Yard
P2EX.1060,Phase 2 / Gen Yard - Set Generators,2,2,2027-07-08,2027-07-09,CMH139 > Construction > Main Building - Building D > Phase 2 (ROMP02 & 04) > Phase 2 - Gen Yard
P2EX.1090,Phase 2 / Gen Yard - Set Exhaust Stack and Shroud,12,12,2027-07-12,2027-07-27,CMH139 > Construction > Main Building - Building D > Phase 2 (ROMP02 & 04) > Phase 2 - Gen Yard
P2EX.1040,Phase 2 / Gen Yard - Install Cable Bus Structure,5,5,2027-07-16,2027-07-22,CMH139 > Construction > Main Building - Building D > Phase 2 (ROMP02 & 04) > Phase 2 - Gen Yard
P2EX.1070,Phase 2 / Gen Yard - LV Cable Bus and Feeders - XFMRs to USBs,10,10,2027-07-23,2027-08-05,CMH139 > Construction > Main Building - Building D > Phase 2 (ROMP02 & 04) > Phase 2 - Gen Yard
P2EX.1140,Phase 2 / Gen Yard - Grounding / Lightning Protection,2,2,2027-07-28,2027-07-29,CMH139 > Construction > Main Building - Building D > Phase 2 (ROMP02 & 04) > Phase 2 - Gen Yard
P2EX.1110,Phase 2 / Gen Yard - Energize Electrical - Site To Phase,0,0,,2027-08-05,CMH139 > Construction > Main Building - Building D > Phase 2 (ROMP02 & 04) > Phase 2 - Gen Yard
P2EX.1130,Phase 2 / Gen Yard - LV Cable Bus and Feeders - Gens to USBs,15,15,2027-08-06,2027-08-26,CMH139 > Construction > Main Building - Building D > Phase 2 (ROMP02 & 04) > Phase 2 - Gen Yard
P2EX.1080,Phase 2 / Gen Yard - Install Generator Platforms,5,5,2027-08-09,2027-08-13,CMH139 > Construction > Main Building - Building D > Phase 2 (ROMP02 & 04) > Phase 2 - Gen Yard
P2EX.1120,Phase 2 / Gen Yard - Install Foundations & Fencing,4,4,2027-08-16,2027-08-19,CMH139 > Construction > Main Building - Building D > Phase 2 (ROMP02 & 04) > Phase 2 - Gen Yard
P2ER.1380,Phase 2 / Elec Rm - Layout,1,1,2027-04-14,2027-04-14,CMH139 > Construction > Main Building - Building D > Phase 2 (ROMP02 & 04) > Phase 2 - Electrical Room
P2ER.1620,Phase 2 / Elec Rm - Install DriClad,10,10,2027-04-15,2027-04-28,CMH139 > Construction > Main Building - Building D > Phase 2 (ROMP02 & 04) > Phase 2 - Electrical Room
P2ER.1000,Phase 2 / Elec Rm - Pull TAHU Feeders,5,5,2027-04-22,2027-04-28,CMH139 > Construction > Main Building - Building D > Phase 2 (ROMP02 & 04) > Phase 2 - Electrical Room
P2ER.1040,Phase 2 / Elec Rm - Wall Electric & Fire Alarm Rough-in,5,5,2027-04-28,2027-05-04,CMH139 > Construction > Main Building - Building D > Phase 2 (ROMP02 & 04) > Phase 2 - Electrical Room
P2ER.1020,Phase 2 / Elec Rm - Stud Framing,4,4,2027-04-29,2027-05-04,CMH139 > Construction > Main Building - Building D > Phase 2 (ROMP02 & 04) > Phase 2 - Electrical Room
P2ER.1010,Phase 2 / Elec Rm - Pull Lighting Control Wiring,7,7,2027-04-29,2027-05-07,CMH139 > Construction > Main Building - Building D > Phase 2 (ROMP02 & 04) > Phase 2 - Electrical Room
P2ER.1050,Phase 2 / Elec Rm - Hangers,3,3,2027-05-05,2027-05-07,CMH139 > Construction > Main Building - Building D > Phase 2 (ROMP02 & 04) > Phase 2 - Electrical Room
P2ER.1400,Phase 2 / Elec Rm - Install OH Conduit / Mechanical Feeders,5,5,2027-05-10,2027-05-14,CMH139 > Construction > Main Building - Building D > Phase 2 (ROMP02 & 04) > Phase 2 - Electrical Room
P2ER.1060,Phase 2 / Elec Rm - Hang Drywall & Finish,5,5,2027-06-01,2027-06-07,CMH139 > Construction > Main Building - Building D > Phase 2 (ROMP02 & 04) > Phase 2 - Electrical Room
P2ER.1390,Phase 2 / Elec Rm - Fire Protection Rough In,3,3,2027-06-01,2027-06-03,CMH139 > Construction > Main Building - Building D > Phase 2 (ROMP02 & 04) > Phase 2 - Electrical Room
P2ER.1590,Phase 2 / Elec Rm - Pull / Term HUPPs,2,2,2027-06-04,2027-06-07,CMH139 > Construction > Main Building - Building D > Phase 2 (ROMP02 & 04) > Phase 2 - Electrical Room
P2ER.1080,Phase 2 / Elec Rm - Prime & First Coat Paint,1,1,2027-06-08,2027-06-08,CMH139 > Construction > Main Building - Building D > Phase 2 (ROMP02 & 04) > Phase 2 - Electrical Room
P2ER.1120,Phase 2 / Elec Rm - Install Split Systems & ERV,10,10,2027-06-09,2027-06-22,CMH139 > Construction > Main Building - Building D > Phase 2 (ROMP02 & 04) > Phase 2 - Electrical Room
P2ER.1410,Phase 2 / Elec Rm - Set USB (LV Gear),5,5,2027-06-15,2027-06-21,CMH139 > Construction > Main Building - Building D > Phase 2 (ROMP02 & 04) > Phase 2 - Electrical Room
P2ER.1140,Phase 2 / Elec Rm - Install AMCOP Panels,1,1,2027-06-22,2027-06-22,CMH139 > Construction > Main Building - Building D > Phase 2 (ROMP02 & 04) > Phase 2 - Electrical Room
P2ER.1430,Phase 2 / Elec Rm - Doors & Hardware,5,5,2027-06-22,2027-06-28,CMH139 > Construction > Main Building - Building D > Phase 2 (ROMP02 & 04) > Phase 2 - Electrical Room
P2ER.1440,Phase 2 / Elec Rm - Breaker Testing USB,5,5,2027-06-22,2027-06-28,CMH139 > Construction > Main Building - Building D > Phase 2 (ROMP02 & 04) > Phase 2 - Electrical Room
P2ER.1420,Phase 2 / Elec Rm - Fill Buck Out,4,4,2027-06-22,2027-06-25,CMH139 > Construction > Main Building - Building D > Phase 2 (ROMP02 & 04) > Phase 2 - Electrical Room
P2ER.1450,Phase 2 / Elec Rm - Install Cable Tray,7,7,2027-06-22,2027-06-30,CMH139 > Construction > Main Building - Building D > Phase 2 (ROMP02 & 04) > Phase 2 - Electrical Room
P2ER.1210,Phase 2 / Elec Rm - Set SCCS Setting for Breakers,1,1,2027-06-29,2027-06-29,CMH139 > Construction > Main Building - Building D > Phase 2 (ROMP02 & 04) > Phase 2 - Electrical Room
P2ER.1110,Phase 2 / Elec Rm - Set OFCI Electrical Panels,5,5,2027-07-01,2027-07-08,CMH139 > Construction > Main Building - Building D > Phase 2 (ROMP02 & 04) > Phase 2 - Electrical Room
P2ER.1470,Phase 2 / Elec Rm - Fire Alarm / VESDA,5,5,2027-07-01,2027-07-08,CMH139 > Construction > Main Building - Building D > Phase 2 (ROMP02 & 04) > Phase 2 - Electrical Room
P2ER.1470,Phase 2 / Elec Rm - Fire Alarm / VESDA (duplicate line),5,5,2027-07-01,2027-07-08,CMH139 > Construction > Main Building - Building D > Phase 2 (ROMP02 & 04) > Phase 2 - Electrical Room
P2ER.1490,Phase 2 / Elec Rm - Install Bus Duct,7,7,2027-07-01,2027-07-12,CMH139 > Construction > Main Building - Building D > Phase 2 (ROMP02 & 04) > Phase 2 - Electrical Room
P2ER.1600,Phase 2 / Elec Rm - Install Control Conduit,5,5,2027-07-01,2027-07-08,CMH139 > Construction > Main Building - Building D > Phase 2 (ROMP02 & 04) > Phase 2 - Electrical Room
P2ER.1500,Phase 2 / Elec Rm - Install Electrical Raceways (Branch Conduits),10,10,2027-07-09,2027-07-22,CMH139 > Construction > Main Building - Building D > Phase 2 (ROMP02 & 04) > Phase 2 - Electrical Room
P2ER.1610,Phase 2 / Elec Rm - Install UPS,4,4,2027-07-09,2027-07-14,CMH139 > Construction > Main Building - Building D > Phase 2 (ROMP02 & 04) > Phase 2 - Electrical Room
P2ER.1160,Phase 2 / Elec Rm - Terminate LV Electrical Panels,5,5,2027-07-14,2027-07-20,CMH139 > Construction > Main Building - Building D > Phase 2 (ROMP02 & 04) > Phase 2 - Electrical Room
P2ER.1530,Phase 2 / Elec Rm - Pull & Term DLB Fiber,5,5,2027-07-19,2027-07-23,CMH139 > Construction > Main Building - Building D > Phase 2 (ROMP02 & 04) > Phase 2 - Electrical Room
P2ER.1385,Phase 2 / Elec Rm - Pull PDC Feeders,5,5,2027-07-20,2027-07-26,CMH139 > Construction > Main Building - Building D > Phase 2 (ROMP02 & 04) > Phase 2 - Electrical Room
P2ER.1460,Phase 2 / Elec Rm - Cable Bus Termination,4,4,2027-07-23,2027-07-28,CMH139 > Construction > Main Building - Building D > Phase 2 (ROMP02 & 04) > Phase 2 - Electrical Room
P2ER.1520,Phase 2 / Elec Rm - Manufacturer Inspection USB,1,1,2027-07-26,2027-07-26,CMH139 > Construction > Main Building - Building D > Phase 2 (ROMP02 & 04) > Phase 2 - Electrical Room
P2ER.1540,Phase 2 / Elec Rm - Seismic Install,1,1,2027-07-27,2027-07-27,CMH139 > Construction > Main Building - Building D > Phase 2 (ROMP02 & 04) > Phase 2 - Electrical Room
P2ER.1570,Phase 2 / Elec Rm - Test & Terminate PDC Feeders,5,5,2027-07-27,2027-08-02,CMH139 > Construction > Main Building - Building D > Phase 2 (ROMP02 & 04) > Phase 2 - Electrical Room
P2ER.1550,Phase 2 / Elec Rm - Egress Lighting,3,3,2027-07-27,2027-07-29,CMH139 > Construction > Main Building - Building D > Phase 2 (ROMP02 & 04) > Phase 2 - Electrical Room
P2ER.1560,Phase 2 / Elec Rm - Trade Repair,3,3,2027-07-27,2027-07-29,CMH139 > Construction > Main Building - Building D > Phase 2 (ROMP02 & 04) > Phase 2 - Electrical Room
P2ER.1310,Phase 2 / Elec Rm - Install Lighting,3,3,2027-07-27,2027-07-29,CMH139 > Construction > Main Building - Building D > Phase 2 (ROMP02 & 04) > Phase 2 - Electrical Room
P2ER.1580,Phase 2 / Elec Rm - Final Paint / Touch Up,1,1,2027-07-30,2027-07-30,CMH139 > Construction > Main Building - Building D > Phase 2 (ROMP02 & 04) > Phase 2 - Electrical Room
P2ER.1480,Phase 2 / Elec Rm - Install CRAC Unit & Exhaust Fan,5,5,2027-09-15,2027-09-21,CMH139 > Construction > Main Building - Building D > Phase 2 (ROMP02 & 04) > Phase 2 - Electrical Room
P2ER.1510,Phase 2 / Elec Rm - OA Reference Piping,5,5,2027-09-22,2027-09-28,CMH139 > Construction > Main Building - Building D > Phase 2 (ROMP02 & 04) > Phase 2 - Electrical Room
P2ER.1180,Phase 2 / Elec Rm - BMS System,10,10,2027-09-29,2027-10-12,CMH139 > Construction > Main Building - Building D > Phase 2 (ROMP02 & 04) > Phase 2 - Electrical Room
P2ER.1290,Phase 2 / Elec Rm - Energize BMS Panels,1,1,2027-10-13,2027-10-13,CMH139 > Construction > Main Building - Building D > Phase 2 (ROMP02 & 04) > Phase 2 - Electrical Room
P2RP.1750,Phase 2 / Data Hall - Fire Protection Rough In,5,5,2027-03-26,2027-04-01,CMH139 > Construction > Main Building - Building D > Phase 2 (ROMP02 & 04) > Phase 2 - Data Hall
P2RP.1040,Phase 2 / Data Hall - Stud Framing (Data Hall / Elec Rm Wall),5,5,2027-04-29,2027-05-05,CMH139 > Construction > Main Building - Building D > Phase 2 (ROMP02 & 04) > Phase 2 - Data Hall
P2RP.1590,Phase 2 / Data Hall - Install Temp Wall Bulkhead,5,5,2027-04-29,2027-05-05,CMH139 > Construction > Main Building - Building D > Phase 2 (ROMP02 & 04) > Phase 2 - Data Hall
P2RP.1700,Phase 2 / Data Hall - Stud Framing (Equipment Platform),5,5,2027-05-05,2027-05-11,CMH139 > Construction > Main Building - Building D > Phase 2 (ROMP02 & 04) > Phase 2 - Data Hall
P2RP.1720,Phase 2 / Data Hall - Above Ceiling Cable Tray,3,3,2027-05-06,2027-05-10,CMH139 > Construction > Main Building - Building D > Phase 2 (ROMP02 & 04) > Phase 2 - Data Hall
P2RP.1730,Phase 2 / Data Hall - Seismic Install,2,2,2027-05-11,2027-05-12,CMH139 > Construction > Main Building - Building D > Phase 2 (ROMP02 & 04) > Phase 2 - Data Hall
P2RP.1600,Phase 2 / Data Hall - OH Electric Rough In,5,5,2027-05-12,2027-05-18,CMH139 > Construction > Main Building - Building D > Phase 2 (ROMP02 & 04) > Phase 2 - Data Hall
P2RP.1100,Phase 2 / Data Hall - Wall Elec & FA Rough-In (IMP),4,4,2027-06-01,2027-06-04,CMH139 > Construction > Main Building - Building D > Phase 2 (ROMP02 & 04) > Phase 2 - Data Hall
P2RP.1710,Phase 2 / Data Hall - Wall Elec & FA Rough-In (Data Hall / Elec Rm),4,4,2027-06-01,2027-06-04,CMH139 > Construction > Main Building - Building D > Phase 2 (ROMP02 & 04) > Phase 2 - Data Hall
P2RP.1610,Phase 2 / Data Hall - In Wall Rough In Inspection (Electrical / FA),1,1,2027-06-07,2027-06-07,CMH139 > Construction > Main Building - Building D > Phase 2 (ROMP02 & 04) > Phase 2 - Data Hall
P2RP.1350,Phase 2 / Data Hall - Hang Drywall & Finish (Data Hall / Elec Rm),5,5,2027-06-08,2027-06-14,CMH139 > Construction > Main Building - Building D > Phase 2 (ROMP02 & 04) > Phase 2 - Data Hall
P2RP.1370,Phase 2 / Data Hall - Prime & First Coat Paint,3,3,2027-06-15,2027-06-17,CMH139 > Construction > Main Building - Building D > Phase 2 (ROMP02 & 04) > Phase 2 - Data Hall
P2RP.1050,Phase 2 / Data Hall - Fire Protection Drops,5,5,2027-06-18,2027-06-24,CMH139 > Construction > Main Building - Building D > Phase 2 (ROMP02 & 04) > Phase 2 - Data Hall
P2RP.1230,Phase 2 / Data Hall - Install Backdraft Dampers,5,5,2027-06-18,2027-06-24,CMH139 > Construction > Main Building - Building D > Phase 2 (ROMP02 & 04) > Phase 2 - Data Hall
P2RP.1020,Phase 2 / Data Hall - MARS Racking,7,7,2027-06-23,2027-07-01,CMH139 > Construction > Main Building - Building D > Phase 2 (ROMP02 & 04) > Phase 2 - Data Hall
P2RP.1200,Phase 2 / Data Hall - Temp Wall Install,5,5,2027-07-02,2027-07-09,CMH139 > Construction > Main Building - Building D > Phase 2 (ROMP02 & 04) > Phase 2 - Data Hall
P2RP.1060,Phase 2 / Data Hall - Upper Polycarbonate Panels and Cold Aisle Cable Tray Arms,3,3,2027-07-02,2027-07-07,CMH139 > Construction > Main Building - Building D > Phase 2 (ROMP02 & 04) > Phase 2 - Data Hall
P2RP.1220,Phase 2 / Data Hall - Install Lighting Wiring & Fixtures,5,5,2027-07-02,2027-07-09,CMH139 > Construction > Main Building - Building D > Phase 2 (ROMP02 & 04) > Phase 2 - Data Hall
P2RP.1420,Phase 2 / Data Hall - Power PDC Whips,10,10,2027-07-02,2027-07-16,CMH139 > Construction > Main Building - Building D > Phase 2 (ROMP02 & 04) > Phase 2 - Data Hall
P2RP.1440,Phase 2 / Data Hall - Install Control Dampers (PRD),5,5,2027-07-02,2027-07-09,CMH139 > Construction > Main Building - Building D > Phase 2 (ROMP02 & 04) > Phase 2 - Data Hall
P2RP.1620,Phase 2 / Data Hall - ACT Grid Corridors,4,4,2027-07-02,2027-07-08,CMH139 > Construction > Main Building - Building D > Phase 2 (ROMP02 & 04) > Phase 2 - Data Hall
P2RP.1630,Phase 2 / Data Hall - Install Snubbers,5,5,2027-07-02,2027-07-09,CMH139 > Construction > Main Building - Building D > Phase 2 (ROMP02 & 04) > Phase 2 - Data Hall
P2RP.1030,Phase 2 / Data Hall - PDC Feeders Drops & Supports,10,10,2027-07-02,2027-07-16,CMH139 > Construction > Main Building - Building D > Phase 2 (ROMP02 & 04) > Phase 2 - Data Hall
P2RP.1210,Phase 2 / Data Hall - Fire Alarm VESDA,10,10,2027-07-07,2027-07-20,CMH139 > Construction > Main Building - Building D > Phase 2 (ROMP02 & 04) > Phase 2 - Data Hall
P2RP.1640,Phase 2 / Data Hall - ACT Grid Cold Aisles,5,5,2027-07-07,2027-07-13,CMH139 > Construction > Main Building - Building D > Phase 2 (ROMP02 & 04) > Phase 2 - Data Hall
P2RP.1260,Phase 2 / Data Hall - Perfect Position,4,4,2027-07-08,2027-07-13,CMH139 > Construction > Main Building - Building D > Phase 2 (ROMP02 & 04) > Phase 2 - Data Hall
P2RP.1250,Phase 2 / Data Hall - Doors and Hardware,2,2,2027-07-12,2027-07-13,CMH139 > Construction > Main Building - Building D > Phase 2 (ROMP02 & 04) > Phase 2 - Data Hall
P2RP.1650,Phase 2 / Data Hall - Install Control Wiring,5,5,2027-07-12,2027-07-16,CMH139 > Construction > Main Building - Building D > Phase 2 (ROMP02 & 04) > Phase 2 - Data Hall
P2RP.1280,Phase 2 / Data Hall - Install Fire Protection Heads Avenue,2,2,2027-07-14,2027-07-15,CMH139 > Construction > Main Building - Building D > Phase 2 (ROMP02 & 04) > Phase 2 - Data Hall
P2RP.1160,Phase 2 / Data Hall - Cold Aisle Basket/Cable Tray,3,3,2027-07-14,2027-07-16,CMH139 > Construction > Main Building - Building D > Phase 2 (ROMP02 & 04) > Phase 2 - Data Hall
P2RP.1400,Phase 2 / Data Hall - Avenue Basket/Cable Tray (South),2,2,2027-07-14,2027-07-15,CMH139 > Construction > Main Building - Building D > Phase 2 (ROMP02 & 04) > Phase 2 - Data Hall
P2RP.1660,Phase 2 / Data Hall - ACT Borders For Corridors,1,1,2027-07-14,2027-07-14,CMH139 > Construction > Main Building - Building D > Phase 2 (ROMP02 & 04) > Phase 2 - Data Hall
P2RP.1740,Phase 2 / Data Hall - Install Fire Protection Heads Cold Aisle,2,2,2027-07-14,2027-07-15,CMH139 > Construction > Main Building - Building D > Phase 2 (ROMP02 & 04) > Phase 2 - Data Hall
P2RP.1670,Phase 2 / Data Hall - ACT Borders For Cold Aisles,1,1,2027-07-15,2027-07-15,CMH139 > Construction > Main Building - Building D > Phase 2 (ROMP02 & 04) > Phase 2 - Data Hall
P2RP.1290,Phase 2 / Data Hall - Avenue Basket/Cable Tray (North),2,2,2027-07-16,2027-07-19,CMH139 > Construction > Main Building - Building D > Phase 2 (ROMP02 & 04) > Phase 2 - Data Hall
P2RP.1310,Phase 2 / Data Hall - Structural Overhead Inspection (Avenue),1,1,2027-07-16,2027-07-16,CMH139 > Construction > Main Building - Building D > Phase 2 (ROMP02 & 04) > Phase 2 - Data Hall
P2RP.1690,Phase 2 / Data Hall - ACT Remaining Tile Drops Post Inspection,3,3,2027-07-19,2027-07-21,CMH139 > Construction > Main Building - Building D > Phase 2 (ROMP02 & 04) > Phase 2 - Data Hall
P2RP.1680,Phase 2 / Data Hall - Touch Up Paint,4,4,2027-07-19,2027-07-22,CMH139 > Construction > Main Building - Building D > Phase 2 (ROMP02 & 04) > Phase 2 - Data Hall
P2RP.1430,Phase 2 / Data Hall - CAT6 Cable Install,3,3,2027-07-20,2027-07-22,CMH139 > Construction > Main Building - Building D > Phase 2 (ROMP02 & 04) > Phase 2 - Data Hall
P2RP.1080,Phase 2 / Data Hall - Set PDC Cabinets,3,3,2027-07-22,2027-07-26,CMH139 > Construction > Main Building - Building D > Phase 2 (ROMP02 & 04) > Phase 2 - Data Hall
P2RP.1120,Phase 2 / Data Hall - EPMS,15,15,2027-07-27,2027-08-16,CMH139 > Construction > Main Building - Building D > Phase 2 (ROMP02 & 04) > Phase 2 - Data Hall
P2RP.1110,Phase 2 / Data Hall - BMS,15,15,2027-07-27,2027-08-16,CMH139 > Construction > Main Building - Building D > Phase 2 (ROMP02 & 04) > Phase 2 - Data Hall
P2RP.1270,Phase 2 / Data Hall - PDC Feeders Test & Terminate,10,10,2027-07-27,2027-08-09,CMH139 > Construction > Main Building - Building D > Phase 2 (ROMP02 & 04) > Phase 2 - Data Hall
P2RP.1180,Phase 2 / Data Hall - Lower Polycarbonate Panels,5,5,2027-08-17,2027-08-23,CMH139 > Construction > Main Building - Building D > Phase 2 (ROMP02 & 04) > Phase 2 - Data Hall
P2RP.1070,Phase 2 / Data Hall - NEA Finalization,33,33,2027-10-12,2027-11-29,CMH139 > Construction > Main Building - Building D > Phase 2 (ROMP02 & 04) > Phase 2 - Data Hall
P2RP.1090,Phase 2 / Data Hall - H2C Readiness Coordination,14,14,2027-11-30,2027-12-17,CMH139 > Construction > Main Building - Building D > Phase 2 (ROMP02 & 04) > Phase 2 - Data Hall
P2DG.1270,Phase 2 / TAHU - Fire Protection Rough In,5,5,2027-03-19,2027-03-25,CMH139 > Construction > Main Building - Building D > Phase 2 (ROMP02 & 04) > Phase 2 - TAHU Gallery
P2DG.1200,Phase 2 / TAHU - Seismic Install,2,2,2027-06-01,2027-06-02,CMH139 > Construction > Main Building - Building D > Phase 2 (ROMP02 & 04) > Phase 2 - TAHU Gallery
P2DG.1100,Phase 2 / TAHU - Sound Attenuator,10,10,2027-06-01,2027-06-14,CMH139 > Construction > Main Building - Building D > Phase 2 (ROMP02 & 04) > Phase 2 - TAHU Gallery
P2DG.1250,Phase 2 / TAHU - Hang Outside Stairwell / Lobby Drywall,4,4,2027-06-01,2027-06-04,CMH139 > Construction > Main Building - Building D > Phase 2 (ROMP02 & 04) > Phase 2 - TAHU Gallery
P2DG.1260,Phase 2 / TAHU - Install CFMF IMP Support,10,10,2027-06-01,2027-06-14,CMH139 > Construction > Main Building - Building D > Phase 2 (ROMP02 & 04) > Phase 2 - TAHU Gallery
P2DG.1170,Phase 2 / TAHU - Install IMP Panels,6,6,2027-06-15,2027-06-22,CMH139 > Construction > Main Building - Building D > Phase 2 (ROMP02 & 04) > Phase 2 - TAHU Gallery
P2DG.1050,Phase 2 / TAHU - Fire Alarm (VESDA),5,5,2027-06-23,2027-06-29,CMH139 > Construction > Main Building - Building D > Phase 2 (ROMP02 & 04) > Phase 2 - TAHU Gallery
P2DG.1080,Phase 2 / TAHU - Prime & Paint Drywall,3,3,2027-06-23,2027-06-25,CMH139 > Construction > Main Building - Building D > Phase 2 (ROMP02 & 04) > Phase 2 - TAHU Gallery
P2DG.1010,Phase 2 / TAHU - BMS Controls Rough In,10,10,2027-06-23,2027-07-07,CMH139 > Construction > Main Building - Building D > Phase 2 (ROMP02 & 04) > Phase 2 - TAHU Gallery
P2DG.1030,Phase 2 / TAHU - Wall Elec & Fire Alarm Rough-In,5,5,2027-06-23,2027-06-29,CMH139 > Construction > Main Building - Building D > Phase 2 (ROMP02 & 04) > Phase 2 - TAHU Gallery
P2DG.1130,Phase 2 / TAHU - Control Dampers,5,5,2027-06-28,2027-07-02,CMH139 > Construction > Main Building - Building D > Phase 2 (ROMP02 & 04) > Phase 2 - TAHU Gallery
P2DG.1110,Phase 2 / TAHU - Pull & Terminate Fire Alarm Cable,5,5,2027-06-30,2027-07-07,CMH139 > Construction > Main Building - Building D > Phase 2 (ROMP02 & 04) > Phase 2 - TAHU Gallery
P2DG.1070,Phase 2 / TAHU - Set TAHUs,2,2,2027-07-08,2027-07-09,CMH139 > Construction > Main Building - Building D > Phase 2 (ROMP02 & 04) > Phase 2 - TAHU Gallery
P2DG.1140,Phase 2 / TAHU - Doors and Hardware,3,3,2027-07-12,2027-07-14,CMH139 > Construction > Main Building - Building D > Phase 2 (ROMP02 & 04) > Phase 2 - TAHU Gallery
P2DG.1150,Phase 2 / TAHU - Lighting,5,5,2027-07-12,2027-07-16,CMH139 > Construction > Main Building - Building D > Phase 2 (ROMP02 & 04) > Phase 2 - TAHU Gallery
P2DG.1220,Phase 2 / TAHU - IW Supply Piping at TAHUs,10,10,2027-07-12,2027-07-23,CMH139 > Construction > Main Building - Building D > Phase 2 (ROMP02 & 04) > Phase 2 - TAHU Gallery
P2DG.1180,Phase 2 / TAHU - TAHU Trim,10,10,2027-07-12,2027-07-23,CMH139 > Construction > Main Building - Building D > Phase 2 (ROMP02 & 04) > Phase 2 - TAHU Gallery
P2DG.1190,Phase 2 / TAHU - Paint Doors & Frames,2,2,2027-07-15,2027-07-16,CMH139 > Construction > Main Building - Building D > Phase 2 (ROMP02 & 04) > Phase 2 - TAHU Gallery
P2DG.1230,Phase 2 / TAHU - Tie In TAHUs,10,10,2027-07-26,2027-08-06,CMH139 > Construction > Main Building - Building D > Phase 2 (ROMP02 & 04) > Phase 2 - TAHU Gallery
P2DG.1020,Phase 2 / TAHU - BMS Tie In,2,2,2027-08-05,2027-08-06,CMH139 > Construction > Main Building - Building D > Phase 2 (ROMP02 & 04) > Phase 2 - TAHU Gallery
P2DG.1120,Phase 2 / TAHU - IW Drain Piping at TAHUs,5,5,2027-08-09,2027-08-13,CMH139 > Construction > Main Building - Building D > Phase 2 (ROMP02 & 04) > Phase 2 - TAHU Gallery
P2DG.1240,Phase 2 / TAHU - Terminate Power To TAHUs,3,3,2027-08-16,2027-08-18,CMH139 > Construction > Main Building - Building D > Phase 2 (ROMP02 & 04) > Phase 2 - TAHU Gallery
P2CX.1110,Phase 2 / Cx - EC L2 Cx Review for MV Switchgear,1,1,2027-04-28,2027-04-28,CMH139 > Construction > Main Building - Building D > Phase 2 (ROMP02 & 04) > Phase 2 - Cx
P2CX.1080,Phase 2 / Cx - EC L2 Cx Review for MV XFMRs,1,1,2027-04-29,2027-04-29,CMH139 > Construction > Main Building - Building D > Phase 2 (ROMP02 & 04) > Phase 2 - Cx
P2CX.1090,Phase 2 / Cx - EC L3 Cx for MV XFMRs,5,5,2027-04-30,2027-05-06,CMH139 > Construction > Main Building - Building D > Phase 2 (ROMP02 & 04) > Phase 2 - Cx
P2CX.1370,Phase 2 / Cx - Eaton XFMR Testing,3,3,2027-04-30,2027-05-04,CMH139 > Construction > Main Building - Building D > Phase 2 (ROMP02 & 04) > Phase 2 - Cx
P2CX.1130,Phase 2 / Cx - EC L3 Cx for MV,3,3,2027-05-05,2027-05-07,CMH139 > Construction > Main Building - Building D > Phase 2 (ROMP02 & 04) > Phase 2 - Cx
P2CX.1120,Phase 2 / Cx - EC 3rd Party Testing & Inspection USB (L2),3,3,2027-06-22,2027-06-24,CMH139 > Construction > Main Building - Building D > Phase 2 (ROMP02 & 04) > Phase 2 - Cx
P2CX.1200,Phase 2 / Cx - Fuel System Cx,7,7,2027-07-02,2027-07-13,CMH139 > Construction > Main Building - Building D > Phase 2 (ROMP02 & 04) > Phase 2 - Cx
P2CX.1160,Phase 2 / Cx - HUPPS Panelboards Energized,1,1,2027-07-09,2027-07-09,CMH139 > Construction > Main Building - Building D > Phase 2 (ROMP02 & 04) > Phase 2 - Cx
P2CX.1000,Phase 2 / Cx - EC 3rd Party LV Panelboard Testing (L2),3,3,2027-07-09,2027-07-13,CMH139 > Construction > Main Building - Building D > Phase 2 (ROMP02 & 04) > Phase 2 - Cx
P2CX.1320,Phase 2 / Cx - AMCOP / BACOP Start Up & Cx,5,5,2027-07-09,2027-07-15,CMH139 > Construction > Main Building - Building D > Phase 2 (ROMP02 & 04) > Phase 2 - Cx
P2CX.1100,Phase 2 / Cx - Construction Power To Generator,3,3,2027-07-12,2027-07-14,CMH139 > Construction > Main Building - Building D > Phase 2 (ROMP02 & 04) > Phase 2 - Cx
P2CX.1380,Phase 2 / Cx - Energize Control Network Arch,1,1,2027-07-12,2027-07-12,CMH139 > Construction > Main Building - Building D > Phase 2 (ROMP02 & 04) > Phase 2 - Cx
P2CX.1020,Phase 2 / Cx - EC 3rd Party Busway Bus Plug Testing (L2),2,2,2027-07-13,2027-07-14,CMH139 > Construction > Main Building - Building D > Phase 2 (ROMP02 & 04) > Phase 2 - Cx
P2CX.1340,Phase 2 / Cx - EPMS Point to Point (USB),4,4,2027-07-13,2027-07-16,CMH139 > Construction > Main Building - Building D > Phase 2 (ROMP02 & 04) > Phase 2 - Cx
P2CX.1030,Phase 2 / Cx - CAT L2 Cx Generators,2,2,2027-07-15,2027-07-16,CMH139 > Construction > Main Building - Building D > Phase 2 (ROMP02 & 04) > Phase 2 - Cx
P2CX.2030,Phase 2 / Cx - Tie In MOP C1,2,2,2027-07-15,2027-07-16,CMH139 > Construction > Main Building - Building D > Phase 2 (ROMP02 & 04) > Phase 2 - Cx
P2CX.2040,Phase 2 / Cx - Tie In MOP C2,2,2,2027-07-19,2027-07-20,CMH139 > Construction > Main Building - Building D > Phase 2 (ROMP02 & 04) > Phase 2 - Cx
P2CX.1140,Phase 2 / Cx - EC 3rd Party Busway C1 / C2 Testing,2,2,2027-07-21,2027-07-22,CMH139 > Construction > Main Building - Building D > Phase 2 (ROMP02 & 04) > Phase 2 - Cx
P2CX.1190,Phase 2 / Cx - EC L2 Cx Review for LV Panelboard,2,2,2027-07-21,2027-07-22,CMH139 > Construction > Main Building - Building D > Phase 2 (ROMP02 & 04) > Phase 2 - Cx
P2CX.2010,Phase 2 / Cx - Fire Alarm Programming & Pretest,2,2,2027-07-21,2027-07-22,CMH139 > Construction > Main Building - Building D > Phase 2 (ROMP02 & 04) > Phase 2 - Cx
P2CX.1260,Phase 2 / Cx - EC L3 Cx LV Panelboard,1,1,2027-07-23,2027-07-23,CMH139 > Construction > Main Building - Building D > Phase 2 (ROMP02 & 04) > Phase 2 - Cx
P2CX.1170,Phase 2 / Cx - EC Busway C1 / C2 L2 Cx Review,1,1,2027-07-23,2027-07-23,CMH139 > Construction > Main Building - Building D > Phase 2 (ROMP02 & 04) > Phase 2 - Cx
P2CX.1220,Phase 2 / Cx - EC Busway C1 L3 Cx,2,2,2027-07-26,2027-07-27,CMH139 > Construction > Main Building - Building D > Phase 2 (ROMP02 & 04) > Phase 2 - Cx
P2CX.1010,Phase 2 / Cx - Eaton DLB Programming & Test (FLORES),5,5,2027-07-26,2027-07-30,CMH139 > Construction > Main Building - Building D > Phase 2 (ROMP02 & 04) > Phase 2 - Cx
P2CX.2020,Phase 2 / Cx - EC Busway C2 L3 Cx,2,2,2027-07-28,2027-07-29,CMH139 > Construction > Main Building - Building D > Phase 2 (ROMP02 & 04) > Phase 2 - Cx
P2MS.180,Phase 2 / Cx - Life Safety Walkthrough,1,1,2027-07-30,2027-07-30,CMH139 > Construction > Main Building - Building D > Phase 2 (ROMP02 & 04) > Phase 2 - Cx
P2CX.1350,Phase 2 / Cx - EPMS Point to Point (PDC),4,4,2027-08-03,2027-08-06,CMH139 > Construction > Main Building - Building D > Phase 2 (ROMP02 & 04) > Phase 2 - Cx
P2CX.1150,Phase 2 / Cx - EC L3 Cx USBs,2,2,2027-08-06,2027-08-09,CMH139 > Construction > Main Building - Building D > Phase 2 (ROMP02 & 04) > Phase 2 - Cx
P2CX.1250,Phase 2 / Cx - Vendor UPS Start Up & Cx,9,9,2027-08-10,2027-08-20,CMH139 > Construction > Main Building - Building D > Phase 2 (ROMP02 & 04) > Phase 2 - Cx
P2CX.1310,Phase 2 / Cx - ATS L3 Cx,1,1,2027-08-10,2027-08-10,CMH139 > Construction > Main Building - Building D > Phase 2 (ROMP02 & 04) > Phase 2 - Cx
P2CX.1180,Phase 2 / Cx - Eaton DLB Testing,2,2,2027-08-10,2027-08-11,CMH139 > Construction > Main Building - Building D > Phase 2 (ROMP02 & 04) > Phase 2 - Cx
P2CX.1390,Phase 2 / Cx - Energize MSDBs,1,1,2027-08-11,2027-08-11,CMH139 > Construction > Main Building - Building D > Phase 2 (ROMP02 & 04) > Phase 2 - Cx
P2CX.1290,Phase 2 / Cx - Split System Startup & Commissioning,10,10,2027-08-12,2027-08-25,CMH139 > Construction > Main Building - Building D > Phase 2 (ROMP02 & 04) > Phase 2 - Cx
P2CX.1280,Phase 2 / Cx - ERV Startup & Commissioning,10,10,2027-08-12,2027-08-25,CMH139 > Construction > Main Building - Building D > Phase 2 (ROMP02 & 04) > Phase 2 - Cx
P2CX.1270,Phase 2 / Cx - EDH Startup & Commissioning,4,4,2027-08-12,2027-08-17,CMH139 > Construction > Main Building - Building D > Phase 2 (ROMP02 & 04) > Phase 2 - Cx
P2CX.1300,Phase 2 / Cx - IW System L2 Cx,2,2,2027-08-16,2027-08-17,CMH139 > Construction > Main Building - Building D > Phase 2 (ROMP02 & 04) > Phase 2 - Cx
P2CX.1400,Phase 2 / Cx - IW System L3 Cx,10,10,2027-08-18,2027-08-31,CMH139 > Construction > Main Building - Building D > Phase 2 (ROMP02 & 04) > Phase 2 - Cx
P2CX.1210,Phase 2 / Cx - MC TAHU L2 Cx,5,5,2027-08-19,2027-08-25,CMH139 > Construction > Main Building - Building D > Phase 2 (ROMP02 & 04) > Phase 2 - Cx
P2CX.1040,Phase 2 / Cx - EC L2 Cx Review for Generator,1,1,2027-08-27,2027-08-27,CMH139 > Construction > Main Building - Building D > Phase 2 (ROMP02 & 04) > Phase 2 - Cx
P2CX.1070,Phase 2 / Cx - EC L3 Cx Generators,3,3,2027-08-30,2027-09-01,CMH139 > Construction > Main Building - Building D > Phase 2 (ROMP02 & 04) > Phase 2 - Cx
P2CX.1060,Phase 2 / Cx - CAT L3 Cx Generators Testing,5,5,2027-08-30,2027-09-03,CMH139 > Construction > Main Building - Building D > Phase 2 (ROMP02 & 04) > Phase 2 - Cx
P2CX.1240,Phase 2 / Cx - Vendor TAHU L3 Cx,10,10,2027-09-01,2027-09-15,CMH139 > Construction > Main Building - Building D > Phase 2 (ROMP02 & 04) > Phase 2 - Cx
P2CX.1330,Phase 2 / Cx - Test & Balance,5,5,2027-09-16,2027-09-22,CMH139 > Construction > Main Building - Building D > Phase 2 (ROMP02 & 04) > Phase 2 - Cx
P2CX.1360,Phase 2 / Cx - BMS Point to Point (TAHUs),5,5,2027-10-13,2027-10-19,CMH139 > Construction > Main Building - Building D > Phase 2 (ROMP02 & 04) > Phase 2 - Cx
P2CX.1230,Phase 2 / Cx - L4 / L5 Cx,13,13,2027-12-20,2028-01-07,CMH139 > Construction > Main Building - Building D > Phase 2 (ROMP02 & 04) > Phase 2 - Cx
P5EX.1030,Phase 3 / Gen Yard - Set Transformers,2,2,2027-04-19,2027-04-20,CMH139 > Construction > Main Building - Building D > Phase 3 (ROMP05 & 07) > Phase 3 - Gen Yard
P5EX.1050,"Phase 3 / Gen Yard - Pull, Term & Test MV through XFMRs",7,7,2027-04-21,2027-04-29,CMH139 > Construction > Main Building - Building D > Phase 3 (ROMP05 & 07) > Phase 3 - Gen Yard
P5EX.1100,Phase 3 / Gen Yard - Pull In FLORES Loop,5,5,2027-04-30,2027-05-06,CMH139 > Construction > Main Building - Building D > Phase 3 (ROMP05 & 07) > Phase 3 - Gen Yard
P5EX.1370,Phase 3 / Gen Yard - Install Fuel Piping,30,30,2027-05-20,2027-07-01,CMH139 > Construction > Main Building - Building D > Phase 3 (ROMP05 & 07) > Phase 3 - Gen Yard
P5EX.1380,Phase 3 / Gen Yard - Install Fuel System Control Conduit,10,10,2027-06-04,2027-06-17,CMH139 > Construction > Main Building - Building D > Phase 3 (ROMP05 & 07) > Phase 3 - Gen Yard
P5EX.1120,Phase 3 / Gen Yard - Pour Sidewalk,5,5,2027-06-18,2027-06-24,CMH139 > Construction > Main Building - Building D > Phase 3 (ROMP05 & 07) > Phase 3 - Gen Yard
P5EX.1060,Phase 3 / Gen Yard - Set Generators,2,2,2027-07-15,2027-07-16,CMH139 > Construction > Main Building - Building D > Phase 3 (ROMP05 & 07) > Phase 3 - Gen Yard
P5EX.1040,Phase 3 / Gen Yard - Install Cable Bus Structure,5,5,2027-07-16,2027-07-22,CMH139 > Construction > Main Building - Building D > Phase 3 (ROMP05 & 07) > Phase 3 - Gen Yard
P5EX.1090,Phase 3 / Gen Yard - Set Exhaust Stack and Shroud,12,12,2027-07-19,2027-08-03,CMH139 > Construction > Main Building - Building D > Phase 3 (ROMP05 & 07) > Phase 3 - Gen Yard
P5EX.1070,Phase 3 / Gen Yard - LV Cable Bus and Feeders - XFMRs to USBs,10,10,2027-07-23,2027-08-05,CMH139 > Construction > Main Building - Building D > Phase 3 (ROMP05 & 07) > Phase 3 - Gen Yard
P5EX.1140,Phase 3 / Gen Yard - Grounding / Lightning Protection,2,2,2027-08-04,2027-08-05,CMH139 > Construction > Main Building - Building D > Phase 3 (ROMP05 & 07) > Phase 3 - Gen Yard
P5EX.1110,Phase 3 / Gen Yard - Energize Electrical - Site To Phase,0,0,,2027-08-05,CMH139 > Construction > Main Building - Building D > Phase 3 (ROMP05 & 07) > Phase 3 - Gen Yard
P4EX.1190,Phase 3 / Gen Yard - LV Cable Bus and Feeders - Gens to USBs,15,15,2027-08-06,2027-08-26,CMH139 > Construction > Main Building - Building D > Phase 3 (ROMP05 & 07) > Phase 3 - Gen Yard
P5EX.1080,Phase 3 / Gen Yard - Install Generator Platforms,5,5,2027-08-16,2027-08-20,CMH139 > Construction > Main Building - Building D > Phase 3 (ROMP05 & 07) > Phase 3 - Gen Yard
P5EX.1130,Phase 3 / Gen Yard - Install Foundations & Fencing,4,4,2027-08-23,2027-08-26,CMH139 > Construction > Main Building - Building D > Phase 3 (ROMP05 & 07) > Phase 3 - Gen Yard
P5ER.1590,Phase 3 / Elec Rm - Layout,1,1,2027-04-19,2027-04-19,CMH139 > Construction > Main Building - Building D > Phase 3 (ROMP05 & 07) > Phase 3 - Electrical Room
P5ER.1820,Phase 3 / Elec Rm - Install DriClad,10,10,2027-04-20,2027-05-03,CMH139 > Construction > Main Building - Building D > Phase 3 (ROMP05 & 07) > Phase 3 - Electrical Room
P5ER.1000,Phase 3 / Elec Rm - Pull TAHU Feeders,5,5,2027-04-29,2027-05-05,CMH139 > Construction > Main Building - Building D > Phase 3 (ROMP05 & 07) > Phase 3 - Electrical Room
P5ER.1040,Phase 3 / Elec Rm - Wall Electric & Fire Alarm Rough-in,5,5,2027-05-04,2027-05-10,CMH139 > Construction > Main Building - Building D > Phase 3 (ROMP05 & 07) > Phase 3 - Electrical Room
P5ER.1020,Phase 3 / Elec Rm - Stud Framing,4,4,2027-05-05,2027-05-10,CMH139 > Construction > Main Building - Building D > Phase 3 (ROMP05 & 07) > Phase 3 - Electrical Room
P5ER.1010,Phase 3 / Elec Rm - Pull Lighting Control Wiring,7,7,2027-05-06,2027-05-14,CMH139 > Construction > Main Building - Building D > Phase 3 (ROMP05 & 07) > Phase 3 - Electrical Room
P5ER.1380,Phase 3 / Elec Rm - Hangers,3,3,2027-05-11,2027-05-13,CMH139 > Construction > Main Building - Building D > Phase 3 (ROMP05 & 07) > Phase 3 - Electrical Room
P5ER.1610,Phase 3 / Elec Rm - Install OH Conduit / Mechanical Feeders,5,5,2027-05-14,2027-05-20,CMH139 > Construction > Main Building - Building D > Phase 3 (ROMP05 & 07) > Phase 3 - Electrical Room
P5ER.1060,Phase 3 / Elec Rm - Hang Drywall & Finish,5,5,2027-06-01,2027-06-07,CMH139 > Construction > Main Building - Building D > Phase 3 (ROMP05 & 07) > Phase 3 - Electrical Room
P5ER.1600,Phase 3 / Elec Rm - Fire Protection Rough In,3,3,2027-06-04,2027-06-08,CMH139 > Construction > Main Building - Building D > Phase 3 (ROMP05 & 07) > Phase 3 - Electrical Room
P5ER.1080,Phase 3 / Elec Rm - Prime & First Coat Paint,1,1,2027-06-08,2027-06-08,CMH139 > Construction > Main Building - Building D > Phase 3 (ROMP05 & 07) > Phase 3 - Electrical Room
P5ER.1120,Phase 3 / Elec Rm - Install Split Systems & ERV,10,10,2027-06-09,2027-06-22,CMH139 > Construction > Main Building - Building D > Phase 3 (ROMP05 & 07) > Phase 3 - Electrical Room
P5ER.1800,Phase 3 / Elec Rm - Pull / Term HUPPs,2,2,2027-06-09,2027-06-10,CMH139 > Construction > Main Building - Building D > Phase 3 (ROMP05 & 07) > Phase 3 - Electrical Room
P5ER.1620,Phase 3 / Elec Rm - Set USB (LV Gear),5,5,2027-07-13,2027-07-19,CMH139 > Construction > Main Building - Building D > Phase 3 (ROMP05 & 07) > Phase 3 - Electrical Room
P5ER.1140,Phase 3 / Elec Rm - Install AMCOP Panels,1,1,2027-07-20,2027-07-20,CMH139 > Construction > Main Building - Building D > Phase 3 (ROMP05 & 07) > Phase 3 - Electrical Room
P5ER.1640,Phase 3 / Elec Rm - Doors & Hardware,5,5,2027-07-20,2027-07-26,CMH139 > Construction > Main Building - Building D > Phase 3 (ROMP05 & 07) > Phase 3 - Electrical Room
P5ER.1650,Phase 3 / Elec Rm - Breaker Testing USB,5,5,2027-07-20,2027-07-26,CMH139 > Construction > Main Building - Building D > Phase 3 (ROMP05 & 07) > Phase 3 - Electrical Room
P5ER.1630,Phase 3 / Elec Rm - Fill Buck Out,4,4,2027-07-20,2027-07-23,CMH139 > Construction > Main Building - Building D > Phase 3 (ROMP05 & 07) > Phase 3 - Electrical Room
P5ER.1660,Phase 3 / Elec Rm - Install Cable Tray,7,7,2027-07-20,2027-07-28,CMH139 > Construction > Main Building - Building D > Phase 3 (ROMP05 & 07) > Phase 3 - Electrical Room
P5ER.1670,Phase 3 / Elec Rm - Cable Bus Termination,4,4,2027-07-23,2027-07-28,CMH139 > Construction > Main Building - Building D > Phase 3 (ROMP05 & 07) > Phase 3 - Electrical Room
P5ER.1210,Phase 3 / Elec Rm - Set SCCS Setting for Breakers,1,1,2027-07-27,2027-07-27,CMH139 > Construction > Main Building - Building D > Phase 3 (ROMP05 & 07) > Phase 3 - Electrical Room
P5ER.1110,Phase 3 / Elec Rm - Set OFCI Electrical Panels,5,5,2027-07-29,2027-08-04,CMH139 > Construction > Main Building - Building D > Phase 3 (ROMP05 & 07) > Phase 3 - Electrical Room
P5ER.1680,Phase 3 / Elec Rm - Fire Alarm / VESDA,5,5,2027-07-29,2027-08-04,CMH139 > Construction > Main Building - Building D > Phase 3 (ROMP05 & 07) > Phase 3 - Electrical Room
P5ER.1700,Phase 3 / Elec Rm - Install Bus Duct,7,7,2027-07-29,2027-08-06,CMH139 > Construction > Main Building - Building D > Phase 3 (ROMP05 & 07) > Phase 3 - Electrical Room
P5ER.1810,Phase 3 / Elec Rm - Install Control Conduit,5,5,2027-07-29,2027-08-04,CMH139 > Construction > Main Building - Building D > Phase 3 (ROMP05 & 07) > Phase 3 - Electrical Room
P5ER.1330,Phase 3 / Elec Rm - Pull & Term DLB Fiber,5,5,2027-08-05,2027-08-11,CMH139 > Construction > Main Building - Building D > Phase 3 (ROMP05 & 07) > Phase 3 - Electrical Room
P5ER.1710,Phase 3 / Elec Rm - Install Electrical Raceways (Branch Conduits),10,10,2027-08-05,2027-08-18,CMH139 > Construction > Main Building - Building D > Phase 3 (ROMP05 & 07) > Phase 3 - Electrical Room
P3ER.1820,Phase 3 / Elec Rm - Install UPS,4,4,2027-08-05,2027-08-10,CMH139 > Construction > Main Building - Building D > Phase 3 (ROMP05 & 07) > Phase 3 - Electrical Room
P5ER.1150,Phase 3 / Elec Rm - Pull PDC Feeders,5,5,2027-08-06,2027-08-12,CMH139 > Construction > Main Building - Building D > Phase 3 (ROMP05 & 07) > Phase 3 - Electrical Room
P5ER.1160,Phase 3 / Elec Rm - Terminate LV Electrical Panels,5,5,2027-08-10,2027-08-16,CMH139 > Construction > Main Building - Building D > Phase 3 (ROMP05 & 07) > Phase 3 - Electrical Room
P5ER.1730,Phase 3 / Elec Rm - Manufacturer Inspection USB,1,1,2027-08-12,2027-08-12,CMH139 > Construction > Main Building - Building D > Phase 3 (ROMP05 & 07) > Phase 3 - Electrical Room
P5ER.1220,Phase 3 / Elec Rm - Install Lighting,3,3,2027-08-13,2027-08-17,CMH139 > Construction > Main Building - Building D > Phase 3 (ROMP05 & 07) > Phase 3 - Electrical Room
P5ER.1750,Phase 3 / Elec Rm - Seismic Install,1,1,2027-08-13,2027-08-13,CMH139 > Construction > Main Building - Building D > Phase 3 (ROMP05 & 07) > Phase 3 - Electrical Room
P5ER.1780,Phase 3 / Elec Rm - Test & Terminate PDC Feeders,5,5,2027-08-13,2027-08-19,CMH139 > Construction > Main Building - Building D > Phase 3 (ROMP05 & 07) > Phase 3 - Electrical Room
P5ER.1760,Phase 3 / Elec Rm - Egress Lighting,3,3,2027-08-13,2027-08-17,CMH139 > Construction > Main Building - Building D > Phase 3 (ROMP05 & 07) > Phase 3 - Electrical Room
P5ER.1770,Phase 3 / Elec Rm - Trade Repair,3,3,2027-08-19,2027-08-23,CMH139 > Construction > Main Building - Building D > Phase 3 (ROMP05 & 07) > Phase 3 - Electrical Room
P5ER.1790,Phase 3 / Elec Rm - Final Paint / Touch Up,1,1,2027-08-24,2027-08-24,CMH139 > Construction > Main Building - Building D > Phase 3 (ROMP05 & 07) > Phase 3 - Electrical Room
P5ER.1690,Phase 3 / Elec Rm - Install CRAC Unit & Exhaust Fan,5,5,2027-09-15,2027-09-21,CMH139 > Construction > Main Building - Building D > Phase 3 (ROMP05 & 07) > Phase 3 - Electrical Room
P5ER.1720,Phase 3 / Elec Rm - OA Reference Piping,5,5,2027-09-22,2027-09-28,CMH139 > Construction > Main Building - Building D > Phase 3 (ROMP05 & 07) > Phase 3 - Electrical Room
P5ER.1180,Phase 3 / Elec Rm - BMS System,10,10,2027-09-29,2027-10-12,CMH139 > Construction > Main Building - Building D > Phase 3 (ROMP05 & 07) > Phase 3 - Electrical Room
P5ER.1740,Phase 3 / Elec Rm - Energize BMS Panels,1,1,2027-10-13,2027-10-13,CMH139 > Construction > Main Building - Building D > Phase 3 (ROMP05 & 07) > Phase 3 - Electrical Room
P3RP.1730,Phase 3 / Data Hall - Fire Protection Rough In,5,5,2027-03-30,2027-04-05,CMH139 > Construction > Main Building - Building D > Phase 3 (ROMP05 & 07) > Phase 3 - Data Hall
P5RP.1040,Phase 3 / Data Hall - Stud Framing (Data Hall / Elec Rm Wall),5,5,2027-05-05,2027-05-11,CMH139 > Construction > Main Building - Building D > Phase 3 (ROMP05 & 07) > Phase 3 - Data Hall
P3RP.1590,Phase 3 / Data Hall - Install Temp Wall Bulkhead,5,5,2027-05-06,2027-05-12,CMH139 > Construction > Main Building - Building D > Phase 3 (ROMP05 & 07) > Phase 3 - Data Hall
P5RP.1700,Phase 3 / Data Hall - Stud Framing (Equipment Platform),5,5,2027-05-11,2027-05-17,CMH139 > Construction > Main Building - Building D > Phase 3 (ROMP05 & 07) > Phase 3 - Data Hall
P3RP.1700,Phase 3 / Data Hall - Above Ceiling Cable Tray,3,3,2027-05-13,2027-05-17,CMH139 > Construction > Main Building - Building D > Phase 3 (ROMP05 & 07) > Phase 3 - Data Hall
P3RP.1600,Phase 3 / Data Hall - OH Electric Rough In,5,5,2027-05-18,2027-05-24,CMH139 > Construction > Main Building - Building D > Phase 3 (ROMP05 & 07) > Phase 3 - Data Hall
P3RP.1710,Phase 3 / Data Hall - Seismic Install,2,2,2027-05-18,2027-05-19,CMH139 > Construction > Main Building - Building D > Phase 3 (ROMP05 & 07) > Phase 3 - Data Hall
P5RP.1100,Phase 3 / Data Hall - Wall Elec & FA Rough-In (IMP),4,4,2027-06-01,2027-06-04,CMH139 > Construction > Main Building - Building D > Phase 3 (ROMP05 & 07) > Phase 3 - Data Hall
P5RP.1710,Phase 3 / Data Hall - Wall Elec & FA Rough-In (Data Hall / Elec Rm),4,4,2027-06-01,2027-06-04,CMH139 > Construction > Main Building - Building D > Phase 3 (ROMP05 & 07) > Phase 3 - Data Hall
P3RP.1610,Phase 3 / Data Hall - In Wall Rough In Inspection (Electrical / FA),1,1,2027-06-07,2027-06-07,CMH139 > Construction > Main Building - Building D > Phase 3 (ROMP05 & 07) > Phase 3 - Data Hall
P5RP.1130,Phase 3 / Data Hall - Hang Drywall & Finish (Data Hall / Elec Rm),5,5,2027-06-08,2027-06-14,CMH139 > Construction > Main Building - Building D > Phase 3 (ROMP05 & 07) > Phase 3 - Data Hall
P5RP.1190,Phase 3 / Data Hall - Prime & First Coat Paint,3,3,2027-06-15,2027-06-17,CMH139 > Construction > Main Building - Building D > Phase 3 (ROMP05 & 07) > Phase 3 - Data Hall
P5RP.1050,Phase 3 / Data Hall - Fire Protection Drops,5,5,2027-06-18,2027-06-24,CMH139 > Construction > Main Building - Building D > Phase 3 (ROMP05 & 07) > Phase 3 - Data Hall
P5RP.1350,Phase 3 / Data Hall - Install Backdraft Dampers,5,5,2027-06-18,2027-06-24,CMH139 > Construction > Main Building - Building D > Phase 3 (ROMP05 & 07) > Phase 3 - Data Hall
P5RP.1020,Phase 3 / Data Hall - MARS Racking,7,7,2027-07-13,2027-07-21,CMH139 > Construction > Main Building - Building D > Phase 3 (ROMP05 & 07) > Phase 3 - Data Hall
P5RP.1070,Phase 3 / Data Hall - Install Lighting Wiring & Fixtures,5,5,2027-07-22,2027-07-28,CMH139 > Construction > Main Building - Building D > Phase 3 (ROMP05 & 07) > Phase 3 - Data Hall
P5RP.1200,Phase 3 / Data Hall - Temp Wall Install,5,5,2027-07-22,2027-07-28,CMH139 > Construction > Main Building - Building D > Phase 3 (ROMP05 & 07) > Phase 3 - Data Hall
P5RP.1060,Phase 3 / Data Hall - Upper Polycarbonate Panels and Cold Aisle Cable Tray Arms,3,3,2027-07-22,2027-07-26,CMH139 > Construction > Main Building - Building D > Phase 3 (ROMP05 & 07) > Phase 3 - Data Hall
P5RP.1230,Phase 3 / Data Hall - Install Control Dampers (PRD),5,5,2027-07-22,2027-07-28,CMH139 > Construction > Main Building - Building D > Phase 3 (ROMP05 & 07) > Phase 3 - Data Hall
P5RP.1410,Phase 3 / Data Hall - Power PDC Whips,10,10,2027-07-22,2027-08-04,CMH139 > Construction > Main Building - Building D > Phase 3 (ROMP05 & 07) > Phase 3 - Data Hall
P3RP.1620,Phase 3 / Data Hall - ACT Grid Corridors,4,4,2027-07-22,2027-07-27,CMH139 > Construction > Main Building - Building D > Phase 3 (ROMP05 & 07) > Phase 3 - Data Hall
P3RP.1630,Phase 3 / Data Hall - Install Snubbers,5,5,2027-07-22,2027-07-28,CMH139 > Construction > Main Building - Building D > Phase 3 (ROMP05 & 07) > Phase 3 - Data Hall
P5RP.1030,Phase 3 / Data Hall - PDC Feeders Drops & Supports,10,10,2027-07-22,2027-08-04,CMH139 > Construction > Main Building - Building D > Phase 3 (ROMP05 & 07) > Phase 3 - Data Hall
P5RP.1210,Phase 3 / Data Hall - Fire Alarm VESDA,10,10,2027-07-26,2027-08-06,CMH139 > Construction > Main Building - Building D > Phase 3 (ROMP05 & 07) > Phase 3 - Data Hall
P3RP.1640,Phase 3 / Data Hall - ACT Grid Cold Aisles,5,5,2027-07-26,2027-07-30,CMH139 > Construction > Main Building - Building D > Phase 3 (ROMP05 & 07) > Phase 3 - Data Hall
P5RP.1340,Phase 3 / Data Hall - Perfect Position,4,4,2027-07-27,2027-07-30,CMH139 > Construction > Main Building - Building D > Phase 3 (ROMP05 & 07) > Phase 3 - Data Hall
P5RP.1250,Phase 3 / Data Hall - Doors and Hardware,2,2,2027-07-29,2027-07-30,CMH139 > Construction > Main Building - Building D > Phase 3 (ROMP05 & 07) > Phase 3 - Data Hall
P3RP.1650,Phase 3 / Data Hall - Install Control Wiring,5,5,2027-07-29,2027-08-04,CMH139 > Construction > Main Building - Building D > Phase 3 (ROMP05 & 07) > Phase 3 - Data Hall
P5RP.1280,Phase 3 / Data Hall - Install Fire Protection Heads Avenue,2,2,2027-08-02,2027-08-03,CMH139 > Construction > Main Building - Building D > Phase 3 (ROMP05 & 07) > Phase 3 - Data Hall
P5RP.1160,Phase 3 / Data Hall - Cold Aisle Basket/Cable Tray,3,3,2027-08-02,2027-08-04,CMH139 > Construction > Main Building - Building D > Phase 3 (ROMP05 & 07) > Phase 3 - Data Hall
P5RP.1360,Phase 3 / Data Hall - Avenue Basket/Cable Tray (South),2,2,2027-08-02,2027-08-03,CMH139 > Construction > Main Building - Building D > Phase 3 (ROMP05 & 07) > Phase 3 - Data Hall
P3RP.1660,Phase 3 / Data Hall - ACT Borders For Corridors,1,1,2027-08-02,2027-08-02,CMH139 > Construction > Main Building - Building D > Phase 3 (ROMP05 & 07) > Phase 3 - Data Hall
P3RP.1720,Phase 3 / Data Hall - Install Fire Protection Heads Cold Aisle,2,2,2027-08-02,2027-08-03,CMH139 > Construction > Main Building - Building D > Phase 3 (ROMP05 & 07) > Phase 3 - Data Hall
P3RP.1670,Phase 3 / Data Hall - ACT Borders For Cold Aisles,1,1,2027-08-03,2027-08-03,CMH139 > Construction > Main Building - Building D > Phase 3 (ROMP05 & 07) > Phase 3 - Data Hall
P5RP.1290,Phase 3 / Data Hall - Avenue Basket/Cable Tray (North),2,2,2027-08-04,2027-08-05,CMH139 > Construction > Main Building - Building D > Phase 3 (ROMP05 & 07) > Phase 3 - Data Hall
P5RP.1310,Phase 3 / Data Hall - Structural Overhead Inspection (Avenue),1,1,2027-08-04,2027-08-04,CMH139 > Construction > Main Building - Building D > Phase 3 (ROMP05 & 07) > Phase 3 - Data Hall
P3RP.1690,Phase 3 / Data Hall - ACT Remaining Tile Drops Post Inspection,3,3,2027-08-05,2027-08-09,CMH139 > Construction > Main Building - Building D > Phase 3 (ROMP05 & 07) > Phase 3 - Data Hall
P3RP.1680,Phase 3 / Data Hall - Touch Up Paint,4,4,2027-08-05,2027-08-10,CMH139 > Construction > Main Building - Building D > Phase 3 (ROMP05 & 07) > Phase 3 - Data Hall
P5RP.1420,Phase 3 / Data Hall - CAT6 Cable Install,3,3,2027-08-06,2027-08-10,CMH139 > Construction > Main Building - Building D > Phase 3 (ROMP05 & 07) > Phase 3 - Data Hall
P5RP.1080,Phase 3 / Data Hall - Set PDC Cabinets,3,3,2027-08-10,2027-08-12,CMH139 > Construction > Main Building - Building D > Phase 3 (ROMP05 & 07) > Phase 3 - Data Hall
P5RP.1110,Phase 3 / Data Hall - BMS,15,15,2027-08-13,2027-09-02,CMH139 > Construction > Main Building - Building D > Phase 3 (ROMP05 & 07) > Phase 3 - Data Hall
P5RP.1270,Phase 3 / Data Hall - PDC Feeders Test & Terminate,10,10,2027-08-13,2027-08-26,CMH139 > Construction > Main Building - Building D > Phase 3 (ROMP05 & 07) > Phase 3 - Data Hall
P5RP.1430,Phase 3 / Data Hall - EPMS,15,15,2027-08-13,2027-09-02,CMH139 > Construction > Main Building - Building D > Phase 3 (ROMP05 & 07) > Phase 3 - Data Hall
P5RP.1180,Phase 3 / Data Hall - Lower Polycarbonate Panels,5,5,2027-09-03,2027-09-10,CMH139 > Construction > Main Building - Building D > Phase 3 (ROMP05 & 07) > Phase 3 - Data Hall
P5RP.1090,Phase 3 / Data Hall - NEA Finalization,19,19,2027-11-30,2027-12-27,CMH139 > Construction > Main Building - Building D > Phase 3 (ROMP05 & 07) > Phase 3 - Data Hall
P5RP.1140,Phase 3 / Data Hall - H2C Readiness Coordination,13,13,2027-12-28,2028-01-14,CMH139 > Construction > Main Building - Building D > Phase 3 (ROMP05 & 07) > Phase 3 - Data Hall
P5DG.1230,Phase 3 / TAHU - Fire Protection Rough In,5,5,2027-03-23,2027-03-29,CMH139 > Construction > Main Building - Building D > Phase 3 (ROMP05 & 07) > Phase 3 - TAHU Gallery
P5DG.1170,Phase 3 / TAHU - Sound Attenuator,10,10,2027-06-01,2027-06-14,CMH139 > Construction > Main Building - Building D > Phase 3 (ROMP05 & 07) > Phase 3 - TAHU Gallery
P5DG.1180,Phase 3 / TAHU - Seismic Install,2,2,2027-06-01,2027-06-02,CMH139 > Construction > Main Building - Building D > Phase 3 (ROMP05 & 07) > Phase 3 - TAHU Gallery
P5DG.1190,Phase 3 / TAHU - Hang Outside Stairwell / Lobby Drywall,4,4,2027-06-01,2027-06-04,CMH139 > Construction > Main Building - Building D > Phase 3 (ROMP05 & 07) > Phase 3 - TAHU Gallery
P5DG.1200,Phase 3 / TAHU - Install CFMF IMP Support,10,10,2027-06-01,2027-06-14,CMH139 > Construction > Main Building - Building D > Phase 3 (ROMP05 & 07) > Phase 3 - TAHU Gallery
P5DG.1040,Phase 3 / TAHU - Install IMP Panels,6,6,2027-06-15,2027-06-22,CMH139 > Construction > Main Building - Building D > Phase 3 (ROMP05 & 07) > Phase 3 - TAHU Gallery
P5DG.1080,Phase 3 / TAHU - Prime & Paint Drywall,3,3,2027-06-23,2027-06-25,CMH139 > Construction > Main Building - Building D > Phase 3 (ROMP05 & 07) > Phase 3 - TAHU Gallery
P5DG.1010,Phase 3 / TAHU - BMS Controls Rough In,10,10,2027-06-23,2027-07-07,CMH139 > Construction > Main Building - Building D > Phase 3 (ROMP05 & 07) > Phase 3 - TAHU Gallery
P5DG.1030,Phase 3 / TAHU - Wall Elec & Fire Alarm Rough-In,5,5,2027-06-23,2027-06-29,CMH139 > Construction > Main Building - Building D > Phase 3 (ROMP05 & 07) > Phase 3 - TAHU Gallery
P5DG.1130,Phase 3 / TAHU - Fire Alarm (VESDA),5,5,2027-06-23,2027-06-29,CMH139 > Construction > Main Building - Building D > Phase 3 (ROMP05 & 07) > Phase 3 - TAHU Gallery
P5DG.1090,Phase 3 / TAHU - Control Dampers,5,5,2027-06-28,2027-07-02,CMH139 > Construction > Main Building - Building D > Phase 3 (ROMP05 & 07) > Phase 3 - TAHU Gallery
P5DG.1050,Phase 3 / TAHU - Pull & Terminate Fire Alarm Cable,5,5,2027-06-30,2027-07-07,CMH139 > Construction > Main Building - Building D > Phase 3 (ROMP05 & 07) > Phase 3 - TAHU Gallery
P5DG.1070,Phase 3 / TAHU - Set TAHUs,2,2,2027-07-13,2027-07-14,CMH139 > Construction > Main Building - Building D > Phase 3 (ROMP05 & 07) > Phase 3 - TAHU Gallery
P5DG.1140,Phase 3 / TAHU - Doors and Hardware,3,3,2027-07-15,2027-07-19,CMH139 > Construction > Main Building - Building D > Phase 3 (ROMP05 & 07) > Phase 3 - TAHU Gallery
P5DG.1060,Phase 3 / TAHU - IW Supply Piping at TAHUs,10,10,2027-07-15,2027-07-28,CMH139 > Construction > Main Building - Building D > Phase 3 (ROMP05 & 07) > Phase 3 - TAHU Gallery
P5DG.1110,Phase 3 / TAHU - TAHU Trim,10,10,2027-07-15,2027-07-28,CMH139 > Construction > Main Building - Building D > Phase 3 (ROMP05 & 07) > Phase 3 - TAHU Gallery
P5DG.1210,Phase 3 / TAHU - Paint Doors & Frames,2,2,2027-07-20,2027-07-21,CMH139 > Construction > Main Building - Building D > Phase 3 (ROMP05 & 07) > Phase 3 - TAHU Gallery
P5DG.1150,Phase 3 / TAHU - Lighting,5,5,2027-07-29,2027-08-04,CMH139 > Construction > Main Building - Building D > Phase 3 (ROMP05 & 07) > Phase 3 - TAHU Gallery
P5DG.1100,Phase 3 / TAHU - Tie In TAHUs,10,10,2027-07-29,2027-08-11,CMH139 > Construction > Main Building - Building D > Phase 3 (ROMP05 & 07) > Phase 3 - TAHU Gallery
P5DG.1020,Phase 3 / TAHU - BMS Tie In,2,2,2027-08-10,2027-08-11,CMH139 > Construction > Main Building - Building D > Phase 3 (ROMP05 & 07) > Phase 3 - TAHU Gallery
P5DG.1120,Phase 3 / TAHU - IW Drain Piping at TAHUs,5,5,2027-08-12,2027-08-18,CMH139 > Construction > Main Building - Building D > Phase 3 (ROMP05 & 07) > Phase 3 - TAHU Gallery
P5DG.1220,Phase 3 / TAHU - Terminate Power To TAHUs,3,3,2027-08-19,2027-08-23,CMH139 > Construction > Main Building - Building D > Phase 3 (ROMP05 & 07) > Phase 3 - TAHU Gallery
P5CX.1100,Phase 3 / Cx - EC L2 Cx Review for MV Switchgear,1,1,2027-04-30,2027-04-30,CMH139 > Construction > Main Building - Building D > Phase 3 (ROMP05 & 07) > Phase 3 - Cx
P5CX.1080,Phase 3 / Cx - EC L2 Cx Review for MV XFMRs,1,1,2027-05-03,2027-05-03,CMH139 > Construction > Main Building - Building D > Phase 3 (ROMP05 & 07) > Phase 3 - Cx
P5CX.1090,Phase 3 / Cx - EC L3 Cx for MV XFMRs,5,5,2027-05-04,2027-05-10,CMH139 > Construction > Main Building - Building D > Phase 3 (ROMP05 & 07) > Phase 3 - Cx
P5CX.1350,Phase 3 / Cx - Eaton XFMR Testing,3,3,2027-05-04,2027-05-06,CMH139 > Construction > Main Building - Building D > Phase 3 (ROMP05 & 07) > Phase 3 - Cx
P5CX.1130,Phase 3 / Cx - EC L3 Cx for MV,3,3,2027-05-07,2027-05-11,CMH139 > Construction > Main Building - Building D > Phase 3 (ROMP05 & 07) > Phase 3 - Cx
P5CX.1200,Phase 3 / Cx - Fuel System Cx,7,7,2027-07-02,2027-07-13,CMH139 > Construction > Main Building - Building D > Phase 3 (ROMP05 & 07) > Phase 3 - Cx
P5CX.1180,Phase 3 / Cx - Construction Power To Generator,3,3,2027-07-19,2027-07-21,CMH139 > Construction > Main Building - Building D > Phase 3 (ROMP05 & 07) > Phase 3 - Cx
P5CX.1120,Phase 3 / Cx - EC 3rd Party Testing & Inspection USB (L2),3,3,2027-07-20,2027-07-22,CMH139 > Construction > Main Building - Building D > Phase 3 (ROMP05 & 07) > Phase 3 - Cx
P5CX.1030,Phase 3 / Cx - CAT L2 Cx Generators,2,2,2027-07-22,2027-07-23,CMH139 > Construction > Main Building - Building D > Phase 3 (ROMP05 & 07) > Phase 3 - Cx
P5CX.1160,Phase 3 / Cx - HUPPS Panelboards Energized,1,1,2027-08-05,2027-08-05,CMH139 > Construction > Main Building - Building D > Phase 3 (ROMP05 & 07) > Phase 3 - Cx
P5CX.1000,Phase 3 / Cx - EC 3rd Party LV Panelboard Testing (L2),3,3,2027-08-05,2027-08-09,CMH139 > Construction > Main Building - Building D > Phase 3 (ROMP05 & 07) > Phase 3 - Cx
P5CX.1320,Phase 3 / Cx - AMCOP / BACOP Start Up & Cx,5,5,2027-08-05,2027-08-11,CMH139 > Construction > Main Building - Building D > Phase 3 (ROMP05 & 07) > Phase 3 - Cx
P5CX.1360,Phase 3 / Cx - Energize Control Network Arch,1,1,2027-08-06,2027-08-06,CMH139 > Construction > Main Building - Building D > Phase 3 (ROMP05 & 07) > Phase 3 - Cx
P5CX.1390,Phase 3 / Cx - EPMS Point to Point (USB),4,4,2027-08-09,2027-08-12,CMH139 > Construction > Main Building - Building D > Phase 3 (ROMP05 & 07) > Phase 3 - Cx
P5CX.1470,Phase 3 / Cx - Fire Alarm Programming & Pretest,2,2,2027-08-09,2027-08-10,CMH139 > Construction > Main Building - Building D > Phase 3 (ROMP05 & 07) > Phase 3 - Cx
P5CX.1230,Phase 3 / Cx - EC 3rd Party Busway Bus Plug Testing (L2),2,2,2027-08-09,2027-08-10,CMH139 > Construction > Main Building - Building D > Phase 3 (ROMP05 & 07) > Phase 3 - Cx
P5MCM.5010,Phase 3 / Cx - Tie in MOP C1,2,2,2027-08-11,2027-08-12,CMH139 > Construction > Main Building - Building D > Phase 3 (ROMP05 & 07) > Phase 3 - Cx
P5MCM.5020,Phase 3 / Cx - Eaton DLB Programming & Test (FLORES),5,5,2027-08-12,2027-08-18,CMH139 > Construction > Main Building - Building D > Phase 3 (ROMP05 & 07) > Phase 3 - Cx
P5MCM.5050,Phase 3 / Cx - Tie in MOP C2,2,2,2027-08-13,2027-08-16,CMH139 > Construction > Main Building - Building D > Phase 3 (ROMP05 & 07) > Phase 3 - Cx
P5CX.1140,Phase 3 / Cx - EC 3rd Party Busway C1 / C2 Testing,2,2,2027-08-17,2027-08-18,CMH139 > Construction > Main Building - Building D > Phase 3 (ROMP05 & 07) > Phase 3 - Cx
P5CX.1190,Phase 3 / Cx - EC L2 Cx Review for LV Panelboard,2,2,2027-08-17,2027-08-18,CMH139 > Construction > Main Building - Building D > Phase 3 (ROMP05 & 07) > Phase 3 - Cx
P5MS.180,Phase 3 / Cx - Life Safety Walkthrough,1,1,2027-08-18,2027-08-18,CMH139 > Construction > Main Building - Building D > Phase 3 (ROMP05 & 07) > Phase 3 - Cx
P5CX.1260,Phase 3 / Cx - EC L3 Cx LV Panelboard,1,1,2027-08-19,2027-08-19,CMH139 > Construction > Main Building - Building D > Phase 3 (ROMP05 & 07) > Phase 3 - Cx
P5CX.1170,Phase 3 / Cx - EC Busway C1 / C2 L2 Cx Review,1,1,2027-08-19,2027-08-19,CMH139 > Construction > Main Building - Building D > Phase 3 (ROMP05 & 07) > Phase 3 - Cx
P5CX.1220,Phase 3 / Cx - EC Busway C1 L3 Cx,2,2,2027-08-20,2027-08-23,CMH139 > Construction > Main Building - Building D > Phase 3 (ROMP05 & 07) > Phase 3 - Cx
P5CX.1380,Phase 3 / Cx - EPMS Point to Point (PDC),4,4,2027-08-20,2027-08-25,CMH139 > Construction > Main Building - Building D > Phase 3 (ROMP05 & 07) > Phase 3 - Cx
P5CX.1210,Phase 3 / Cx - MC TAHU L2 Cx,5,5,2027-08-24,2027-08-30,CMH139 > Construction > Main Building - Building D > Phase 3 (ROMP05 & 07) > Phase 3 - Cx
P5CX.1480,Phase 3 / Cx - EC Busway C2 L3 Cx,2,2,2027-08-24,2027-08-25,CMH139 > Construction > Main Building - Building D > Phase 3 (ROMP05 & 07) > Phase 3 - Cx
P5CX.1150,Phase 3 / Cx - EC L3 Cx USBs,2,2,2027-08-26,2027-08-27,CMH139 > Construction > Main Building - Building D > Phase 3 (ROMP05 & 07) > Phase 3 - Cx
P5CX.1040,Phase 3 / Cx - EC L2 Cx Review for Generator,1,1,2027-08-27,2027-08-27,CMH139 > Construction > Main Building - Building D > Phase 3 (ROMP05 & 07) > Phase 3 - Cx
P5CX.1070,Phase 3 / Cx - EC L3 Cx Generators,3,3,2027-08-30,2027-09-01,CMH139 > Construction > Main Building - Building D > Phase 3 (ROMP05 & 07) > Phase 3 - Cx
P5CX.1060,Phase 3 / Cx - CAT L3 Cx Generators Testing,5,5,2027-08-30,2027-09-03,CMH139 > Construction > Main Building - Building D > Phase 3 (ROMP05 & 07) > Phase 3 - Cx
P5CX.1250,Phase 3 / Cx - Vendor UPS Start Up & Cx,9,9,2027-08-30,2027-09-10,CMH139 > Construction > Main Building - Building D > Phase 3 (ROMP05 & 07) > Phase 3 - Cx
P5CX.1310,Phase 3 / Cx - ATS L3 Cx,1,1,2027-08-30,2027-08-30,CMH139 > Construction > Main Building - Building D > Phase 3 (ROMP05 & 07) > Phase 3 - Cx
P5CX.1420,Phase 3 / Cx - Eaton DLB Testing,2,2,2027-08-30,2027-08-31,CMH139 > Construction > Main Building - Building D > Phase 3 (ROMP05 & 07) > Phase 3 - Cx
P5CX.1400,Phase 3 / Cx - Energize MSDBs,1,1,2027-08-31,2027-08-31,CMH139 > Construction > Main Building - Building D > Phase 3 (ROMP05 & 07) > Phase 3 - Cx
P5CX.1290,Phase 3 / Cx - Split System Startup & Commissioning,10,10,2027-09-01,2027-09-15,CMH139 > Construction > Main Building - Building D > Phase 3 (ROMP05 & 07) > Phase 3 - Cx
P5CX.1280,Phase 3 / Cx - ERV Startup & Commissioning,10,10,2027-09-01,2027-09-15,CMH139 > Construction > Main Building - Building D > Phase 3 (ROMP05 & 07) > Phase 3 - Cx
P5CX.1270,Phase 3 / Cx - EDH Startup & Commissioning,4,4,2027-09-01,2027-09-07,CMH139 > Construction > Main Building - Building D > Phase 3 (ROMP05 & 07) > Phase 3 - Cx
P5MCM.5030,Phase 3 / Cx - IW System L2 Cx,2,2,2027-09-01,2027-09-02,CMH139 > Construction > Main Building - Building D > Phase 3 (ROMP05 & 07) > Phase 3 - Cx
P5MCM.5040,Phase 3 / Cx - IW System L3 Cx,10,10,2027-09-03,2027-09-17,CMH139 > Construction > Main Building - Building D > Phase 3 (ROMP05 & 07) > Phase 3 - Cx
P5CX.1240,Phase 3 / Cx - Vendor TAHU L3 Cx,10,10,2027-09-20,2027-10-01,CMH139 > Construction > Main Building - Building D > Phase 3 (ROMP05 & 07) > Phase 3 - Cx
P5CX.1330,Phase 3 / Cx - Test & Balance,5,5,2027-10-04,2027-10-08,CMH139 > Construction > Main Building - Building D > Phase 3 (ROMP05 & 07) > Phase 3 - Cx
P5CX.1370,Phase 3 / Cx - BMS Point to Point (TAHUs),5,5,2027-10-13,2027-10-19,CMH139 > Construction > Main Building - Building D > Phase 3 (ROMP05 & 07) > Phase 3 - Cx
P5CX.1430,Phase 3 / Cx - L4 / L5 Cx,15,15,2028-01-17,2028-02-04,CMH139 > Construction > Main Building - Building D > Phase 3 (ROMP05 & 07) > Phase 3 - Cx
P6EX.1030,Phase 4 / Gen Yard - Set Transformers,2,2,2027-04-21,2027-04-22,CMH139 > Construction > Main Building - Building D > Phase 4 (ROMP06 & 08) > Phase 4 - Gen Yard
P6EX.1050,"Phase 4 / Gen Yard - Pull, Term & Test MV through XFMRs",7,7,2027-04-23,2027-05-03,CMH139 > Construction > Main Building - Building D > Phase 4 (ROMP06 & 08) > Phase 4 - Gen Yard
P6EX.1100,Phase 4 / Gen Yard - Pull In FLORES Loop,5,5,2027-05-04,2027-05-10,CMH139 > Construction > Main Building - Building D > Phase 4 (ROMP06 & 08) > Phase 4 - Gen Yard
P6EX.1370,Phase 4 / Gen Yard - Install Fuel Piping,30,30,2027-05-20,2027-07-01,CMH139 > Construction > Main Building - Building D > Phase 4 (ROMP06 & 08) > Phase 4 - Gen Yard
P6EX.1380,Phase 4 / Gen Yard - Install Fuel System Control Conduit,10,10,2027-06-04,2027-06-17,CMH139 > Construction > Main Building - Building D > Phase 4 (ROMP06 & 08) > Phase 4 - Gen Yard
P6EX.1120,Phase 4 / Gen Yard - Pour Sidewalk,5,5,2027-06-18,2027-06-24,CMH139 > Construction > Main Building - Building D > Phase 4 (ROMP06 & 08) > Phase 4 - Gen Yard
P6EX.1060,Phase 4 / Gen Yard - Set Generators,2,2,2027-08-10,2027-08-11,CMH139 > Construction > Main Building - Building D > Phase 4 (ROMP06 & 08) > Phase 4 - Gen Yard
P6EX.1090,Phase 4 / Gen Yard - Set Exhaust Stack and Shroud,12,12,2027-08-12,2027-08-27,CMH139 > Construction > Main Building - Building D > Phase 4 (ROMP06 & 08) > Phase 4 - Gen Yard
P6EX.1390,Phase 4 / Gen Yard - Grounding / Lightning Protection,2,2,2027-08-30,2027-08-31,CMH139 > Construction > Main Building - Building D > Phase 4 (ROMP06 & 08) > Phase 4 - Gen Yard
P6EX.1080,Phase 4 / Gen Yard - Install Generator Platforms,5,5,2027-09-10,2027-09-16,CMH139 > Construction > Main Building - Building D > Phase 4 (ROMP06 & 08) > Phase 4 - Gen Yard
P6EX.1130,Phase 4 / Gen Yard - Install Foundations & Fencing,4,4,2027-09-17,2027-09-22,CMH139 > Construction > Main Building - Building D > Phase 4 (ROMP06 & 08) > Phase 4 - Gen Yard
P6EX.1040,Phase 4 / Gen Yard - Install Cable Bus Structure,5,5,2027-10-20,2027-10-26,CMH139 > Construction > Main Building - Building D > Phase 4 (ROMP06 & 08) > Phase 4 - Gen Yard
P6EX.1070,Phase 4 / Gen Yard - LV Cable Bus and Feeders - XFMRs to USBs,10,10,2027-10-27,2027-11-09,CMH139 > Construction > Main Building - Building D > Phase 4 (ROMP06 & 08) > Phase 4 - Gen Yard
P6EX.1110,Phase 4 / Gen Yard - Energize Electrical - Site To Phase,0,0,,2027-11-09,CMH139 > Construction > Main Building - Building D > Phase 4 (ROMP06 & 08) > Phase 4 - Gen Yard
P6EX.1140,Phase 4 / Gen Yard - LV Cable Bus and Feeders - Gens to USBs,15,15,2027-11-10,2027-12-02,CMH139 > Construction > Main Building - Building D > Phase 4 (ROMP06 & 08) > Phase 4 - Gen Yard
P6ER.1800,Phase 4 / Elec Rm - Layout,1,1,2027-04-30,2027-04-30,CMH139 > Construction > Main Building - Building D > Phase 4 (ROMP06 & 08) > Phase 4 - Electrical Room
P6ER.2020,Phase 4 / Elec Rm - Install DriClad,10,10,2027-05-03,2027-05-14,CMH139 > Construction > Main Building - Building D > Phase 4 (ROMP06 & 08) > Phase 4 - Electrical Room
P6ER.1040,Phase 4 / Elec Rm - Wall Electric & Fire Alarm Rough-in,5,5,2027-05-14,2027-05-20,CMH139 > Construction > Main Building - Building D > Phase 4 (ROMP06 & 08) > Phase 4 - Electrical Room
P6ER.1020,Phase 4 / Elec Rm - Stud Framing,4,4,2027-05-17,2027-05-20,CMH139 > Construction > Main Building - Building D > Phase 4 (ROMP06 & 08) > Phase 4 - Electrical Room
P6ER.1060,Phase 4 / Elec Rm - Hang Drywall & Finish,5,5,2027-05-21,2027-05-27,CMH139 > Construction > Main Building - Building D > Phase 4 (ROMP06 & 08) > Phase 4 - Electrical Room
P6ER.1380,Phase 4 / Elec Rm - Hangers,3,3,2027-05-21,2027-05-25,CMH139 > Construction > Main Building - Building D > Phase 4 (ROMP06 & 08) > Phase 4 - Electrical Room
P6ER.1080,Phase 4 / Elec Rm - Prime & First Coat Paint,1,1,2027-05-28,2027-05-28,CMH139 > Construction > Main Building - Building D > Phase 4 (ROMP06 & 08) > Phase 4 - Electrical Room
P6ER.1000,Phase 4 / Elec Rm - Pull TAHU Feeders,5,5,2027-05-28,2027-06-04,CMH139 > Construction > Main Building - Building D > Phase 4 (ROMP06 & 08) > Phase 4 - Electrical Room
P6ER.1010,Phase 4 / Elec Rm - Pull Lighting Control Wiring,7,7,2027-06-07,2027-06-15,CMH139 > Construction > Main Building - Building D > Phase 4 (ROMP06 & 08) > Phase 4 - Electrical Room
P6ER.1120,Phase 4 / Elec Rm - Install Split Systems & ERV,10,10,2027-06-18,2027-07-01,CMH139 > Construction > Main Building - Building D > Phase 4 (ROMP06 & 08) > Phase 4 - Electrical Room
P6ER.1810,Phase 4 / Elec Rm - Fire Protection Rough In,3,3,2027-06-18,2027-06-22,CMH139 > Construction > Main Building - Building D > Phase 4 (ROMP06 & 08) > Phase 4 - Electrical Room
P6ER.1820,Phase 4 / Elec Rm - Install OH Conduit / Mechanical Feeders,5,5,2027-06-18,2027-06-24,CMH139 > Construction > Main Building - Building D > Phase 4 (ROMP06 & 08) > Phase 4 - Electrical Room
P6ER.1390,Phase 4 / Elec Rm - Pull / Term HUPPs,2,2,2027-06-23,2027-06-24,CMH139 > Construction > Main Building - Building D > Phase 4 (ROMP06 & 08) > Phase 4 - Electrical Room
P6ER.1830,Phase 4 / Elec Rm - Set USB (LV Gear),5,5,2027-08-10,2027-08-16,CMH139 > Construction > Main Building - Building D > Phase 4 (ROMP06 & 08) > Phase 4 - Electrical Room
P6ER.1140,Phase 4 / Elec Rm - Install AMCOP Panels,1,1,2027-08-17,2027-08-17,CMH139 > Construction > Main Building - Building D > Phase 4 (ROMP06 & 08) > Phase 4 - Electrical Room
P6ER.1850,Phase 4 / Elec Rm - Doors & Hardware,5,5,2027-08-17,2027-08-23,CMH139 > Construction > Main Building - Building D > Phase 4 (ROMP06 & 08) > Phase 4 - Electrical Room
P6ER.1860,Phase 4 / Elec Rm - Breaker Testing USB,5,5,2027-08-17,2027-08-23,CMH139 > Construction > Main Building - Building D > Phase 4 (ROMP06 & 08) > Phase 4 - Electrical Room
P6ER.1840,Phase 4 / Elec Rm - Fill Buck Out,4,4,2027-08-17,2027-08-20,CMH139 > Construction > Main Building - Building D > Phase 4 (ROMP06 & 08) > Phase 4 - Electrical Room
P6ER.1870,Phase 4 / Elec Rm - Install Cable Tray,7,7,2027-08-17,2027-08-25,CMH139 > Construction > Main Building - Building D > Phase 4 (ROMP06 & 08) > Phase 4 - Electrical Room
P6ER.1210,Phase 4 / Elec Rm - Set SCCS Setting for Breakers,1,1,2027-08-24,2027-08-24,CMH139 > Construction > Main Building - Building D > Phase 4 (ROMP06 & 08) > Phase 4 - Electrical Room
P6ER.1110,Phase 4 / Elec Rm - Set OFCI Electrical Panels,5,5,2027-08-26,2027-09-01,CMH139 > Construction > Main Building - Building D > Phase 4 (ROMP06 & 08) > Phase 4 - Electrical Room
P6ER.1890,Phase 4 / Elec Rm - Fire Alarm / VESDA,5,5,2027-08-26,2027-09-01,CMH139 > Construction > Main Building - Building D > Phase 4 (ROMP06 & 08) > Phase 4 - Electrical Room
P6ER.1910,Phase 4 / Elec Rm - Install Bus Duct,7,7,2027-08-26,2027-09-03,CMH139 > Construction > Main Building - Building D > Phase 4 (ROMP06 & 08) > Phase 4 - Electrical Room
P6ER.2010,Phase 4 / Elec Rm - Install Control Conduit,5,5,2027-08-26,2027-09-01,CMH139 > Construction > Main Building - Building D > Phase 4 (ROMP06 & 08) > Phase 4 - Electrical Room
P6ER.1920,Phase 4 / Elec Rm - Install Electrical Raceways (Branch Conduits),10,10,2027-09-02,2027-09-16,CMH139 > Construction > Main Building - Building D > Phase 4 (ROMP06 & 08) > Phase 4 - Electrical Room
P6ER.1190,Phase 4 / Elec Rm - Pull & Term DLB Fiber,5,5,2027-09-02,2027-09-09,CMH139 > Construction > Main Building - Building D > Phase 4 (ROMP06 & 08) > Phase 4 - Electrical Room
P4ER.2020,Phase 4 / Elec Rm - Install UPS,4,4,2027-09-02,2027-09-08,CMH139 > Construction > Main Building - Building D > Phase 4 (ROMP06 & 08) > Phase 4 - Electrical Room
P6ER.1150,Phase 4 / Elec Rm - Pull PDC Feeders,5,5,2027-09-03,2027-09-10,CMH139 > Construction > Main Building - Building D > Phase 4 (ROMP06 & 08) > Phase 4 - Electrical Room
P6ER.1160,Phase 4 / Elec Rm - Terminate LV Electrical Panels,5,5,2027-09-08,2027-09-14,CMH139 > Construction > Main Building - Building D > Phase 4 (ROMP06 & 08) > Phase 4 - Electrical Room
P6ER.1940,Phase 4 / Elec Rm - Manufacturer Inspection USB,1,1,2027-09-10,2027-09-10,CMH139 > Construction > Main Building - Building D > Phase 4 (ROMP06 & 08) > Phase 4 - Electrical Room
P6ER.1220,Phase 4 / Elec Rm - Install Lighting,3,3,2027-09-13,2027-09-15,CMH139 > Construction > Main Building - Building D > Phase 4 (ROMP06 & 08) > Phase 4 - Electrical Room
P6ER.1960,Phase 4 / Elec Rm - Seismic Install,1,1,2027-09-13,2027-09-13,CMH139 > Construction > Main Building - Building D > Phase 4 (ROMP06 & 08) > Phase 4 - Electrical Room
P6ER.1990,Phase 4 / Elec Rm - Test & Terminate PDC Feeders,5,5,2027-09-13,2027-09-17,CMH139 > Construction > Main Building - Building D > Phase 4 (ROMP06 & 08) > Phase 4 - Electrical Room
P6ER.1970,Phase 4 / Elec Rm - Egress Lighting,3,3,2027-09-13,2027-09-15,CMH139 > Construction > Main Building - Building D > Phase 4 (ROMP06 & 08) > Phase 4 - Electrical Room
P6ER.1900,Phase 4 / Elec Rm - Install CRAC Unit & Exhaust Fan,5,5,2027-09-15,2027-09-21,CMH139 > Construction > Main Building - Building D > Phase 4 (ROMP06 & 08) > Phase 4 - Electrical Room
P6ER.1980,Phase 4 / Elec Rm - Trade Repair,3,3,2027-09-17,2027-09-21,CMH139 > Construction > Main Building - Building D > Phase 4 (ROMP06 & 08) > Phase 4 - Electrical Room
P6ER.2000,Phase 4 / Elec Rm - Final Paint / Touch Up,1,1,2027-09-22,2027-09-22,CMH139 > Construction > Main Building - Building D > Phase 4 (ROMP06 & 08) > Phase 4 - Electrical Room
P6ER.1930,Phase 4 / Elec Rm - OA Reference Piping,5,5,2027-09-22,2027-09-28,CMH139 > Construction > Main Building - Building D > Phase 4 (ROMP06 & 08) > Phase 4 - Electrical Room
P6ER.1180,Phase 4 / Elec Rm - BMS System,10,10,2027-09-29,2027-10-12,CMH139 > Construction > Main Building - Building D > Phase 4 (ROMP06 & 08) > Phase 4 - Electrical Room
P6ER.1950,Phase 4 / Elec Rm - Energize BMS Panels,1,1,2027-10-13,2027-10-13,CMH139 > Construction > Main Building - Building D > Phase 4 (ROMP06 & 08) > Phase 4 - Electrical Room
P6ER.1880,Phase 4 / Elec Rm - Cable Bus Termination,4,4,2027-10-27,2027-11-01,CMH139 > Construction > Main Building - Building D > Phase 4 (ROMP06 & 08) > Phase 4 - Electrical Room
P6RP.1040,Phase 4 / Data Hall - Stud Framing (Data Hall / Elec Rm Wall),5,5,2027-05-17,2027-05-21,CMH139 > Construction > Main Building - Building D > Phase 4 (ROMP06 & 08) > Phase 4 - Data Hall
P6RP.1370,Phase 4 / Data Hall - Stud Framing (Equipment Platform),5,5,2027-05-21,2027-05-27,CMH139 > Construction > Main Building - Building D > Phase 4 (ROMP06 & 08) > Phase 4 - Data Hall
P4RP.1600,Phase 4 / Data Hall - OH Electric Rough In,5,5,2027-05-28,2027-06-04,CMH139 > Construction > Main Building - Building D > Phase 4 (ROMP06 & 08) > Phase 4 - Data Hall
P4RP.1590,Phase 4 / Data Hall - Install Temp Wall Bulkhead,5,5,2027-06-07,2027-06-11,CMH139 > Construction > Main Building - Building D > Phase 4 (ROMP06 & 08) > Phase 4 - Data Hall
P4RP.1730,Phase 4 / Data Hall - Fire Protection Rough In,5,5,2027-06-11,2027-06-17,CMH139 > Construction > Main Building - Building D > Phase 4 (ROMP06 & 08) > Phase 4 - Data Hall
P4RP.1700,Phase 4 / Data Hall - Above Ceiling Cable Tray,3,3,2027-06-14,2027-06-16,CMH139 > Construction > Main Building - Building D > Phase 4 (ROMP06 & 08) > Phase 4 - Data Hall
P4RP.1710,Phase 4 / Data Hall - Seismic Install,2,2,2027-06-17,2027-06-18,CMH139 > Construction > Main Building - Building D > Phase 4 (ROMP06 & 08) > Phase 4 - Data Hall
P6RP.1100,Phase 4 / Data Hall - Wall Elec & FA Rough-In (IMP),4,4,2027-06-18,2027-06-23,CMH139 > Construction > Main Building - Building D > Phase 4 (ROMP06 & 08) > Phase 4 - Data Hall
P6RP.1380,Phase 4 / Data Hall - Wall Elec & FA Rough-In (Data Hall / Elec Rm),4,4,2027-06-18,2027-06-23,CMH139 > Construction > Main Building - Building D > Phase 4 (ROMP06 & 08) > Phase 4 - Data Hall
P4RP.1610,Phase 4 / Data Hall - In Wall Rough In Inspection (Electrical / FA),1,1,2027-06-24,2027-06-24,CMH139 > Construction > Main Building - Building D > Phase 4 (ROMP06 & 08) > Phase 4 - Data Hall
P6RP.1130,Phase 4 / Data Hall - Hang Drywall & Finish (Data Hall / Elec Rm),5,5,2027-06-25,2027-07-01,CMH139 > Construction > Main Building - Building D > Phase 4 (ROMP06 & 08) > Phase 4 - Data Hall
P6RP.1190,Phase 4 / Data Hall - Prime & First Coat Paint,3,3,2027-07-02,2027-07-07,CMH139 > Construction > Main Building - Building D > Phase 4 (ROMP06 & 08) > Phase 4 - Data Hall
P6RP.1050,Phase 4 / Data Hall - Fire Protection Drops,5,5,2027-07-08,2027-07-14,CMH139 > Construction > Main Building - Building D > Phase 4 (ROMP06 & 08) > Phase 4 - Data Hall
P4RP.1390,Phase 4 / Data Hall - Install Backdraft Dampers,5,5,2027-07-08,2027-07-14,CMH139 > Construction > Main Building - Building D > Phase 4 (ROMP06 & 08) > Phase 4 - Data Hall
P6RP.1020,Phase 4 / Data Hall - MARS Racking,7,7,2027-08-10,2027-08-18,CMH139 > Construction > Main Building - Building D > Phase 4 (ROMP06 & 08) > Phase 4 - Data Hall
P6RP.1070,Phase 4 / Data Hall - Install Lighting Wiring & Fixtures,5,5,2027-08-19,2027-08-25,CMH139 > Construction > Main Building - Building D > Phase 4 (ROMP06 & 08) > Phase 4 - Data Hall
P6RP.1060,Phase 4 / Data Hall - Upper Polycarbonate Panels and Cold Aisle Cable Tray Arms,3,3,2027-08-19,2027-08-23,CMH139 > Construction > Main Building - Building D > Phase 4 (ROMP06 & 08) > Phase 4 - Data Hall
P6RP.1230,Phase 4 / Data Hall - Install Control Dampers (PRD),5,5,2027-08-19,2027-08-25,CMH139 > Construction > Main Building - Building D > Phase 4 (ROMP06 & 08) > Phase 4 - Data Hall
P6RP.1200,Phase 4 / Data Hall - Power PDC Whips,10,10,2027-08-19,2027-09-01,CMH139 > Construction > Main Building - Building D > Phase 4 (ROMP06 & 08) > Phase 4 - Data Hall
P6RP.1360,Phase 4 / Data Hall - Temp Wall Install,5,5,2027-08-19,2027-08-25,CMH139 > Construction > Main Building - Building D > Phase 4 (ROMP06 & 08) > Phase 4 - Data Hall
P4RP.1620,Phase 4 / Data Hall - ACT Grid Corridors,4,4,2027-08-19,2027-08-24,CMH139 > Construction > Main Building - Building D > Phase 4 (ROMP06 & 08) > Phase 4 - Data Hall
P4RP.1630,Phase 4 / Data Hall - Install Snubbers,5,5,2027-08-19,2027-08-25,CMH139 > Construction > Main Building - Building D > Phase 4 (ROMP06 & 08) > Phase 4 - Data Hall
P6RP.1030,Phase 4 / Data Hall - PDC Feeders Drops & Supports,10,10,2027-08-19,2027-09-01,CMH139 > Construction > Main Building - Building D > Phase 4 (ROMP06 & 08) > Phase 4 - Data Hall
P6RP.1210,Phase 4 / Data Hall - Fire Alarm VESDA,10,10,2027-08-23,2027-09-03,CMH139 > Construction > Main Building - Building D > Phase 4 (ROMP06 & 08) > Phase 4 - Data Hall
P4RP.1640,Phase 4 / Data Hall - ACT Grid Cold Aisles,5,5,2027-08-23,2027-08-27,CMH139 > Construction > Main Building - Building D > Phase 4 (ROMP06 & 08) > Phase 4 - Data Hall
P6RP.1260,Phase 4 / Data Hall - Perfect Position,4,4,2027-08-24,2027-08-27,CMH139 > Construction > Main Building - Building D > Phase 4 (ROMP06 & 08) > Phase 4 - Data Hall
P6RP.1250,Phase 4 / Data Hall - Doors and Hardware,2,2,2027-08-26,2027-08-27,CMH139 > Construction > Main Building - Building D > Phase 4 (ROMP06 & 08) > Phase 4 - Data Hall
P4RP.1650,Phase 4 / Data Hall - Install Control Wiring,5,5,2027-08-26,2027-09-01,CMH139 > Construction > Main Building - Building D > Phase 4 (ROMP06 & 08) > Phase 4 - Data Hall
P6RP.1290,Phase 4 / Data Hall - Avenue Basket/Cable Tray (South),2,2,2027-08-30,2027-08-31,CMH139 > Construction > Main Building - Building D > Phase 4 (ROMP06 & 08) > Phase 4 - Data Hall
P6RP.1280,Phase 4 / Data Hall - Install Fire Protection Heads Avenue,2,2,2027-08-30,2027-08-31,CMH139 > Construction > Main Building - Building D > Phase 4 (ROMP06 & 08) > Phase 4 - Data Hall
P6RP.1160,Phase 4 / Data Hall - Cold Aisle Basket/Cable Tray,3,3,2027-08-30,2027-09-01,CMH139 > Construction > Main Building - Building D > Phase 4 (ROMP06 & 08) > Phase 4 - Data Hall
P4RP.1660,Phase 4 / Data Hall - ACT Borders For Corridors,1,1,2027-08-30,2027-08-30,CMH139 > Construction > Main Building - Building D > Phase 4 (ROMP06 & 08) > Phase 4 - Data Hall
P4RP.1720,Phase 4 / Data Hall - Install Fire Protection Heads Cold Aisle,2,2,2027-08-30,2027-08-31,CMH139 > Construction > Main Building - Building D > Phase 4 (ROMP06 & 08) > Phase 4 - Data Hall
P4RP.1670,Phase 4 / Data Hall - ACT Borders For Cold Aisles,1,1,2027-08-31,2027-08-31,CMH139 > Construction > Main Building - Building D > Phase 4 (ROMP06 & 08) > Phase 4 - Data Hall
P6RP.1310,Phase 4 / Data Hall - Structural Overhead Inspection (Avenue),1,1,2027-09-01,2027-09-01,CMH139 > Construction > Main Building - Building D > Phase 4 (ROMP06 & 08) > Phase 4 - Data Hall
P6RP.1390,Phase 4 / Data Hall - Avenue Basket/Cable Tray (North),2,2,2027-09-01,2027-09-02,CMH139 > Construction > Main Building - Building D > Phase 4 (ROMP06 & 08) > Phase 4 - Data Hall
P4RP.1690,Phase 4 / Data Hall - ACT Remaining Tile Drops Post Inspection,3,3,2027-09-02,2027-09-07,CMH139 > Construction > Main Building - Building D > Phase 4 (ROMP06 & 08) > Phase 4 - Data Hall
P4RP.1680,Phase 4 / Data Hall - Touch Up Paint,4,4,2027-09-02,2027-09-08,CMH139 > Construction > Main Building - Building D > Phase 4 (ROMP06 & 08) > Phase 4 - Data Hall
P6RP.1340,Phase 4 / Data Hall - CAT6 Cable Install,3,3,2027-09-03,2027-09-08,CMH139 > Construction > Main Building - Building D > Phase 4 (ROMP06 & 08) > Phase 4 - Data Hall
P6RP.1080,Phase 4 / Data Hall - Set PDC Cabinets,3,3,2027-09-08,2027-09-10,CMH139 > Construction > Main Building - Building D > Phase 4 (ROMP06 & 08) > Phase 4 - Data Hall
P6RP.1110,Phase 4 / Data Hall - BMS,15,15,2027-09-13,2027-10-01,CMH139 > Construction > Main Building - Building D > Phase 4 (ROMP06 & 08) > Phase 4 - Data Hall
P6RP.1270,Phase 4 / Data Hall - PDC Feeders Test & Terminate,10,10,2027-09-13,2027-09-24,CMH139 > Construction > Main Building - Building D > Phase 4 (ROMP06 & 08) > Phase 4 - Data Hall
P6RP.1350,Phase 4 / Data Hall - EPMS,15,15,2027-09-13,2027-10-01,CMH139 > Construction > Main Building - Building D > Phase 4 (ROMP06 & 08) > Phase 4 - Data Hall
P6RP.1180,Phase 4 / Data Hall - Lower Polycarbonate Panels,5,5,2027-10-04,2027-10-08,CMH139 > Construction > Main Building - Building D > Phase 4 (ROMP06 & 08) > Phase 4 - Data Hall
P6RP.1090,Phase 4 / Data Hall - NEA Finalization,19,19,2027-12-28,2028-01-24,CMH139 > Construction > Main Building - Building D > Phase 4 (ROMP06 & 08) > Phase 4 - Data Hall
P6RP.1120,Phase 4 / Data Hall - H2C Readiness Coordination,14,14,2028-01-25,2028-02-11,CMH139 > Construction > Main Building - Building D > Phase 4 (ROMP06 & 08) > Phase 4 - Data Hall
P6DG.1240,Phase 4 / TAHU - Fire Protection Rough In,5,5,2027-06-04,2027-06-10,CMH139 > Construction > Main Building - Building D > Phase 4 (ROMP06 & 08) > Phase 4 - TAHU Gallery
P6DG.1100,Phase 4 / TAHU - Sound Attenuator,10,10,2027-06-18,2027-07-01,CMH139 > Construction > Main Building - Building D > Phase 4 (ROMP06 & 08) > Phase 4 - TAHU Gallery
P6DG.1130,Phase 4 / TAHU - Seismic Install,2,2,2027-06-18,2027-06-21,CMH139 > Construction > Main Building - Building D > Phase 4 (ROMP06 & 08) > Phase 4 - TAHU Gallery
P6DG.1180,Phase 4 / TAHU - Hang Outside Stairwell / Lobby Drywall,4,4,2027-06-18,2027-06-23,CMH139 > Construction > Main Building - Building D > Phase 4 (ROMP06 & 08) > Phase 4 - TAHU Gallery
P6DG.1190,Phase 4 / TAHU - Install CFMF IMP Support,10,10,2027-06-18,2027-07-01,CMH139 > Construction > Main Building - Building D > Phase 4 (ROMP06 & 08) > Phase 4 - TAHU Gallery
P6DG.1040,Phase 4 / TAHU - Install IMP Panels,6,6,2027-07-02,2027-07-12,CMH139 > Construction > Main Building - Building D > Phase 4 (ROMP06 & 08) > Phase 4 - TAHU Gallery
P6DG.1050,Phase 4 / TAHU - Fire Alarm (VESDA),5,5,2027-07-13,2027-07-19,CMH139 > Construction > Main Building - Building D > Phase 4 (ROMP06 & 08) > Phase 4 - TAHU Gallery
P6DG.1080,Phase 4 / TAHU - Prime & Paint Drywall,3,3,2027-07-13,2027-07-15,CMH139 > Construction > Main Building - Building D > Phase 4 (ROMP06 & 08) > Phase 4 - TAHU Gallery
P6DG.1010,Phase 4 / TAHU - BMS Controls Rough In,10,10,2027-07-13,2027-07-26,CMH139 > Construction > Main Building - Building D > Phase 4 (ROMP06 & 08) > Phase 4 - TAHU Gallery
P6DG.1030,Phase 4 / TAHU - Wall Elec & Fire Alarm Rough-In,5,5,2027-07-13,2027-07-19,CMH139 > Construction > Main Building - Building D > Phase 4 (ROMP06 & 08) > Phase 4 - TAHU Gallery
P6DG.1090,Phase 4 / TAHU - Control Dampers,5,5,2027-07-16,2027-07-22,CMH139 > Construction > Main Building - Building D > Phase 4 (ROMP06 & 08) > Phase 4 - TAHU Gallery
P6DG.1110,Phase 4 / TAHU - Pull & Terminate Fire Alarm Cable,5,5,2027-07-20,2027-07-26,CMH139 > Construction > Main Building - Building D > Phase 4 (ROMP06 & 08) > Phase 4 - TAHU Gallery
P6DG.1070,Phase 4 / TAHU - Set TAHUs,2,2,2027-08-10,2027-08-11,CMH139 > Construction > Main Building - Building D > Phase 4 (ROMP06 & 08) > Phase 4 - TAHU Gallery
P6DG.1140,Phase 4 / TAHU - Doors and Hardware,3,3,2027-08-12,2027-08-16,CMH139 > Construction > Main Building - Building D > Phase 4 (ROMP06 & 08) > Phase 4 - TAHU Gallery
P6DG.1060,Phase 4 / TAHU - IW Supply Piping at TAHUs,10,10,2027-08-12,2027-08-25,CMH139 > Construction > Main Building - Building D > Phase 4 (ROMP06 & 08) > Phase 4 - TAHU Gallery
P6DG.1210,Phase 4 / TAHU - TAHU Trim,10,10,2027-08-12,2027-08-25,CMH139 > Construction > Main Building - Building D > Phase 4 (ROMP06 & 08) > Phase 4 - TAHU Gallery
P6DG.1220,Phase 4 / TAHU - Paint Doors & Frames,2,2,2027-08-17,2027-08-18,CMH139 > Construction > Main Building - Building D > Phase 4 (ROMP06 & 08) > Phase 4 - TAHU Gallery
P6DG.1150,Phase 4 / TAHU - Lighting,5,5,2027-08-26,2027-09-01,CMH139 > Construction > Main Building - Building D > Phase 4 (ROMP06 & 08) > Phase 4 - TAHU Gallery
P6DG.1160,Phase 4 / TAHU - Tie In TAHUs,10,10,2027-08-26,2027-09-09,CMH139 > Construction > Main Building - Building D > Phase 4 (ROMP06 & 08) > Phase 4 - TAHU Gallery
P6DG.1170,Phase 4 / TAHU - BMS Tie In,2,2,2027-09-08,2027-09-09,CMH139 > Construction > Main Building - Building D > Phase 4 (ROMP06 & 08) > Phase 4 - TAHU Gallery
P6DG.1120,Phase 4 / TAHU - IW Drain Piping at TAHUs,5,5,2027-09-10,2027-09-16,CMH139 > Construction > Main Building - Building D > Phase 4 (ROMP06 & 08) > Phase 4 - TAHU Gallery
P6DG.1230,Phase 4 / TAHU - Terminate Power To TAHUs,3,3,2027-09-17,2027-09-21,CMH139 > Construction > Main Building - Building D > Phase 4 (ROMP06 & 08) > Phase 4 - TAHU Gallery
P6CX.1100,Phase 4 / Cx - EC L2 Cx Review for MV Switchgear,1,1,2027-05-04,2027-05-04,CMH139 > Construction > Main Building - Building D > Phase 4 (ROMP06 & 08) > Phase 4 - Cx
P6CX.1080,Phase 4 / Cx - EC L2 Cx Review for MV XFMRs,1,1,2027-05-05,2027-05-05,CMH139 > Construction > Main Building - Building D > Phase 4 (ROMP06 & 08) > Phase 4 - Cx
P6CX.1090,Phase 4 / Cx - EC L3 Cx for MV XFMRs,5,5,2027-05-06,2027-05-12,CMH139 > Construction > Main Building - Building D > Phase 4 (ROMP06 & 08) > Phase 4 - Cx
P6CX.1360,Phase 4 / Cx - Eaton XFMR Testing,3,3,2027-05-06,2027-05-10,CMH139 > Construction > Main Building - Building D > Phase 4 (ROMP06 & 08) > Phase 4 - Cx
P6CX.1130,Phase 4 / Cx - EC L3 Cx for MV,3,3,2027-05-11,2027-05-13,CMH139 > Construction > Main Building - Building D > Phase 4 (ROMP06 & 08) > Phase 4 - Cx
P6CX.1200,Phase 4 / Cx - Fuel System Cx,7,7,2027-07-02,2027-07-13,CMH139 > Construction > Main Building - Building D > Phase 4 (ROMP06 & 08) > Phase 4 - Cx
P6CX.1180,Phase 4 / Cx - Construction Power To Generator,3,3,2027-08-12,2027-08-16,CMH139 > Construction > Main Building - Building D > Phase 4 (ROMP06 & 08) > Phase 4 - Cx
P6CX.1030,Phase 4 / Cx - CAT L2 Cx Generators,2,2,2027-08-17,2027-08-18,CMH139 > Construction > Main Building - Building D > Phase 4 (ROMP06 & 08) > Phase 4 - Cx
P6CX.1120,Phase 4 / Cx - EC 3rd Party Testing & Inspection USB (L2),3,3,2027-08-17,2027-08-19,CMH139 > Construction > Main Building - Building D > Phase 4 (ROMP06 & 08) > Phase 4 - Cx
P6CX.1160,Phase 4 / Cx - HUPPS Panelboards Energized,1,1,2027-09-02,2027-09-02,CMH139 > Construction > Main Building - Building D > Phase 4 (ROMP06 & 08) > Phase 4 - Cx
P6CX.1000,Phase 4 / Cx - EC 3rd Party LV Panelboard Testing (L2),3,3,2027-09-02,2027-09-07,CMH139 > Construction > Main Building - Building D > Phase 4 (ROMP06 & 08) > Phase 4 - Cx
P6CX.1320,Phase 4 / Cx - AMCOP / BACOP Start Up & Cx,5,5,2027-09-02,2027-09-09,CMH139 > Construction > Main Building - Building D > Phase 4 (ROMP06 & 08) > Phase 4 - Cx
P6CX.1370,Phase 4 / Cx - Energize Control Network Arch,1,1,2027-09-03,2027-09-03,CMH139 > Construction > Main Building - Building D > Phase 4 (ROMP06 & 08) > Phase 4 - Cx
P6CX.2010,Phase 4 / Cx - Fire Alarm Programming & Pretest,2,2,2027-09-07,2027-09-08,CMH139 > Construction > Main Building - Building D > Phase 4 (ROMP06 & 08) > Phase 4 - Cx
P6CX.1230,Phase 4 / Cx - EC 3rd Party Busway Bus Plug Testing (L2),2,2,2027-09-07,2027-09-08,CMH139 > Construction > Main Building - Building D > Phase 4 (ROMP06 & 08) > Phase 4 - Cx
P4CX.2080,Phase 4 / Cx - EPMS Point to Point (USB),4,4,2027-09-07,2027-09-10,CMH139 > Construction > Main Building - Building D > Phase 4 (ROMP06 & 08) > Phase 4 - Cx
P6MCM.6010,Phase 4 / Cx - Tie in MOP C1,2,2,2027-09-09,2027-09-10,CMH139 > Construction > Main Building - Building D > Phase 4 (ROMP06 & 08) > Phase 4 - Cx
P6MCM.6020,Phase 4 / Cx - Eaton DLB Programming & Test (FLORES),5,5,2027-09-10,2027-09-16,CMH139 > Construction > Main Building - Building D > Phase 4 (ROMP06 & 08) > Phase 4 - Cx
P6MCM.6030,Phase 4 / Cx - Tie in MOP C2,2,2,2027-09-13,2027-09-14,CMH139 > Construction > Main Building - Building D > Phase 4 (ROMP06 & 08) > Phase 4 - Cx
P6CX.1140,Phase 4 / Cx - EC 3rd Party Busway C1 / C2 Testing,2,2,2027-09-15,2027-09-16,CMH139 > Construction > Main Building - Building D > Phase 4 (ROMP06 & 08) > Phase 4 - Cx
P6CX.1190,Phase 4 / Cx - EC L2 Cx Review for LV Panelboard,2,2,2027-09-15,2027-09-16,CMH139 > Construction > Main Building - Building D > Phase 4 (ROMP06 & 08) > Phase 4 - Cx
P6MS.180,Phase 4 / Cx - Life Safety Walkthrough,1,1,2027-09-16,2027-09-16,CMH139 > Construction > Main Building - Building D > Phase 4 (ROMP06 & 08) > Phase 4 - Cx
P6CX.1260,Phase 4 / Cx - EC L3 Cx LV Panelboard,1,1,2027-09-17,2027-09-17,CMH139 > Construction > Main Building - Building D > Phase 4 (ROMP06 & 08) > Phase 4 - Cx
P6CX.1170,Phase 4 / Cx - EC Busway C1 / C2 L2 Cx Review,1,1,2027-09-17,2027-09-17,CMH139 > Construction > Main Building - Building D > Phase 4 (ROMP06 & 08) > Phase 4 - Cx
P6CX.1220,Phase 4 / Cx - EC Busway C1 L3 Cx,2,2,2027-09-20,2027-09-21,CMH139 > Construction > Main Building - Building D > Phase 4 (ROMP06 & 08) > Phase 4 - Cx
P4CX.2100,Phase 4 / Cx - EPMS Point to Point (PDC),4,4,2027-09-20,2027-09-23,CMH139 > Construction > Main Building - Building D > Phase 4 (ROMP06 & 08) > Phase 4 - Cx
P6CX.1210,Phase 4 / Cx - MC TAHU L2 Cx,5,5,2027-09-22,2027-09-28,CMH139 > Construction > Main Building - Building D > Phase 4 (ROMP06 & 08) > Phase 4 - Cx
P6CX.2020,Phase 4 / Cx - EC Busway C2 L3 Cx,2,2,2027-09-22,2027-09-23,CMH139 > Construction > Main Building - Building D > Phase 4 (ROMP06 & 08) > Phase 4 - Cx
P4CX.2090,Phase 4 / Cx - BMS Point to Point (TAHUs),5,5,2027-10-13,2027-10-19,CMH139 > Construction > Main Building - Building D > Phase 4 (ROMP06 & 08) > Phase 4 - Cx
P6CX.1150,Phase 4 / Cx - EC L3 Cx USBs,2,2,2027-11-10,2027-11-11,CMH139 > Construction > Main Building - Building D > Phase 4 (ROMP06 & 08) > Phase 4 - Cx
P6CX.1250,Phase 4 / Cx - Vendor UPS Start Up & Cx,9,9,2027-11-12,2027-11-24,CMH139 > Construction > Main Building - Building D > Phase 4 (ROMP06 & 08) > Phase 4 - Cx
P6CX.1310,Phase 4 / Cx - ATS L3 Cx,1,1,2027-11-12,2027-11-12,CMH139 > Construction > Main Building - Building D > Phase 4 (ROMP06 & 08) > Phase 4 - Cx
P6CX.1340,Phase 4 / Cx - Eaton DLB Testing,2,2,2027-11-12,2027-11-15,CMH139 > Construction > Main Building - Building D > Phase 4 (ROMP06 & 08) > Phase 4 - Cx
P6CX.2030,Phase 4 / Cx - Energize MSDBs,1,1,2027-11-15,2027-11-15,CMH139 > Construction > Main Building - Building D > Phase 4 (ROMP06 & 08) > Phase 4 - Cx
P6CX.1290,Phase 4 / Cx - Split System Startup & Commissioning,10,10,2027-11-16,2027-12-01,CMH139 > Construction > Main Building - Building D > Phase 4 (ROMP06 & 08) > Phase 4 - Cx
P6CX.1280,Phase 4 / Cx - ERV Startup & Commissioning,10,10,2027-11-16,2027-12-01,CMH139 > Construction > Main Building - Building D > Phase 4 (ROMP06 & 08) > Phase 4 - Cx
P6CX.1270,Phase 4 / Cx - EDH Startup & Commissioning,4,4,2027-11-16,2027-11-19,CMH139 > Construction > Main Building - Building D > Phase 4 (ROMP06 & 08) > Phase 4 - Cx
P6CX.1300,Phase 4 / Cx - IW System L2 Cx,2,2,2027-11-16,2027-11-17,CMH139 > Construction > Main Building - Building D > Phase 4 (ROMP06 & 08) > Phase 4 - Cx
P6CX.1380,Phase 4 / Cx - IW System L3 Cx,10,10,2027-11-18,2027-12-03,CMH139 > Construction > Main Building - Building D > Phase 4 (ROMP06 & 08) > Phase 4 - Cx
P6CX.1040,Phase 4 / Cx - EC L2 Cx Review for Generator,1,1,2027-12-03,2027-12-03,CMH139 > Construction > Main Building - Building D > Phase 4 (ROMP06 & 08) > Phase 4 - Cx
P6CX.1070,Phase 4 / Cx - EC L3 Cx Generators,3,3,2027-12-06,2027-12-08,CMH139 > Construction > Main Building - Building D > Phase 4 (ROMP06 & 08) > Phase 4 - Cx
P6CX.1060,Phase 4 / Cx - CAT L3 Cx Generators Testing,5,5,2027-12-06,2027-12-10,CMH139 > Construction > Main Building - Building D > Phase 4 (ROMP06 & 08) > Phase 4 - Cx
P6CX.1240,Phase 4 / Cx - Vendor TAHU L3 Cx,10,10,2027-12-06,2027-12-17,CMH139 > Construction > Main Building - Building D > Phase 4 (ROMP06 & 08) > Phase 4 - Cx
P6CX.1330,Phase 4 / Cx - Test & Balance,5,5,2027-12-20,2027-12-27,CMH139 > Construction > Main Building - Building D > Phase 4 (ROMP06 & 08) > Phase 4 - Cx
P6CX.1350,Phase 4 / Cx - L4 / L5 Cx,15,15,2028-02-14,2028-03-03,CMH139 > Construction > Main Building - Building D > Phase 4 (ROMP06 & 08) > Phase 4 - Cx
P9EX.1030,Phase 5 / Gen Yard - Set Transformers,2,2,2027-04-23,2027-04-26,CMH139 > Construction > Main Building - Building D > Phase 5 (ROMP09 & 11) > Phase 5 - Gen Yard
P9EX.1050,"Phase 5 / Gen Yard - Pull, Term & Test MV through XFMRs",7,7,2027-04-27,2027-05-05,CMH139 > Construction > Main Building - Building D > Phase 5 (ROMP09 & 11) > Phase 5 - Gen Yard
P9EX.1100,Phase 5 / Gen Yard - Pull In FLORES Loop,5,5,2027-05-06,2027-05-12,CMH139 > Construction > Main Building - Building D > Phase 5 (ROMP09 & 11) > Phase 5 - Gen Yard
P9EX.1370,Phase 5 / Gen Yard - Install Fuel Piping,30,30,2027-05-20,2027-07-01,CMH139 > Construction > Main Building - Building D > Phase 5 (ROMP09 & 11) > Phase 5 - Gen Yard
P9EX.1380,Phase 5 / Gen Yard - Install Fuel System Control Conduit,10,10,2027-06-04,2027-06-17,CMH139 > Construction > Main Building - Building D > Phase 5 (ROMP09 & 11) > Phase 5 - Gen Yard
P9EX.1120,Phase 5 / Gen Yard - Pour Sidewalk,5,5,2027-06-18,2027-06-24,CMH139 > Construction > Main Building - Building D > Phase 5 (ROMP09 & 11) > Phase 5 - Gen Yard
P9EX.1060,Phase 5 / Gen Yard - Set Generators,2,2,2027-09-07,2027-09-08,CMH139 > Construction > Main Building - Building D > Phase 5 (ROMP09 & 11) > Phase 5 - Gen Yard
P9EX.1090,Phase 5 / Gen Yard - Set Exhaust Stack and Shroud,12,12,2027-09-09,2027-09-24,CMH139 > Construction > Main Building - Building D > Phase 5 (ROMP09 & 11) > Phase 5 - Gen Yard
P9EX.1390,Phase 5 / Gen Yard - Grounding / Lightning Protection,2,2,2027-09-27,2027-09-28,CMH139 > Construction > Main Building - Building D > Phase 5 (ROMP09 & 11) > Phase 5 - Gen Yard
P9EX.1080,Phase 5 / Gen Yard - Install Generator Platforms,5,5,2027-10-07,2027-10-13,CMH139 > Construction > Main Building - Building D > Phase 5 (ROMP09 & 11) > Phase 5 - Gen Yard
P9EX.1130,Phase 5 / Gen Yard - Install Foundations & Fencing,4,4,2027-10-14,2027-10-19,CMH139 > Construction > Main Building - Building D > Phase 5 (ROMP09 & 11) > Phase 5 - Gen Yard
P9EX.1040,Phase 5 / Gen Yard - Install Cable Bus Structure,5,5,2027-10-20,2027-10-26,CMH139 > Construction > Main Building - Building D > Phase 5 (ROMP09 & 11) > Phase 5 - Gen Yard
P9EX.1070,Phase 5 / Gen Yard - LV Cable Bus and Feeders - XFMRs to USBs,10,10,2027-10-27,2027-11-09,CMH139 > Construction > Main Building - Building D > Phase 5 (ROMP09 & 11) > Phase 5 - Gen Yard
P9EX.1110,Phase 5 / Gen Yard - Energize Electrical - Site To Phase,0,0,,2027-11-09,CMH139 > Construction > Main Building - Building D > Phase 5 (ROMP09 & 11) > Phase 5 - Gen Yard
P9EX.1190,Phase 5 / Gen Yard - LV Cable Bus and Feeders - Gens to USBs,15,15,2027-11-10,2027-12-02,CMH139 > Construction > Main Building - Building D > Phase 5 (ROMP09 & 11) > Phase 5 - Gen Yard
P9ER.2010,Phase 5 / Elec Rm - Layout,1,1,2027-04-30,2027-04-30,CMH139 > Construction > Main Building - Building D > Phase 5 (ROMP09 & 11) > Phase 5 - Electrical Room
P9ER.2240,Phase 5 / Elec Rm - Install DriClad,10,10,2027-05-03,2027-05-14,CMH139 > Construction > Main Building - Building D > Phase 5 (ROMP09 & 11) > Phase 5 - Electrical Room
P9ER.1040,Phase 5 / Elec Rm - Wall Electric & Fire Alarm Rough-in,5,5,2027-05-14,2027-05-20,CMH139 > Construction > Main Building - Building D > Phase 5 (ROMP09 & 11) > Phase 5 - Electrical Room
P9ER.1020,Phase 5 / Elec Rm - Stud Framing,4,4,2027-05-17,2027-05-20,CMH139 > Construction > Main Building - Building D > Phase 5 (ROMP09 & 11) > Phase 5 - Electrical Room
P9ER.1060,Phase 5 / Elec Rm - Hang Drywall & Finish,5,5,2027-05-21,2027-05-27,CMH139 > Construction > Main Building - Building D > Phase 5 (ROMP09 & 11) > Phase 5 - Electrical Room
P9ER.1380,Phase 5 / Elec Rm - Hangers,3,3,2027-05-21,2027-05-25,CMH139 > Construction > Main Building - Building D > Phase 5 (ROMP09 & 11) > Phase 5 - Electrical Room
P9ER.1080,Phase 5 / Elec Rm - Prime & First Coat Paint,1,1,2027-05-28,2027-05-28,CMH139 > Construction > Main Building - Building D > Phase 5 (ROMP09 & 11) > Phase 5 - Electrical Room
P9ER.1000,Phase 5 / Elec Rm - Pull TAHU Feeders,5,5,2027-06-07,2027-06-11,CMH139 > Construction > Main Building - Building D > Phase 5 (ROMP09 & 11) > Phase 5 - Electrical Room
P9ER.1010,Phase 5 / Elec Rm - Pull Lighting Control Wiring,7,7,2027-06-14,2027-06-22,CMH139 > Construction > Main Building - Building D > Phase 5 (ROMP09 & 11) > Phase 5 - Electrical Room
P9ER.1120,Phase 5 / Elec Rm - Install Split Systems & ERV,10,10,2027-07-23,2027-08-05,CMH139 > Construction > Main Building - Building D > Phase 5 (ROMP09 & 11) > Phase 5 - Electrical Room
P9ER.2020,Phase 5 / Elec Rm - Fire Protection Rough In,3,3,2027-07-23,2027-07-27,CMH139 > Construction > Main Building - Building D > Phase 5 (ROMP09 & 11) > Phase 5 - Electrical Room
P9ER.2030,Phase 5 / Elec Rm - Install OH Conduit / Mechanical Feeders,5,5,2027-07-23,2027-07-29,CMH139 > Construction > Main Building - Building D > Phase 5 (ROMP09 & 11) > Phase 5 - Electrical Room
P9ER.2220,Phase 5 / Elec Rm - Pull / Term HUPPs,2,2,2027-07-28,2027-07-29,CMH139 > Construction > Main Building - Building D > Phase 5 (ROMP09 & 11) > Phase 5 - Electrical Room
P9ER.2040,Phase 5 / Elec Rm - Set USB (LV Gear),5,5,2027-09-07,2027-09-13,CMH139 > Construction > Main Building - Building D > Phase 5 (ROMP09 & 11) > Phase 5 - Electrical Room
P9ER.1140,Phase 5 / Elec Rm - Install AMCOP Panels,1,1,2027-09-14,2027-09-14,CMH139 > Construction > Main Building - Building D > Phase 5 (ROMP09 & 11) > Phase 5 - Electrical Room
P9ER.2060,Phase 5 / Elec Rm - Doors & Hardware,5,5,2027-09-14,2027-09-20,CMH139 > Construction > Main Building - Building D > Phase 5 (ROMP09 & 11) > Phase 5 - Electrical Room
P9ER.2070,Phase 5 / Elec Rm - Breaker Testing USB,5,5,2027-09-14,2027-09-20,CMH139 > Construction > Main Building - Building D > Phase 5 (ROMP09 & 11) > Phase 5 - Electrical Room
P9ER.2050,Phase 5 / Elec Rm - Fill Buck Out,4,4,2027-09-14,2027-09-17,CMH139 > Construction > Main Building - Building D > Phase 5 (ROMP09 & 11) > Phase 5 - Electrical Room
P9ER.2080,Phase 5 / Elec Rm - Install Cable Tray,7,7,2027-09-14,2027-09-22,CMH139 > Construction > Main Building - Building D > Phase 5 (ROMP09 & 11) > Phase 5 - Electrical Room
P9ER.1210,Phase 5 / Elec Rm - Set SCCS Setting for Breakers,1,1,2027-09-21,2027-09-21,CMH139 > Construction > Main Building - Building D > Phase 5 (ROMP09 & 11) > Phase 5 - Electrical Room
P9ER.1110,Phase 5 / Elec Rm - Set OFCI Electrical Panels,5,5,2027-09-23,2027-09-29,CMH139 > Construction > Main Building - Building D > Phase 5 (ROMP09 & 11) > Phase 5 - Electrical Room
P9ER.2100,Phase 5 / Elec Rm - Fire Alarm / VESDA,5,5,2027-09-23,2027-09-29,CMH139 > Construction > Main Building - Building D > Phase 5 (ROMP09 & 11) > Phase 5 - Electrical Room
P9ER.2120,Phase 5 / Elec Rm - Install Bus Duct,7,7,2027-09-23,2027-10-01,CMH139 > Construction > Main Building - Building D > Phase 5 (ROMP09 & 11) > Phase 5 - Electrical Room
P9ER.2110,Phase 5 / Elec Rm - Install CRAC Unit & Exhaust Fan,5,5,2027-09-23,2027-09-29,CMH139 > Construction > Main Building - Building D > Phase 5 (ROMP09 & 11) > Phase 5 - Electrical Room
P9ER.2230,Phase 5 / Elec Rm - Install Control Conduit,5,5,2027-09-23,2027-09-29,CMH139 > Construction > Main Building - Building D > Phase 5 (ROMP09 & 11) > Phase 5 - Electrical Room
P9ER.1330,Phase 5 / Elec Rm - Pull & Term DLB Fiber,5,5,2027-09-30,2027-10-06,CMH139 > Construction > Main Building - Building D > Phase 5 (ROMP09 & 11) > Phase 5 - Electrical Room
P9ER.2130,Phase 5 / Elec Rm - Install Electrical Raceways (Branch Conduits),10,10,2027-09-30,2027-10-13,CMH139 > Construction > Main Building - Building D > Phase 5 (ROMP09 & 11) > Phase 5 - Electrical Room
P9ER.2140,Phase 5 / Elec Rm - OA Reference Piping,5,5,2027-09-30,2027-10-06,CMH139 > Construction > Main Building - Building D > Phase 5 (ROMP09 & 11) > Phase 5 - Electrical Room
P5ER.2240,Phase 5 / Elec Rm - Install UPS,4,4,2027-09-30,2027-10-05,CMH139 > Construction > Main Building - Building D > Phase 5 (ROMP09 & 11) > Phase 5 - Electrical Room
P9ER.1150,Phase 5 / Elec Rm - Pull PDC Feeders,5,5,2027-10-01,2027-10-07,CMH139 > Construction > Main Building - Building D > Phase 5 (ROMP09 & 11) > Phase 5 - Electrical Room
P9ER.1160,Phase 5 / Elec Rm - Terminate LV Electrical Panels,5,5,2027-10-05,2027-10-11,CMH139 > Construction > Main Building - Building D > Phase 5 (ROMP09 & 11) > Phase 5 - Electrical Room
P9ER.2150,Phase 5 / Elec Rm - Manufacturer Inspection USB,1,1,2027-10-07,2027-10-07,CMH139 > Construction > Main Building - Building D > Phase 5 (ROMP09 & 11) > Phase 5 - Electrical Room
P9ER.1220,Phase 5 / Elec Rm - Install Lighting,3,3,2027-10-08,2027-10-12,CMH139 > Construction > Main Building - Building D > Phase 5 (ROMP09 & 11) > Phase 5 - Electrical Room
P9ER.2170,Phase 5 / Elec Rm - Seismic Install,1,1,2027-10-08,2027-10-08,CMH139 > Construction > Main Building - Building D > Phase 5 (ROMP09 & 11) > Phase 5 - Electrical Room
P9ER.2200,Phase 5 / Elec Rm - Test & Terminate PDC Feeders,5,5,2027-10-08,2027-10-14,CMH139 > Construction > Main Building - Building D > Phase 5 (ROMP09 & 11) > Phase 5 - Electrical Room
P9ER.2180,Phase 5 / Elec Rm - Egress Lighting,3,3,2027-10-08,2027-10-12,CMH139 > Construction > Main Building - Building D > Phase 5 (ROMP09 & 11) > Phase 5 - Electrical Room
P9ER.1180,Phase 5 / Elec Rm - BMS System,10,10,2027-10-12,2027-10-25,CMH139 > Construction > Main Building - Building D > Phase 5 (ROMP09 & 11) > Phase 5 - Electrical Room
P9ER.2190,Phase 5 / Elec Rm - Trade Repair,3,3,2027-10-14,2027-10-18,CMH139 > Construction > Main Building - Building D > Phase 5 (ROMP09 & 11) > Phase 5 - Electrical Room
P9ER.2210,Phase 5 / Elec Rm - Final Paint / Touch Up,1,1,2027-10-19,2027-10-19,CMH139 > Construction > Main Building - Building D > Phase 5 (ROMP09 & 11) > Phase 5 - Electrical Room
P9ER.2160,Phase 5 / Elec Rm - Energize BMS Panels,1,1,2027-10-26,2027-10-26,CMH139 > Construction > Main Building - Building D > Phase 5 (ROMP09 & 11) > Phase 5 - Electrical Room
P9ER.2090,Phase 5 / Elec Rm - Cable Bus Termination,4,4,2027-10-27,2027-11-01,CMH139 > Construction > Main Building - Building D > Phase 5 (ROMP09 & 11) > Phase 5 - Electrical Room
P5RP.1750,Phase 5 / Data Hall - Fire Protection Rough In,5,5,2027-04-06,2027-04-12,CMH139 > Construction > Main Building - Building D > Phase 5 (ROMP09 & 11) > Phase 5 - Data Hall
P9RP.1040,Phase 5 / Data Hall - Stud Framing (Data Hall / Elec Rm Wall),5,5,2027-05-17,2027-05-21,CMH139 > Construction > Main Building - Building D > Phase 5 (ROMP09 & 11) > Phase 5 - Data Hall
P9RP.1440,Phase 5 / Data Hall - Stud Framing (Equipment Platform),5,5,2027-05-21,2027-05-27,CMH139 > Construction > Main Building - Building D > Phase 5 (ROMP09 & 11) > Phase 5 - Data Hall
P5RP.1600,Phase 5 / Data Hall - OH Electric Rough In,5,5,2027-05-28,2027-06-04,CMH139 > Construction > Main Building - Building D > Phase 5 (ROMP09 & 11) > Phase 5 - Data Hall
P5RP.1590,Phase 5 / Data Hall - Install Temp Wall Bulkhead,5,5,2027-06-14,2027-06-18,CMH139 > Construction > Main Building - Building D > Phase 5 (ROMP09 & 11) > Phase 5 - Data Hall
P5RP.1720,Phase 5 / Data Hall - Above Ceiling Cable Tray,3,3,2027-06-21,2027-06-23,CMH139 > Construction > Main Building - Building D > Phase 5 (ROMP09 & 11) > Phase 5 - Data Hall
P5RP.1730,Phase 5 / Data Hall - Seismic Install,2,2,2027-06-24,2027-06-25,CMH139 > Construction > Main Building - Building D > Phase 5 (ROMP09 & 11) > Phase 5 - Data Hall
P9RP.1100,Phase 5 / Data Hall - Wall Elec & FA Rough-In (IMP),4,4,2027-07-23,2027-07-28,CMH139 > Construction > Main Building - Building D > Phase 5 (ROMP09 & 11) > Phase 5 - Data Hall
P9RP.1450,Phase 5 / Data Hall - Wall Elec & FA Rough-In (Data Hall / Elec Rm),4,4,2027-07-23,2027-07-28,CMH139 > Construction > Main Building - Building D > Phase 5 (ROMP09 & 11) > Phase 5 - Data Hall
P5RP.1610,Phase 5 / Data Hall - In Wall Rough In Inspection (Electrical / FA),1,1,2027-07-29,2027-07-29,CMH139 > Construction > Main Building - Building D > Phase 5 (ROMP09 & 11) > Phase 5 - Data Hall
P9RP.1130,Phase 5 / Data Hall - Hang Drywall & Finish (Data Hall / Elec Rm),5,5,2027-07-30,2027-08-05,CMH139 > Construction > Main Building - Building D > Phase 5 (ROMP09 & 11) > Phase 5 - Data Hall
P9RP.1190,Phase 5 / Data Hall - Prime & First Coat Paint,3,3,2027-08-06,2027-08-10,CMH139 > Construction > Main Building - Building D > Phase 5 (ROMP09 & 11) > Phase 5 - Data Hall
P9RP.1050,Phase 5 / Data Hall - Fire Protection Drops,5,5,2027-08-11,2027-08-17,CMH139 > Construction > Main Building - Building D > Phase 5 (ROMP09 & 11) > Phase 5 - Data Hall
P5RP.1120,Phase 5 / Data Hall - Install Backdraft Dampers,5,5,2027-08-11,2027-08-17,CMH139 > Construction > Main Building - Building D > Phase 5 (ROMP09 & 11) > Phase 5 - Data Hall
P9RP.1020,Phase 5 / Data Hall - MARS Racking,7,7,2027-09-07,2027-09-15,CMH139 > Construction > Main Building - Building D > Phase 5 (ROMP09 & 11) > Phase 5 - Data Hall
P9RP.1070,Phase 5 / Data Hall - Install Lighting Wiring & Fixtures,5,5,2027-09-16,2027-09-22,CMH139 > Construction > Main Building - Building D > Phase 5 (ROMP09 & 11) > Phase 5 - Data Hall
P9RP.1200,Phase 5 / Data Hall - Temp Wall Install,5,5,2027-09-16,2027-09-22,CMH139 > Construction > Main Building - Building D > Phase 5 (ROMP09 & 11) > Phase 5 - Data Hall
P9RP.1060,Phase 5 / Data Hall - Upper Polycarbonate Panels and Cold Aisle Cable Tray Arms,3,3,2027-09-16,2027-09-20,CMH139 > Construction > Main Building - Building D > Phase 5 (ROMP09 & 11) > Phase 5 - Data Hall
P9RP.1230,Phase 5 / Data Hall - Install Control Dampers (PRD),5,5,2027-09-16,2027-09-22,CMH139 > Construction > Main Building - Building D > Phase 5 (ROMP09 & 11) > Phase 5 - Data Hall
P9RP.1410,Phase 5 / Data Hall - Power PDC Whips,10,10,2027-09-16,2027-09-29,CMH139 > Construction > Main Building - Building D > Phase 5 (ROMP09 & 11) > Phase 5 - Data Hall
P5RP.1620,Phase 5 / Data Hall - ACT Grid Corridors,4,4,2027-09-16,2027-09-21,CMH139 > Construction > Main Building - Building D > Phase 5 (ROMP09 & 11) > Phase 5 - Data Hall
P5RP.1630,Phase 5 / Data Hall - Install Snubbers,5,5,2027-09-16,2027-09-22,CMH139 > Construction > Main Building - Building D > Phase 5 (ROMP09 & 11) > Phase 5 - Data Hall
P9RP.1030,Phase 5 / Data Hall - PDC Feeders Drops & Supports,10,10,2027-09-16,2027-09-29,CMH139 > Construction > Main Building - Building D > Phase 5 (ROMP09 & 11) > Phase 5 - Data Hall
P9RP.1210,Phase 5 / Data Hall - Fire Alarm VESDA,10,10,2027-09-20,2027-10-01,CMH139 > Construction > Main Building - Building D > Phase 5 (ROMP09 & 11) > Phase 5 - Data Hall
P5RP.1640,Phase 5 / Data Hall - ACT Grid Cold Aisles,5,5,2027-09-20,2027-09-24,CMH139 > Construction > Main Building - Building D > Phase 5 (ROMP09 & 11) > Phase 5 - Data Hall
P9RP.1120,Phase 5 / Data Hall - Perfect Position,4,4,2027-09-21,2027-09-24,CMH139 > Construction > Main Building - Building D > Phase 5 (ROMP09 & 11) > Phase 5 - Data Hall
P9RP.1250,Phase 5 / Data Hall - Doors and Hardware,2,2,2027-09-23,2027-09-24,CMH139 > Construction > Main Building - Building D > Phase 5 (ROMP09 & 11) > Phase 5 - Data Hall
P5RP.1650,Phase 5 / Data Hall - Install Control Wiring,5,5,2027-09-23,2027-09-29,CMH139 > Construction > Main Building - Building D > Phase 5 (ROMP09 & 11) > Phase 5 - Data Hall
P9RP.1280,Phase 5 / Data Hall - Install Fire Protection Heads Avenue,2,2,2027-09-27,2027-09-28,CMH139 > Construction > Main Building - Building D > Phase 5 (ROMP09 & 11) > Phase 5 - Data Hall
P9RP.1160,Phase 5 / Data Hall - Cold Aisle Basket/Cable Tray,3,3,2027-09-27,2027-09-29,CMH139 > Construction > Main Building - Building D > Phase 5 (ROMP09 & 11) > Phase 5 - Data Hall
P9RP.1360,Phase 5 / Data Hall - Avenue Basket/Cable Tray (South),2,2,2027-09-27,2027-09-28,CMH139 > Construction > Main Building - Building D > Phase 5 (ROMP09 & 11) > Phase 5 - Data Hall
P5RP.1660,Phase 5 / Data Hall - ACT Borders For Corridors,1,1,2027-09-27,2027-09-27,CMH139 > Construction > Main Building - Building D > Phase 5 (ROMP09 & 11) > Phase 5 - Data Hall
P5RP.1740,Phase 5 / Data Hall - Install Fire Protection Heads Cold Aisle,2,2,2027-09-27,2027-09-28,CMH139 > Construction > Main Building - Building D > Phase 5 (ROMP09 & 11) > Phase 5 - Data Hall
P5RP.1670,Phase 5 / Data Hall - ACT Borders For Cold Aisles,1,1,2027-09-28,2027-09-28,CMH139 > Construction > Main Building - Building D > Phase 5 (ROMP09 & 11) > Phase 5 - Data Hall
P9RP.1290,Phase 5 / Data Hall - Avenue Basket/Cable Tray (North),2,2,2027-09-29,2027-09-30,CMH139 > Construction > Main Building - Building D > Phase 5 (ROMP09 & 11) > Phase 5 - Data Hall
P9RP.1310,Phase 5 / Data Hall - Structural Overhead Inspection (Avenue),1,1,2027-09-29,2027-09-29,CMH139 > Construction > Main Building - Building D > Phase 5 (ROMP09 & 11) > Phase 5 - Data Hall
P5RP.1690,Phase 5 / Data Hall - ACT Remaining Tile Drops Post Inspection,3,3,2027-09-30,2027-10-04,CMH139 > Construction > Main Building - Building D > Phase 5 (ROMP09 & 11) > Phase 5 - Data Hall
P5RP.1680,Phase 5 / Data Hall - Touch Up Paint,4,4,2027-09-30,2027-10-05,CMH139 > Construction > Main Building - Building D > Phase 5 (ROMP09 & 11) > Phase 5 - Data Hall
P9RP.1420,Phase 5 / Data Hall - CAT6 Cable Install,3,3,2027-10-01,2027-10-05,CMH139 > Construction > Main Building - Building D > Phase 5 (ROMP09 & 11) > Phase 5 - Data Hall
P9RP.1080,Phase 5 / Data Hall - Set PDC Cabinets,3,3,2027-10-05,2027-10-07,CMH139 > Construction > Main Building - Building D > Phase 5 (ROMP09 & 11) > Phase 5 - Data Hall
P9RP.1110,Phase 5 / Data Hall - BMS,15,15,2027-10-08,2027-10-28,CMH139 > Construction > Main Building - Building D > Phase 5 (ROMP09 & 11) > Phase 5 - Data Hall
P9RP.1270,Phase 5 / Data Hall - PDC Feeders Test & Terminate,10,10,2027-10-08,2027-10-21,CMH139 > Construction > Main Building - Building D > Phase 5 (ROMP09 & 11) > Phase 5 - Data Hall
P9RP.1430,Phase 5 / Data Hall - EPMS,15,15,2027-10-08,2027-10-28,CMH139 > Construction > Main Building - Building D > Phase 5 (ROMP09 & 11) > Phase 5 - Data Hall
P9RP.1180,Phase 5 / Data Hall - Lower Polycarbonate Panels,5,5,2027-10-29,2027-11-04,CMH139 > Construction > Main Building - Building D > Phase 5 (ROMP09 & 11) > Phase 5 - Data Hall
P9RP.1090,Phase 5 / Data Hall - NEA Finalization,20,20,2028-01-25,2028-02-21,CMH139 > Construction > Main Building - Building D > Phase 5 (ROMP09 & 11) > Phase 5 - Data Hall
P9RP.1140,Phase 5 / Data Hall - H2C Readiness Coordination,14,14,2028-02-22,2028-03-10,CMH139 > Construction > Main Building - Building D > Phase 5 (ROMP09 & 11) > Phase 5 - Data Hall
P9DG.1250,Phase 5 / TAHU - Fire Protection Rough In,5,5,2027-03-30,2027-04-05,CMH139 > Construction > Main Building - Building D > Phase 5 (ROMP09 & 11) > Phase 5 - TAHU Gallery
P9DG.1170,Phase 5 / TAHU - Sound Attenuator,10,10,2027-07-23,2027-08-05,CMH139 > Construction > Main Building - Building D > Phase 5 (ROMP09 & 11) > Phase 5 - TAHU Gallery
P9DG.1180,Phase 5 / TAHU - Seismic Install,2,2,2027-07-23,2027-07-26,CMH139 > Construction > Main Building - Building D > Phase 5 (ROMP09 & 11) > Phase 5 - TAHU Gallery
P9DG.1190,Phase 5 / TAHU - Hang Outside Stairwell / Lobby Drywall,4,4,2027-07-23,2027-07-28,CMH139 > Construction > Main Building - Building D > Phase 5 (ROMP09 & 11) > Phase 5 - TAHU Gallery
P9DG.1200,Phase 5 / TAHU - Install CFMF IMP Support,10,10,2027-07-23,2027-08-05,CMH139 > Construction > Main Building - Building D > Phase 5 (ROMP09 & 11) > Phase 5 - TAHU Gallery
P9DG.1040,Phase 5 / TAHU - Install IMP Panels,6,6,2027-08-06,2027-08-13,CMH139 > Construction > Main Building - Building D > Phase 5 (ROMP09 & 11) > Phase 5 - TAHU Gallery
P9DG.1080,Phase 5 / TAHU - Prime & Paint Drywall,3,3,2027-08-16,2027-08-18,CMH139 > Construction > Main Building - Building D > Phase 5 (ROMP09 & 11) > Phase 5 - TAHU Gallery
P9DG.1030,Phase 5 / TAHU - Wall Elec & Fire Alarm Rough-In,5,5,2027-08-16,2027-08-20,CMH139 > Construction > Main Building - Building D > Phase 5 (ROMP09 & 11) > Phase 5 - TAHU Gallery
P9DG.1110,Phase 5 / TAHU - BMS Controls Rough In,10,10,2027-08-16,2027-08-27,CMH139 > Construction > Main Building - Building D > Phase 5 (ROMP09 & 11) > Phase 5 - TAHU Gallery
P9DG.1130,Phase 5 / TAHU - Fire Alarm (VESDA),5,5,2027-08-16,2027-08-20,CMH139 > Construction > Main Building - Building D > Phase 5 (ROMP09 & 11) > Phase 5 - TAHU Gallery
P9DG.1090,Phase 5 / TAHU - Control Dampers,5,5,2027-08-19,2027-08-25,CMH139 > Construction > Main Building - Building D > Phase 5 (ROMP09 & 11) > Phase 5 - TAHU Gallery
P9DG.1050,Phase 5 / TAHU - Pull & Terminate Fire Alarm Cable,5,5,2027-08-23,2027-08-27,CMH139 > Construction > Main Building - Building D > Phase 5 (ROMP09 & 11) > Phase 5 - TAHU Gallery
P9DG.1070,Phase 5 / TAHU - Set TAHUs,2,2,2027-09-07,2027-09-08,CMH139 > Construction > Main Building - Building D > Phase 5 (ROMP09 & 11) > Phase 5 - TAHU Gallery
P9DG.1140,Phase 5 / TAHU - Doors and Hardware,3,3,2027-09-09,2027-09-13,CMH139 > Construction > Main Building - Building D > Phase 5 (ROMP09 & 11) > Phase 5 - TAHU Gallery
P9DG.1060,Phase 5 / TAHU - IW Supply Piping at TAHUs,10,10,2027-09-09,2027-09-22,CMH139 > Construction > Main Building - Building D > Phase 5 (ROMP09 & 11) > Phase 5 - TAHU Gallery
P9DG.1220,Phase 5 / TAHU - TAHU Trim,10,10,2027-09-09,2027-09-22,CMH139 > Construction > Main Building - Building D > Phase 5 (ROMP09 & 11) > Phase 5 - TAHU Gallery
P9DG.1230,Phase 5 / TAHU - Paint Doors & Frames,2,2,2027-09-14,2027-09-15,CMH139 > Construction > Main Building - Building D > Phase 5 (ROMP09 & 11) > Phase 5 - TAHU Gallery
P9DG.1150,Phase 5 / TAHU - Lighting,5,5,2027-09-23,2027-09-29,CMH139 > Construction > Main Building - Building D > Phase 5 (ROMP09 & 11) > Phase 5 - TAHU Gallery
P9DG.1100,Phase 5 / TAHU - Tie In TAHUs,10,10,2027-09-23,2027-10-06,CMH139 > Construction > Main Building - Building D > Phase 5 (ROMP09 & 11) > Phase 5 - TAHU Gallery
P9DG.1210,Phase 5 / TAHU - BMS Tie In,2,2,2027-10-05,2027-10-06,CMH139 > Construction > Main Building - Building D > Phase 5 (ROMP09 & 11) > Phase 5 - TAHU Gallery
P9DG.1120,Phase 5 / TAHU - IW Drain Piping at TAHUs,5,5,2027-10-07,2027-10-13,CMH139 > Construction > Main Building - Building D > Phase 5 (ROMP09 & 11) > Phase 5 - TAHU Gallery
P9DG.1240,Phase 5 / TAHU - Terminate Power To TAHUs,3,3,2027-10-14,2027-10-18,CMH139 > Construction > Main Building - Building D > Phase 5 (ROMP09 & 11) > Phase 5 - TAHU Gallery
P9CX.1100,Phase 5 / Cx - EC L2 Cx Review for MV Switchgear,1,1,2027-05-06,2027-05-06,CMH139 > Construction > Main Building - Building D > Phase 5 (ROMP09 & 11) > Phase 5 - Cx
P9CX.1080,Phase 5 / Cx - EC L2 Cx Review for MV XFMRs,1,1,2027-05-07,2027-05-07,CMH139 > Construction > Main Building - Building D > Phase 5 (ROMP09 & 11) > Phase 5 - Cx
P9CX.1090,Phase 5 / Cx - EC L3 Cx for MV XFMRs,5,5,2027-05-10,2027-05-14,CMH139 > Construction > Main Building - Building D > Phase 5 (ROMP09 & 11) > Phase 5 - Cx
P9CX.1350,Phase 5 / Cx - Eaton XFMR Testing,3,3,2027-05-10,2027-05-12,CMH139 > Construction > Main Building - Building D > Phase 5 (ROMP09 & 11) > Phase 5 - Cx
P9CX.1130,Phase 5 / Cx - EC L3 Cx for MV,3,3,2027-05-13,2027-05-17,CMH139 > Construction > Main Building - Building D > Phase 5 (ROMP09 & 11) > Phase 5 - Cx
P9CX.1410,Phase 5 / Cx - Fuel System Cx,7,7,2027-07-02,2027-07-13,CMH139 > Construction > Main Building - Building D > Phase 5 (ROMP09 & 11) > Phase 5 - Cx
P9CX.1180,Phase 5 / Cx - Construction Power To Generator,3,3,2027-09-09,2027-09-13,CMH139 > Construction > Main Building - Building D > Phase 5 (ROMP09 & 11) > Phase 5 - Cx
P9CX.1030,Phase 5 / Cx - CAT L2 Cx Generators,2,2,2027-09-14,2027-09-15,CMH139 > Construction > Main Building - Building D > Phase 5 (ROMP09 & 11) > Phase 5 - Cx
P9CX.1120,Phase 5 / Cx - EC 3rd Party Testing & Inspection USB (L2),3,3,2027-09-14,2027-09-16,CMH139 > Construction > Main Building - Building D > Phase 5 (ROMP09 & 11) > Phase 5 - Cx
P9CX.1160,Phase 5 / Cx - HUPPS Panelboards Energized,1,1,2027-09-30,2027-09-30,CMH139 > Construction > Main Building - Building D > Phase 5 (ROMP09 & 11) > Phase 5 - Cx
P9CX.1000,Phase 5 / Cx - EC 3rd Party LV Panelboard Testing (L2),3,3,2027-09-30,2027-10-04,CMH139 > Construction > Main Building - Building D > Phase 5 (ROMP09 & 11) > Phase 5 - Cx
P9CX.1320,Phase 5 / Cx - AMCOP / BACOP Start Up & Cx,5,5,2027-09-30,2027-10-06,CMH139 > Construction > Main Building - Building D > Phase 5 (ROMP09 & 11) > Phase 5 - Cx
P9CX.1360,Phase 5 / Cx - Energize Control Network Arch,1,1,2027-10-01,2027-10-01,CMH139 > Construction > Main Building - Building D > Phase 5 (ROMP09 & 11) > Phase 5 - Cx
P9CX.1390,Phase 5 / Cx - EPMS Point to Point (USB),4,4,2027-10-04,2027-10-07,CMH139 > Construction > Main Building - Building D > Phase 5 (ROMP09 & 11) > Phase 5 - Cx
P9CX.1470,Phase 5 / Cx - Fire Alarm Programming & Pretest,2,2,2027-10-04,2027-10-05,CMH139 > Construction > Main Building - Building D > Phase 5 (ROMP09 & 11) > Phase 5 - Cx
P9CX.1230,Phase 5 / Cx - EC 3rd Party Busway Bus Plug Testing (L2),2,2,2027-10-04,2027-10-05,CMH139 > Construction > Main Building - Building D > Phase 5 (ROMP09 & 11) > Phase 5 - Cx
P9MCM.5010,Phase 5 / Cx - Tie in MOP C1,2,2,2027-10-06,2027-10-07,CMH139 > Construction > Main Building - Building D > Phase 5 (ROMP09 & 11) > Phase 5 - Cx
P9MCM.5020,Phase 5 / Cx - Eaton DLB Programming & Test (FLORES),5,5,2027-10-07,2027-10-13,CMH139 > Construction > Main Building - Building D > Phase 5 (ROMP09 & 11) > Phase 5 - Cx
P9MCM.5030,Phase 5 / Cx - Tie in MOP C2,2,2,2027-10-08,2027-10-11,CMH139 > Construction > Main Building - Building D > Phase 5 (ROMP09 & 11) > Phase 5 - Cx
P9CX.1140,Phase 5 / Cx - EC 3rd Party Busway C1 / C2 Testing,2,2,2027-10-12,2027-10-13,CMH139 > Construction > Main Building - Building D > Phase 5 (ROMP09 & 11) > Phase 5 - Cx
P9CX.1190,Phase 5 / Cx - EC L2 Cx Review for LV Panelboard,2,2,2027-10-12,2027-10-13,CMH139 > Construction > Main Building - Building D > Phase 5 (ROMP09 & 11) > Phase 5 - Cx
P9MS.180,Phase 5 / Cx - Life Safety Walkthrough,1,1,2027-10-13,2027-10-13,CMH139 > Construction > Main Building - Building D > Phase 5 (ROMP09 & 11) > Phase 5 - Cx
P9CX.1260,Phase 5 / Cx - EC L3 Cx LV Panelboard,1,1,2027-10-14,2027-10-14,CMH139 > Construction > Main Building - Building D > Phase 5 (ROMP09 & 11) > Phase 5 - Cx
P9CX.1170,Phase 5 / Cx - EC Busway C1 / C2 L2 Cx Review,1,1,2027-10-14,2027-10-14,CMH139 > Construction > Main Building - Building D > Phase 5 (ROMP09 & 11) > Phase 5 - Cx
P9CX.1220,Phase 5 / Cx - EC Busway C1 L3 Cx,2,2,2027-10-15,2027-10-18,CMH139 > Construction > Main Building - Building D > Phase 5 (ROMP09 & 11) > Phase 5 - Cx
P9CX.1380,Phase 5 / Cx - EPMS Point to Point (PDC),4,4,2027-10-15,2027-10-20,CMH139 > Construction > Main Building - Building D > Phase 5 (ROMP09 & 11) > Phase 5 - Cx
P9CX.1210,Phase 5 / Cx - MC TAHU L2 Cx,5,5,2027-10-19,2027-10-25,CMH139 > Construction > Main Building - Building D > Phase 5 (ROMP09 & 11) > Phase 5 - Cx
P9CX.1480,Phase 5 / Cx - EC Busway C2 L3 Cx,2,2,2027-10-19,2027-10-20,CMH139 > Construction > Main Building - Building D > Phase 5 (ROMP09 & 11) > Phase 5 - Cx
P9CX.1370,Phase 5 / Cx - BMS Point to Point (TAHUs),5,5,2027-10-26,2027-11-01,CMH139 > Construction > Main Building - Building D > Phase 5 (ROMP09 & 11) > Phase 5 - Cx
P9CX.1150,Phase 5 / Cx - EC L3 Cx USBs,2,2,2027-11-10,2027-11-11,CMH139 > Construction > Main Building - Building D > Phase 5 (ROMP09 & 11) > Phase 5 - Cx
P9CX.1250,Phase 5 / Cx - Vendor UPS Start Up & Cx,9,9,2027-11-12,2027-11-24,CMH139 > Construction > Main Building - Building D > Phase 5 (ROMP09 & 11) > Phase 5 - Cx
P9CX.1310,Phase 5 / Cx - ATS L3 Cx,1,1,2027-11-12,2027-11-12,CMH139 > Construction > Main Building - Building D > Phase 5 (ROMP09 & 11) > Phase 5 - Cx
P9CX.1420,Phase 5 / Cx - Eaton DLB Testing,2,2,2027-11-12,2027-11-15,CMH139 > Construction > Main Building - Building D > Phase 5 (ROMP09 & 11) > Phase 5 - Cx
P9CX.1400,Phase 5 / Cx - Energize MSDBs,1,1,2027-11-15,2027-11-15,CMH139 > Construction > Main Building - Building D > Phase 5 (ROMP09 & 11) > Phase 5 - Cx
P9CX.1290,Phase 5 / Cx - Split System Startup & Commissioning,10,10,2027-11-16,2027-12-01,CMH139 > Construction > Main Building - Building D > Phase 5 (ROMP09 & 11) > Phase 5 - Cx
P9CX.1280,Phase 5 / Cx - ERV Startup & Commissioning,10,10,2027-11-16,2027-12-01,CMH139 > Construction > Main Building - Building D > Phase 5 (ROMP09 & 11) > Phase 5 - Cx
P9CX.1270,Phase 5 / Cx - EDH Startup & Commissioning,4,4,2027-11-16,2027-11-19,CMH139 > Construction > Main Building - Building D > Phase 5 (ROMP09 & 11) > Phase 5 - Cx
P9CX.1010,Phase 5 / Cx - IW System L2 Cx,2,2,2027-11-16,2027-11-17,CMH139 > Construction > Main Building - Building D > Phase 5 (ROMP09 & 11) > Phase 5 - Cx
P9CX.1020,Phase 5 / Cx - IW System L3 Cx,10,10,2027-11-18,2027-12-03,CMH139 > Construction > Main Building - Building D > Phase 5 (ROMP09 & 11) > Phase 5 - Cx
P9CX.1040,Phase 5 / Cx - EC L2 Cx Review for Generator,1,1,2027-12-03,2027-12-03,CMH139 > Construction > Main Building - Building D > Phase 5 (ROMP09 & 11) > Phase 5 - Cx
P9CX.1070,Phase 5 / Cx - EC L3 Cx Generators,3,3,2027-12-06,2027-12-08,CMH139 > Construction > Main Building - Building D > Phase 5 (ROMP09 & 11) > Phase 5 - Cx
P9CX.1060,Phase 5 / Cx - CAT L3 Cx Generators Testing,5,5,2027-12-06,2027-12-10,CMH139 > Construction > Main Building - Building D > Phase 5 (ROMP09 & 11) > Phase 5 - Cx
P9CX.1240,Phase 5 / Cx - Vendor TAHU L3 Cx,10,10,2027-12-06,2027-12-17,CMH139 > Construction > Main Building - Building D > Phase 5 (ROMP09 & 11) > Phase 5 - Cx
P9CX.1330,Phase 5 / Cx - Test & Balance,5,5,2027-12-20,2027-12-27,CMH139 > Construction > Main Building - Building D > Phase 5 (ROMP09 & 11) > Phase 5 - Cx
P9CX.1430,Phase 5 / Cx - L4 / L5 Cx,15,15,2028-03-13,2028-03-31,CMH139 > Construction > Main Building - Building D > Phase 5 (ROMP09 & 11) > Phase 5 - Cx
P10EX.1030,Phase 6 / Gen Yard - Set Transformers,2,2,2027-04-27,2027-04-28,CMH139 > Construction > Main Building - Building D > Phase 6 (ROMP10 & 12) > Phase 6 - Gen Yard
P10EX.1050,"Phase 6 / Gen Yard - Pull, Term & Test MV through XFMRs",7,7,2027-04-29,2027-05-07,CMH139 > Construction > Main Building - Building D > Phase 6 (ROMP10 & 12) > Phase 6 - Gen Yard
P10EX.1100,Phase 6 / Gen Yard - Pull In FLORES Loop,5,5,2027-05-10,2027-05-14,CMH139 > Construction > Main Building - Building D > Phase 6 (ROMP10 & 12) > Phase 6 - Gen Yard
P10EX.1370,Phase 6 / Gen Yard - Install Fuel Piping,30,30,2027-05-20,2027-07-01,CMH139 > Construction > Main Building - Building D > Phase 6 (ROMP10 & 12) > Phase 6 - Gen Yard
P10EX.1380,Phase 6 / Gen Yard - Install Fuel System Control Conduit,10,10,2027-06-04,2027-06-17,CMH139 > Construction > Main Building - Building D > Phase 6 (ROMP10 & 12) > Phase 6 - Gen Yard
P10EX.1120,Phase 6 / Gen Yard - Pour Sidewalk,5,5,2027-06-18,2027-06-24,CMH139 > Construction > Main Building - Building D > Phase 6 (ROMP10 & 12) > Phase 6 - Gen Yard
P10EX.1060,Phase 6 / Gen Yard - Set Generators,2,2,2027-10-12,2027-10-13,CMH139 > Construction > Main Building - Building D > Phase 6 (ROMP10 & 12) > Phase 6 - Gen Yard
P10EX.1090,Phase 6 / Gen Yard - Set Exhaust Stack and Shroud,12,12,2027-10-14,2027-10-29,CMH139 > Construction > Main Building - Building D > Phase 6 (ROMP10 & 12) > Phase 6 - Gen Yard
P10EX.1040,Phase 6 / Gen Yard - Install Cable Bus Structure,5,5,2027-10-20,2027-10-26,CMH139 > Construction > Main Building - Building D > Phase 6 (ROMP10 & 12) > Phase 6 - Gen Yard
P10EX.1070,Phase 6 / Gen Yard - LV Cable Bus and Feeders - XFMRs to USBs,10,10,2027-10-27,2027-11-09,CMH139 > Construction > Main Building - Building D > Phase 6 (ROMP10 & 12) > Phase 6 - Gen Yard
P10EX.1390,Phase 6 / Gen Yard - Grounding / Lightning Protection,2,2,2027-11-01,2027-11-02,CMH139 > Construction > Main Building - Building D > Phase 6 (ROMP10 & 12) > Phase 6 - Gen Yard
P10EX.1110,Phase 6 / Gen Yard - Energize Electrical - Site To Phase,0,0,,2027-11-09,CMH139 > Construction > Main Building - Building D > Phase 6 (ROMP10 & 12) > Phase 6 - Gen Yard
P10EX.1190,Phase 6 / Gen Yard - LV Cable Bus and Feeders - Gens to USBs,15,15,2027-11-10,2027-12-02,CMH139 > Construction > Main Building - Building D > Phase 6 (ROMP10 & 12) > Phase 6 - Gen Yard
P10EX.1080,Phase 6 / Gen Yard - Install Generator Platforms,5,5,2027-11-11,2027-11-17,CMH139 > Construction > Main Building - Building D > Phase 6 (ROMP10 & 12) > Phase 6 - Gen Yard
P10EX.1130,Phase 6 / Gen Yard - Install Foundations & Fencing,4,4,2027-11-18,2027-11-23,CMH139 > Construction > Main Building - Building D > Phase 6 (ROMP10 & 12) > Phase 6 - Gen Yard
P10ER.2220,Phase 6 / Elec Rm - Layout,1,1,2027-05-05,2027-05-05,CMH139 > Construction > Main Building - Building D > Phase 6 (ROMP10 & 12) > Phase 6 - Electrical Room
P10ER.2450,Phase 6 / Elec Rm - Install DriClad,10,10,2027-05-06,2027-05-19,CMH139 > Construction > Main Building - Building D > Phase 6 (ROMP10 & 12) > Phase 6 - Electrical Room
P10ER.1040,Phase 6 / Elec Rm - Wall Electric & Fire Alarm Rough-in,5,5,2027-05-19,2027-05-25,CMH139 > Construction > Main Building - Building D > Phase 6 (ROMP10 & 12) > Phase 6 - Electrical Room
P10ER.1020,Phase 6 / Elec Rm - Stud Framing,4,4,2027-05-20,2027-05-25,CMH139 > Construction > Main Building - Building D > Phase 6 (ROMP10 & 12) > Phase 6 - Electrical Room
P10ER.1380,Phase 6 / Elec Rm - Hangers,3,3,2027-05-26,2027-05-28,CMH139 > Construction > Main Building - Building D > Phase 6 (ROMP10 & 12) > Phase 6 - Electrical Room
P10ER.1060,Phase 6 / Elec Rm - Hang Drywall & Finish,5,5,2027-08-27,2027-09-02,CMH139 > Construction > Main Building - Building D > Phase 6 (ROMP10 & 12) > Phase 6 - Electrical Room
P10ER.1000,Phase 6 / Elec Rm - Pull TAHU Feeders,5,5,2027-08-27,2027-09-02,CMH139 > Construction > Main Building - Building D > Phase 6 (ROMP10 & 12) > Phase 6 - Electrical Room
P10ER.2230,Phase 6 / Elec Rm - Fire Protection Rough In,3,3,2027-08-27,2027-08-31,CMH139 > Construction > Main Building - Building D > Phase 6 (ROMP10 & 12) > Phase 6 - Electrical Room
P10ER.2240,Phase 6 / Elec Rm - Install OH Conduit / Mechanical Feeders,5,5,2027-08-27,2027-09-02,CMH139 > Construction > Main Building - Building D > Phase 6 (ROMP10 & 12) > Phase 6 - Electrical Room
P10ER.1390,Phase 6 / Elec Rm - Pull / Term HUPPs,2,2,2027-09-01,2027-09-02,CMH139 > Construction > Main Building - Building D > Phase 6 (ROMP10 & 12) > Phase 6 - Electrical Room
P10ER.1080,Phase 6 / Elec Rm - Prime & First Coat Paint,1,1,2027-09-03,2027-09-03,CMH139 > Construction > Main Building - Building D > Phase 6 (ROMP10 & 12) > Phase 6 - Electrical Room
P10ER.1010,Phase 6 / Elec Rm - Pull Lighting Control Wiring,7,7,2027-09-03,2027-09-14,CMH139 > Construction > Main Building - Building D > Phase 6 (ROMP10 & 12) > Phase 6 - Electrical Room
P10ER.1120,Phase 6 / Elec Rm - Install Split Systems & ERV,10,10,2027-09-07,2027-09-20,CMH139 > Construction > Main Building - Building D > Phase 6 (ROMP10 & 12) > Phase 6 - Electrical Room
P10ER.2250,Phase 6 / Elec Rm - Set USB (LV Gear),5,5,2027-10-12,2027-10-18,CMH139 > Construction > Main Building - Building D > Phase 6 (ROMP10 & 12) > Phase 6 - Electrical Room
P10ER.1140,Phase 6 / Elec Rm - Install AMCOP Panels,1,1,2027-10-19,2027-10-19,CMH139 > Construction > Main Building - Building D > Phase 6 (ROMP10 & 12) > Phase 6 - Electrical Room
P10ER.2270,Phase 6 / Elec Rm - Doors & Hardware,5,5,2027-10-19,2027-10-25,CMH139 > Construction > Main Building - Building D > Phase 6 (ROMP10 & 12) > Phase 6 - Electrical Room
P10ER.2280,Phase 6 / Elec Rm - Breaker Testing USB,5,5,2027-10-19,2027-10-25,CMH139 > Construction > Main Building - Building D > Phase 6 (ROMP10 & 12) > Phase 6 - Electrical Room
P10ER.2260,Phase 6 / Elec Rm - Fill Buck Out,4,4,2027-10-19,2027-10-22,CMH139 > Construction > Main Building - Building D > Phase 6 (ROMP10 & 12) > Phase 6 - Electrical Room
P10ER.2290,Phase 6 / Elec Rm - Install Cable Tray,7,7,2027-10-19,2027-10-27,CMH139 > Construction > Main Building - Building D > Phase 6 (ROMP10 & 12) > Phase 6 - Electrical Room
P10ER.2320,Phase 6 / Elec Rm - Install CRAC Unit & Exhaust Fan,5,5,2027-10-21,2027-10-27,CMH139 > Construction > Main Building - Building D > Phase 6 (ROMP10 & 12) > Phase 6 - Electrical Room
P10ER.1210,Phase 6 / Elec Rm - Set SCCS Setting for Breakers,1,1,2027-10-26,2027-10-26,CMH139 > Construction > Main Building - Building D > Phase 6 (ROMP10 & 12) > Phase 6 - Electrical Room
P10ER.2300,Phase 6 / Elec Rm - Cable Bus Termination,4,4,2027-10-27,2027-11-01,CMH139 > Construction > Main Building - Building D > Phase 6 (ROMP10 & 12) > Phase 6 - Electrical Room
P10ER.1110,Phase 6 / Elec Rm - Set OFCI Electrical Panels,5,5,2027-10-28,2027-11-03,CMH139 > Construction > Main Building - Building D > Phase 6 (ROMP10 & 12) > Phase 6 - Electrical Room
P10ER.2310,Phase 6 / Elec Rm - Fire Alarm / VESDA,5,5,2027-10-28,2027-11-03,CMH139 > Construction > Main Building - Building D > Phase 6 (ROMP10 & 12) > Phase 6 - Electrical Room
P10ER.2330,Phase 6 / Elec Rm - Install Bus Duct,7,7,2027-10-28,2027-11-05,CMH139 > Construction > Main Building - Building D > Phase 6 (ROMP10 & 12) > Phase 6 - Electrical Room
P10ER.2350,Phase 6 / Elec Rm - OA Reference Piping,5,5,2027-10-28,2027-11-03,CMH139 > Construction > Main Building - Building D > Phase 6 (ROMP10 & 12) > Phase 6 - Electrical Room
P10ER.2430,Phase 6 / Elec Rm - Install Control Conduit,5,5,2027-10-28,2027-11-03,CMH139 > Construction > Main Building - Building D > Phase 6 (ROMP10 & 12) > Phase 6 - Electrical Room
P10ER.1330,Phase 6 / Elec Rm - Pull & Term DLB Fiber,5,5,2027-11-04,2027-11-10,CMH139 > Construction > Main Building - Building D > Phase 6 (ROMP10 & 12) > Phase 6 - Electrical Room
P10ER.2340,Phase 6 / Elec Rm - Install Electrical Raceways (Branch Conduits),10,10,2027-11-04,2027-11-17,CMH139 > Construction > Main Building - Building D > Phase 6 (ROMP10 & 12) > Phase 6 - Electrical Room
P10ER.2440,Phase 6 / Elec Rm - Install UPS,4,4,2027-11-04,2027-11-09,CMH139 > Construction > Main Building - Building D > Phase 6 (ROMP10 & 12) > Phase 6 - Electrical Room
P10ER.1150,Phase 6 / Elec Rm - Pull PDC Feeders,5,5,2027-11-05,2027-11-11,CMH139 > Construction > Main Building - Building D > Phase 6 (ROMP10 & 12) > Phase 6 - Electrical Room
P10ER.1160,Phase 6 / Elec Rm - Terminate LV Electrical Panels,5,5,2027-11-09,2027-11-15,CMH139 > Construction > Main Building - Building D > Phase 6 (ROMP10 & 12) > Phase 6 - Electrical Room
P10ER.2360,Phase 6 / Elec Rm - Manufacturer Inspection USB,1,1,2027-11-11,2027-11-11,CMH139 > Construction > Main Building - Building D > Phase 6 (ROMP10 & 12) > Phase 6 - Electrical Room
P10ER.1220,Phase 6 / Elec Rm - Install Lighting,3,3,2027-11-12,2027-11-16,CMH139 > Construction > Main Building - Building D > Phase 6 (ROMP10 & 12) > Phase 6 - Electrical Room
P10ER.2380,Phase 6 / Elec Rm - Seismic Install,1,1,2027-11-12,2027-11-12,CMH139 > Construction > Main Building - Building D > Phase 6 (ROMP10 & 12) > Phase 6 - Electrical Room
P10ER.2410,Phase 6 / Elec Rm - Test & Terminate PDC Feeders,5,5,2027-11-12,2027-11-18,CMH139 > Construction > Main Building - Building D > Phase 6 (ROMP10 & 12) > Phase 6 - Electrical Room
P10ER.2390,Phase 6 / Elec Rm - Egress Lighting,3,3,2027-11-12,2027-11-16,CMH139 > Construction > Main Building - Building D > Phase 6 (ROMP10 & 12) > Phase 6 - Electrical Room
P10ER.1180,Phase 6 / Elec Rm - BMS System,10,10,2027-11-16,2027-12-01,CMH139 > Construction > Main Building - Building D > Phase 6 (ROMP10 & 12) > Phase 6 - Electrical Room
P10ER.2400,Phase 6 / Elec Rm - Trade Repair,3,3,2027-11-18,2027-11-22,CMH139 > Construction > Main Building - Building D > Phase 6 (ROMP10 & 12) > Phase 6 - Electrical Room
P10ER.2420,Phase 6 / Elec Rm - Final Paint / Touch Up,1,1,2027-11-23,2027-11-23,CMH139 > Construction > Main Building - Building D > Phase 6 (ROMP10 & 12) > Phase 6 - Electrical Room
P10ER.2370,Phase 6 / Elec Rm - Energize BMS Panels,1,1,2027-12-02,2027-12-02,CMH139 > Construction > Main Building - Building D > Phase 6 (ROMP10 & 12) > Phase 6 - Electrical Room
P10RP.1040,Phase 6 / Data Hall - Stud Framing (Data Hall / Elec Rm Wall),5,5,2027-05-20,2027-05-26,CMH139 > Construction > Main Building - Building D > Phase 6 (ROMP10 & 12) > Phase 6 - Data Hall
P10RP.1700,Phase 6 / Data Hall - Stud Framing (Equipment Platform),5,5,2027-05-26,2027-06-02,CMH139 > Construction > Main Building - Building D > Phase 6 (ROMP10 & 12) > Phase 6 - Data Hall
P10RP.1600,Phase 6 / Data Hall - OH Electric Rough In,5,5,2027-06-03,2027-06-09,CMH139 > Construction > Main Building - Building D > Phase 6 (ROMP10 & 12) > Phase 6 - Data Hall
P10RP.1760,Phase 6 / Data Hall - Fire Protection Rough In,5,5,2027-06-30,2027-07-07,CMH139 > Construction > Main Building - Building D > Phase 6 (ROMP10 & 12) > Phase 6 - Data Hall
P10RP.1100,Phase 6 / Data Hall - Wall Elec & FA Rough-In (IMP),4,4,2027-08-27,2027-09-01,CMH139 > Construction > Main Building - Building D > Phase 6 (ROMP10 & 12) > Phase 6 - Data Hall
P10RP.1710,Phase 6 / Data Hall - Wall Elec & FA Rough-In (Data Hall / Elec Rm),4,4,2027-08-27,2027-09-01,CMH139 > Construction > Main Building - Building D > Phase 6 (ROMP10 & 12) > Phase 6 - Data Hall
P10RP.1610,Phase 6 / Data Hall - In Wall Rough In Inspection (Electrical / FA),1,1,2027-09-02,2027-09-02,CMH139 > Construction > Main Building - Building D > Phase 6 (ROMP10 & 12) > Phase 6 - Data Hall
P10RP.1130,Phase 6 / Data Hall - Hang Drywall & Finish (Data Hall / Elec Rm),5,5,2027-09-03,2027-09-10,CMH139 > Construction > Main Building - Building D > Phase 6 (ROMP10 & 12) > Phase 6 - Data Hall
P10RP.1590,Phase 6 / Data Hall - Install Temp Wall Bulkhead,5,5,2027-09-03,2027-09-10,CMH139 > Construction > Main Building - Building D > Phase 6 (ROMP10 & 12) > Phase 6 - Data Hall
P10RP.1190,Phase 6 / Data Hall - Prime & First Coat Paint,3,3,2027-09-13,2027-09-15,CMH139 > Construction > Main Building - Building D > Phase 6 (ROMP10 & 12) > Phase 6 - Data Hall
P10RP.1720,Phase 6 / Data Hall - Above Ceiling Cable Tray,3,3,2027-09-13,2027-09-15,CMH139 > Construction > Main Building - Building D > Phase 6 (ROMP10 & 12) > Phase 6 - Data Hall
P10RP.1050,Phase 6 / Data Hall - Fire Protection Drops,5,5,2027-09-16,2027-09-22,CMH139 > Construction > Main Building - Building D > Phase 6 (ROMP10 & 12) > Phase 6 - Data Hall
P10RP.1730,Phase 6 / Data Hall - Seismic Install,2,2,2027-09-16,2027-09-17,CMH139 > Construction > Main Building - Building D > Phase 6 (ROMP10 & 12) > Phase 6 - Data Hall
P10RP.1750,Phase 6 / Data Hall - Install Backdraft Dampers,5,5,2027-09-16,2027-09-22,CMH139 > Construction > Main Building - Building D > Phase 6 (ROMP10 & 12) > Phase 6 - Data Hall
P10RP.1020,Phase 6 / Data Hall - MARS Racking,7,7,2027-10-12,2027-10-20,CMH139 > Construction > Main Building - Building D > Phase 6 (ROMP10 & 12) > Phase 6 - Data Hall
P10RP.1070,Phase 6 / Data Hall - Install Lighting Wiring & Fixtures,5,5,2027-10-21,2027-10-27,CMH139 > Construction > Main Building - Building D > Phase 6 (ROMP10 & 12) > Phase 6 - Data Hall
P10RP.1200,Phase 6 / Data Hall - Temp Wall Install,5,5,2027-10-21,2027-10-27,CMH139 > Construction > Main Building - Building D > Phase 6 (ROMP10 & 12) > Phase 6 - Data Hall
P10RP.1060,Phase 6 / Data Hall - Upper Polycarbonate Panels and Cold Aisle Cable Tray Arms,3,3,2027-10-21,2027-10-25,CMH139 > Construction > Main Building - Building D > Phase 6 (ROMP10 & 12) > Phase 6 - Data Hall
P10RP.1230,Phase 6 / Data Hall - Install Control Dampers (PRD),5,5,2027-10-21,2027-10-27,CMH139 > Construction > Main Building - Building D > Phase 6 (ROMP10 & 12) > Phase 6 - Data Hall
P10RP.1410,Phase 6 / Data Hall - Power PDC Whips,10,10,2027-10-21,2027-11-03,CMH139 > Construction > Main Building - Building D > Phase 6 (ROMP10 & 12) > Phase 6 - Data Hall
P10RP.1620,Phase 6 / Data Hall - ACT Grid Corridors,4,4,2027-10-21,2027-10-26,CMH139 > Construction > Main Building - Building D > Phase 6 (ROMP10 & 12) > Phase 6 - Data Hall
P10RP.1630,Phase 6 / Data Hall - Install Snubbers,5,5,2027-10-21,2027-10-27,CMH139 > Construction > Main Building - Building D > Phase 6 (ROMP10 & 12) > Phase 6 - Data Hall
P10RP.1030,Phase 6 / Data Hall - PDC Feeders Drops & Supports,10,10,2027-10-21,2027-11-03,CMH139 > Construction > Main Building - Building D > Phase 6 (ROMP10 & 12) > Phase 6 - Data Hall
P10RP.1210,Phase 6 / Data Hall - Fire Alarm VESDA,10,10,2027-10-25,2027-11-05,CMH139 > Construction > Main Building - Building D > Phase 6 (ROMP10 & 12) > Phase 6 - Data Hall
P10RP.1640,Phase 6 / Data Hall - ACT Grid Cold Aisles,5,5,2027-10-25,2027-10-29,CMH139 > Construction > Main Building - Building D > Phase 6 (ROMP10 & 12) > Phase 6 - Data Hall
P10RP.1140,Phase 6 / Data Hall - Perfect Position,4,4,2027-10-26,2027-10-29,CMH139 > Construction > Main Building - Building D > Phase 6 (ROMP10 & 12) > Phase 6 - Data Hall
P10RP.1250,Phase 6 / Data Hall - Doors and Hardware,2,2,2027-10-28,2027-10-29,CMH139 > Construction > Main Building - Building D > Phase 6 (ROMP10 & 12) > Phase 6 - Data Hall
P10RP.1650,Phase 6 / Data Hall - Install Control Wiring,5,5,2027-10-28,2027-11-03,CMH139 > Construction > Main Building - Building D > Phase 6 (ROMP10 & 12) > Phase 6 - Data Hall
P10RP.1280,Phase 6 / Data Hall - Install Fire Protection Heads Avenue,2,2,2027-11-01,2027-11-02,CMH139 > Construction > Main Building - Building D > Phase 6 (ROMP10 & 12) > Phase 6 - Data Hall
P10RP.1160,Phase 6 / Data Hall - Cold Aisle Basket/Cable Tray,3,3,2027-11-01,2027-11-03,CMH139 > Construction > Main Building - Building D > Phase 6 (ROMP10 & 12) > Phase 6 - Data Hall
P10RP.1360,Phase 6 / Data Hall - Avenue Basket/Cable Tray (South),2,2,2027-11-01,2027-11-02,CMH139 > Construction > Main Building - Building D > Phase 6 (ROMP10 & 12) > Phase 6 - Data Hall
P10RP.1660,Phase 6 / Data Hall - ACT Borders For Corridors,1,1,2027-11-01,2027-11-01,CMH139 > Construction > Main Building - Building D > Phase 6 (ROMP10 & 12) > Phase 6 - Data Hall
P10RP.1740,Phase 6 / Data Hall - Install Fire Protection Heads Cold Aisle,2,2,2027-11-01,2027-11-02,CMH139 > Construction > Main Building - Building D > Phase 6 (ROMP10 & 12) > Phase 6 - Data Hall
P10RP.1670,Phase 6 / Data Hall - ACT Borders For Cold Aisles,1,1,2027-11-02,2027-11-02,CMH139 > Construction > Main Building - Building D > Phase 6 (ROMP10 & 12) > Phase 6 - Data Hall
P10RP.1290,Phase 6 / Data Hall - Avenue Basket/Cable Tray (North),2,2,2027-11-03,2027-11-04,CMH139 > Construction > Main Building - Building D > Phase 6 (ROMP10 & 12) > Phase 6 - Data Hall
P10RP.1310,Phase 6 / Data Hall - Structural Overhead Inspection (Avenue),1,1,2027-11-03,2027-11-03,CMH139 > Construction > Main Building - Building D > Phase 6 (ROMP10 & 12) > Phase 6 - Data Hall
P10RP.1690,Phase 6 / Data Hall - ACT Remaining Tile Drops Post Inspection,3,3,2027-11-04,2027-11-08,CMH139 > Construction > Main Building - Building D > Phase 6 (ROMP10 & 12) > Phase 6 - Data Hall
P10RP.1680,Phase 6 / Data Hall - Touch Up Paint,4,4,2027-11-04,2027-11-09,CMH139 > Construction > Main Building - Building D > Phase 6 (ROMP10 & 12) > Phase 6 - Data Hall
P10RP.1420,Phase 6 / Data Hall - CAT6 Cable Install,3,3,2027-11-05,2027-11-09,CMH139 > Construction > Main Building - Building D > Phase 6 (ROMP10 & 12) > Phase 6 - Data Hall
P10RP.1080,Phase 6 / Data Hall - Set PDC Cabinets,3,3,2027-11-09,2027-11-11,CMH139 > Construction > Main Building - Building D > Phase 6 (ROMP10 & 12) > Phase 6 - Data Hall
P10RP.1110,Phase 6 / Data Hall - BMS,15,15,2027-11-12,2027-12-06,CMH139 > Construction > Main Building - Building D > Phase 6 (ROMP10 & 12) > Phase 6 - Data Hall
P10RP.1270,Phase 6 / Data Hall - PDC Feeders Test & Terminate,10,10,2027-11-12,2027-11-29,CMH139 > Construction > Main Building - Building D > Phase 6 (ROMP10 & 12) > Phase 6 - Data Hall
P10RP.1120,Phase 6 / Data Hall - EPMS,15,15,2027-11-12,2027-12-06,CMH139 > Construction > Main Building - Building D > Phase 6 (ROMP10 & 12) > Phase 6 - Data Hall
P10RP.1180,Phase 6 / Data Hall - Lower Polycarbonate Panels,5,5,2027-12-07,2027-12-13,CMH139 > Construction > Main Building - Building D > Phase 6 (ROMP10 & 12) > Phase 6 - Data Hall
P10RP.1090,Phase 6 / Data Hall - NEA Finalization,20,20,2028-02-22,2028-03-20,CMH139 > Construction > Main Building - Building D > Phase 6 (ROMP10 & 12) > Phase 6 - Data Hall
P10RP.1150,Phase 6 / Data Hall - H2C Readiness Coordination,14,14,2028-03-21,2028-04-07,CMH139 > Construction > Main Building - Building D > Phase 6 (ROMP10 & 12) > Phase 6 - Data Hall
P10DG.1250,Phase 6 / TAHU - Fire Protection Rough In,5,5,2027-06-23,2027-06-29,CMH139 > Construction > Main Building - Building D > Phase 6 (ROMP10 & 12) > Phase 6 - TAHU Gallery
P10DG.1170,Phase 6 / TAHU - Sound Attenuator,10,10,2027-08-27,2027-09-10,CMH139 > Construction > Main Building - Building D > Phase 6 (ROMP10 & 12) > Phase 6 - TAHU Gallery
P10DG.1180,Phase 6 / TAHU - Seismic Install,2,2,2027-08-27,2027-08-30,CMH139 > Construction > Main Building - Building D > Phase 6 (ROMP10 & 12) > Phase 6 - TAHU Gallery
P10DG.1190,Phase 6 / TAHU - Hang Outside Stairwell / Lobby Drywall,4,4,2027-09-13,2027-09-16,CMH139 > Construction > Main Building - Building D > Phase 6 (ROMP10 & 12) > Phase 6 - TAHU Gallery
P10DG.1200,Phase 6 / TAHU - Install CFMF IMP Support,10,10,2027-09-13,2027-09-24,CMH139 > Construction > Main Building - Building D > Phase 6 (ROMP10 & 12) > Phase 6 - TAHU Gallery
P10DG.1040,Phase 6 / TAHU - Install IMP Panels,6,6,2027-09-27,2027-10-04,CMH139 > Construction > Main Building - Building D > Phase 6 (ROMP10 & 12) > Phase 6 - TAHU Gallery
P10DG.1080,Phase 6 / TAHU - Prime & Paint Drywall,3,3,2027-10-05,2027-10-07,CMH139 > Construction > Main Building - Building D > Phase 6 (ROMP10 & 12) > Phase 6 - TAHU Gallery
P10DG.1030,Phase 6 / TAHU - Wall Elec & Fire Alarm Rough-In,5,5,2027-10-05,2027-10-11,CMH139 > Construction > Main Building - Building D > Phase 6 (ROMP10 & 12) > Phase 6 - TAHU Gallery
P10DG.1110,Phase 6 / TAHU - BMS Controls Rough In,10,10,2027-10-05,2027-10-18,CMH139 > Construction > Main Building - Building D > Phase 6 (ROMP10 & 12) > Phase 6 - TAHU Gallery
P10DG.1130,Phase 6 / TAHU - Fire Alarm (VESDA),5,5,2027-10-05,2027-10-11,CMH139 > Construction > Main Building - Building D > Phase 6 (ROMP10 & 12) > Phase 6 - TAHU Gallery
P10DG.1090,Phase 6 / TAHU - Control Dampers,5,5,2027-10-08,2027-10-14,CMH139 > Construction > Main Building - Building D > Phase 6 (ROMP10 & 12) > Phase 6 - TAHU Gallery
P10DG.1050,Phase 6 / TAHU - Pull & Terminate Fire Alarm Cable,5,5,2027-10-12,2027-10-18,CMH139 > Construction > Main Building - Building D > Phase 6 (ROMP10 & 12) > Phase 6 - TAHU Gallery
P10DG.1070,Phase 6 / TAHU - Set TAHUs,2,2,2027-10-19,2027-10-20,CMH139 > Construction > Main Building - Building D > Phase 6 (ROMP10 & 12) > Phase 6 - TAHU Gallery
P10DG.1140,Phase 6 / TAHU - Doors and Hardware,3,3,2027-10-21,2027-10-25,CMH139 > Construction > Main Building - Building D > Phase 6 (ROMP10 & 12) > Phase 6 - TAHU Gallery
P10DG.1060,Phase 6 / TAHU - IW Supply Piping at TAHUs,10,10,2027-10-21,2027-11-03,CMH139 > Construction > Main Building - Building D > Phase 6 (ROMP10 & 12) > Phase 6 - TAHU Gallery
P10DG.1220,Phase 6 / TAHU - TAHU Trim,10,10,2027-10-21,2027-11-03,CMH139 > Construction > Main Building - Building D > Phase 6 (ROMP10 & 12) > Phase 6 - TAHU Gallery
P10DG.1230,Phase 6 / TAHU - Paint Doors & Frames,2,2,2027-10-26,2027-10-27,CMH139 > Construction > Main Building - Building D > Phase 6 (ROMP10 & 12) > Phase 6 - TAHU Gallery
P10DG.1150,Phase 6 / TAHU - Lighting,5,5,2027-10-28,2027-11-03,CMH139 > Construction > Main Building - Building D > Phase 6 (ROMP10 & 12) > Phase 6 - TAHU Gallery
P10DG.1100,Phase 6 / TAHU - Tie In TAHUs,10,10,2027-11-04,2027-11-17,CMH139 > Construction > Main Building - Building D > Phase 6 (ROMP10 & 12) > Phase 6 - TAHU Gallery
P10DG.1210,Phase 6 / TAHU - BMS Tie In,2,2,2027-11-16,2027-11-17,CMH139 > Construction > Main Building - Building D > Phase 6 (ROMP10 & 12) > Phase 6 - TAHU Gallery
P10DG.1120,Phase 6 / TAHU - IW Drain Piping at TAHUs,5,5,2027-11-18,2027-11-24,CMH139 > Construction > Main Building - Building D > Phase 6 (ROMP10 & 12) > Phase 6 - TAHU Gallery
P10DG.1240,Phase 6 / TAHU - Terminate Power To TAHUs,3,3,2027-11-29,2027-12-01,CMH139 > Construction > Main Building - Building D > Phase 6 (ROMP10 & 12) > Phase 6 - TAHU Gallery
P10CX.1100,Phase 6 / Cx - EC L2 Cx Review for MV Switchgear,1,1,2027-05-10,2027-05-10,CMH139 > Construction > Main Building - Building D > Phase 6 (ROMP10 & 12) > Phase 6 - Cx
P10CX.1080,Phase 6 / Cx - EC L2 Cx Review for MV XFMRs,1,1,2027-05-11,2027-05-11,CMH139 > Construction > Main Building - Building D > Phase 6 (ROMP10 & 12) > Phase 6 - Cx
P10CX.1090,Phase 6 / Cx - EC L3 Cx for MV XFMRs,5,5,2027-05-12,2027-05-18,CMH139 > Construction > Main Building - Building D > Phase 6 (ROMP10 & 12) > Phase 6 - Cx
P10CX.1350,Phase 6 / Cx - Eaton XFMR Testing,3,3,2027-05-12,2027-05-14,CMH139 > Construction > Main Building - Building D > Phase 6 (ROMP10 & 12) > Phase 6 - Cx
P10CX.1130,Phase 6 / Cx - EC L3 Cx for MV,3,3,2027-05-17,2027-05-19,CMH139 > Construction > Main Building - Building D > Phase 6 (ROMP10 & 12) > Phase 6 - Cx
P10CX.1200,Phase 6 / Cx - Fuel System Cx,7,7,2027-07-02,2027-07-13,CMH139 > Construction > Main Building - Building D > Phase 6 (ROMP10 & 12) > Phase 6 - Cx
P10CX.1180,Phase 6 / Cx - Construction Power To Generator,3,3,2027-10-14,2027-10-18,CMH139 > Construction > Main Building - Building D > Phase 6 (ROMP10 & 12) > Phase 6 - Cx
P10CX.1030,Phase 6 / Cx - CAT L2 Cx Generators,2,2,2027-10-19,2027-10-20,CMH139 > Construction > Main Building - Building D > Phase 6 (ROMP10 & 12) > Phase 6 - Cx
P10CX.1120,Phase 6 / Cx - EC 3rd Party Testing & Inspection USB (L2),3,3,2027-10-19,2027-10-21,CMH139 > Construction > Main Building - Building D > Phase 6 (ROMP10 & 12) > Phase 6 - Cx
P10CX.1160,Phase 6 / Cx - HUPPS Panelboards Energized,1,1,2027-11-04,2027-11-04,CMH139 > Construction > Main Building - Building D > Phase 6 (ROMP10 & 12) > Phase 6 - Cx
P10CX.1000,Phase 6 / Cx - EC 3rd Party LV Panelboard Testing (L2),3,3,2027-11-04,2027-11-08,CMH139 > Construction > Main Building - Building D > Phase 6 (ROMP10 & 12) > Phase 6 - Cx
P10CX.1320,Phase 6 / Cx - AMCOP / BACOP Start Up & Cx,5,5,2027-11-04,2027-11-10,CMH139 > Construction > Main Building - Building D > Phase 6 (ROMP10 & 12) > Phase 6 - Cx
P10CX.1360,Phase 6 / Cx - Energize Control Network Arch,1,1,2027-11-05,2027-11-05,CMH139 > Construction > Main Building - Building D > Phase 6 (ROMP10 & 12) > Phase 6 - Cx
P10CX.1390,Phase 6 / Cx - EPMS Point to Point (USB),4,4,2027-11-08,2027-11-11,CMH139 > Construction > Main Building - Building D > Phase 6 (ROMP10 & 12) > Phase 6 - Cx
P10CX.1470,Phase 6 / Cx - Fire Alarm Programming & Pretest,2,2,2027-11-08,2027-11-09,CMH139 > Construction > Main Building - Building D > Phase 6 (ROMP10 & 12) > Phase 6 - Cx
P10CX.1230,Phase 6 / Cx - EC 3rd Party Busway Bus Plug Testing (L2),2,2,2027-11-08,2027-11-09,CMH139 > Construction > Main Building - Building D > Phase 6 (ROMP10 & 12) > Phase 6 - Cx
P10MCM.5010,Phase 6 / Cx - Tie in MOP C1,2,2,2027-11-10,2027-11-11,CMH139 > Construction > Main Building - Building D > Phase 6 (ROMP10 & 12) > Phase 6 - Cx
P10MCM.5020,Phase 6 / Cx - Eaton DLB Programming & Test (FLORES),5,5,2027-11-11,2027-11-17,CMH139 > Construction > Main Building - Building D > Phase 6 (ROMP10 & 12) > Phase 6 - Cx
P10MCM.5050,Phase 6 / Cx - Tie in MOP C2,2,2,2027-11-12,2027-11-15,CMH139 > Construction > Main Building - Building D > Phase 6 (ROMP10 & 12) > Phase 6 - Cx
P10CX.1140,Phase 6 / Cx - EC 3rd Party Busway C1 / C2 Testing,2,2,2027-11-16,2027-11-17,CMH139 > Construction > Main Building - Building D > Phase 6 (ROMP10 & 12) > Phase 6 - Cx
P10CX.1190,Phase 6 / Cx - EC L2 Cx Review for LV Panelboard,2,2,2027-11-16,2027-11-17,CMH139 > Construction > Main Building - Building D > Phase 6 (ROMP10 & 12) > Phase 6 - Cx
P10MS.180,Phase 6 / Cx - Life Safety Walkthrough,1,1,2027-11-17,2027-11-17,CMH139 > Construction > Main Building - Building D > Phase 6 (ROMP10 & 12) > Phase 6 - Cx
P10CX.1260,Phase 6 / Cx - EC L3 Cx LV Panelboard,1,1,2027-11-18,2027-11-18,CMH139 > Construction > Main Building - Building D > Phase 6 (ROMP10 & 12) > Phase 6 - Cx
P10CX.1170,Phase 6 / Cx - EC Busway C1 / C2 L2 Cx Review,1,1,2027-11-18,2027-11-18,CMH139 > Construction > Main Building - Building D > Phase 6 (ROMP10 & 12) > Phase 6 - Cx
P10CX.1220,Phase 6 / Cx - EC Busway C1 L3 Cx,2,2,2027-11-19,2027-11-22,CMH139 > Construction > Main Building - Building D > Phase 6 (ROMP10 & 12) > Phase 6 - Cx
P10CX.1380,Phase 6 / Cx - EPMS Point to Point (PDC),4,4,2027-11-19,2027-11-24,CMH139 > Construction > Main Building - Building D > Phase 6 (ROMP10 & 12) > Phase 6 - Cx
P10CX.1480,Phase 6 / Cx - EC Busway C2 L3 Cx,2,2,2027-11-23,2027-11-24,CMH139 > Construction > Main Building - Building D > Phase 6 (ROMP10 & 12) > Phase 6 - Cx
P10CX.1150,Phase 6 / Cx - EC L3 Cx USBs,2,2,2027-11-29,2027-11-30,CMH139 > Construction > Main Building - Building D > Phase 6 (ROMP10 & 12) > Phase 6 - Cx
P10CX.1250,Phase 6 / Cx - Vendor UPS Start Up & Cx,9,9,2027-12-01,2027-12-13,CMH139 > Construction > Main Building - Building D > Phase 6 (ROMP10 & 12) > Phase 6 - Cx
P10CX.1310,Phase 6 / Cx - ATS L3 Cx,1,1,2027-12-01,2027-12-01,CMH139 > Construction > Main Building - Building D > Phase 6 (ROMP10 & 12) > Phase 6 - Cx
P10CX.1420,Phase 6 / Cx - Eaton DLB Testing,2,2,2027-12-01,2027-12-02,CMH139 > Construction > Main Building - Building D > Phase 6 (ROMP10 & 12) > Phase 6 - Cx
P10CX.1210,Phase 6 / Cx - MC TAHU L2 Cx,5,5,2027-12-02,2027-12-08,CMH139 > Construction > Main Building - Building D > Phase 6 (ROMP10 & 12) > Phase 6 - Cx
P10CX.1370,Phase 6 / Cx - BMS Point to Point (TAHUs),5,5,2027-12-02,2027-12-08,CMH139 > Construction > Main Building - Building D > Phase 6 (ROMP10 & 12) > Phase 6 - Cx
P10CX.1400,Phase 6 / Cx - Energize MSDBs,1,1,2027-12-02,2027-12-02,CMH139 > Construction > Main Building - Building D > Phase 6 (ROMP10 & 12) > Phase 6 - Cx
P10CX.1040,Phase 6 / Cx - EC L2 Cx Review for Generator,1,1,2027-12-03,2027-12-03,CMH139 > Construction > Main Building - Building D > Phase 6 (ROMP10 & 12) > Phase 6 - Cx
P10CX.1290,Phase 6 / Cx - Split System Startup & Commissioning,10,10,2027-12-03,2027-12-16,CMH139 > Construction > Main Building - Building D > Phase 6 (ROMP10 & 12) > Phase 6 - Cx
P10CX.1280,Phase 6 / Cx - ERV Startup & Commissioning,10,10,2027-12-03,2027-12-16,CMH139 > Construction > Main Building - Building D > Phase 6 (ROMP10 & 12) > Phase 6 - Cx
P10CX.1270,Phase 6 / Cx - EDH Startup & Commissioning,4,4,2027-12-03,2027-12-08,CMH139 > Construction > Main Building - Building D > Phase 6 (ROMP10 & 12) > Phase 6 - Cx
P10MCM.5030,Phase 6 / Cx - IW System L2 Cx,2,2,2027-12-03,2027-12-06,CMH139 > Construction > Main Building - Building D > Phase 6 (ROMP10 & 12) > Phase 6 - Cx
P10CX.1070,Phase 6 / Cx - EC L3 Cx Generators,3,3,2027-12-06,2027-12-08,CMH139 > Construction > Main Building - Building D > Phase 6 (ROMP10 & 12) > Phase 6 - Cx
P10CX.1060,Phase 6 / Cx - CAT L3 Cx Generators Testing,5,5,2027-12-06,2027-12-10,CMH139 > Construction > Main Building - Building D > Phase 6 (ROMP10 & 12) > Phase 6 - Cx
P10MCM.5040,Phase 6 / Cx - IW System L3 Cx,10,10,2027-12-07,2027-12-20,CMH139 > Construction > Main Building - Building D > Phase 6 (ROMP10 & 12) > Phase 6 - Cx
P10CX.1240,Phase 6 / Cx - Vendor TAHU L3 Cx,10,10,2027-12-21,2028-01-05,CMH139 > Construction > Main Building - Building D > Phase 6 (ROMP10 & 12) > Phase 6 - Cx
P10CX.1330,Phase 6 / Cx - Test & Balance,5,5,2028-01-06,2028-01-12,CMH139 > Construction > Main Building - Building D > Phase 6 (ROMP10 & 12) > Phase 6 - Cx
P10CX.1430,Phase 6 / Cx - L4 / L5 Cx,15,15,2028-04-10,2028-04-28,CMH139 > Construction > Main Building - Building D > Phase 6 (ROMP10 & 12) > Phase 6 - Cx
SH.1770,Structure / Interior - L1 Fire Sprinkler Rough In,20,0,2026-10-08,2026-10-08,CMH139 > Construction > Graveyard
SH.1780,Structure / Interior - L2 Fire Sprinkler Rough In,20,0,2026-10-08,2026-10-08,CMH139 > Construction > Graveyard
